# 07.09.26

Schedule from MS Project, 2023-03-10 to 2027-03-10, A marks actual dates.
DEXP

## Calendars

- Стандартный: Mon-Fri 09:00-13:00, 14:00-18:00; Sat-Sun off. Exceptions (off unless hours are given): 2026-09-05 09:00-13:00, 14:00-18:00.

## Resources

| Resource |
| --- |
| Макаревич А |
| Дедов В |
| Бобренок В |
| Тимофеев В |
| Зорькин В |
| Бундин В |
| Труфанов А |
| Некрасов А |
| Шуранов Ю |
| Домоводов К |
| Амрулин Р |
| Карабанов |
| Олег |
| оплот |
| Коленкоров |
| Мультан |
| Малинина М |
| Лобанов И |
| Дворник |
| Подрядчик |
| Олег лукас |
| Черепанов И |
| оперторы2 |
| оператор2 |
| Тракресурс |
| Сапелин С |
| Технолог |
| Фрезер ЧПУ |
| Пинчук А |
| КИнжекул |
| ТО_2 |
| ТО_1 |
| ТО_М |
| ТО |
| Кладовщики |

## Schedule

| ID | WBS | Task | Duration | Start | Finish | Predecessors | Complete | Remaining | Total slack | Free slack | Constraint | Resources | Work | Actual work |
| --- | --- | --- | --- | --- | --- | --- | --- | --- | --- | --- | --- | --- | --- | --- |
| 1 | 1 | **1 цех** | 431.5d? | 2023-03-10 09:00 A | 2024-11-02 13:00 |  | 98% | 7.64d? |  |  |  |  | 22582.5h | 22295.8h |
| 2 | 1.1 | Реанимировать весы, чтобы показывали. Смесители | 1h | 2026-09-10 09:00 | 2026-09-10 10:00 |  |  |  | 129.47d |  | start no earlier than 2026-09-10 09:00 | Бундин В | 1h |  |
| 3 | 1.2 | Закрыть каналыгу. На анкера | 1h | 2026-09-10 09:00 | 2026-09-10 10:00 |  |  |  | 129.47d |  | start no earlier than 2026-09-10 09:00 | Бобренок В | 1h |  |
| 4 | 1.3 | установить доп светильник на погрузочной рампе | 4h | 2026-09-10 09:00 | 2026-09-10 13:00 |  |  |  | 129.09d |  | start no earlier than 2026-09-10 09:00 | Бобренок В | 4h |  |
| 5 | 1.4 | востановить светильник отсек выгрузки ГП + установить доп светильник | 4h | 2026-09-10 09:00 | 2026-09-10 13:00 |  |  |  | 129.09d |  | start no earlier than 2026-09-10 09:00 | Бундин В | 4h |  |
| 6 | 1.5 | **реконструкция хранения гидролизатов и маршрут подачи навесок** | 11.19d? | 2026-09-08 09:00 | 2026-09-23 10:30 |  |  |  | 120.41d |  |  |  | 52.33h |  |
| 7 | 1.5.1 | **перенос системы отопления** | 0.12d | 2026-09-09 09:00 | 2026-09-09 10:00 |  |  |  | 130.47d |  |  |  | 1h |  |
| 8 | 1.5.1.1 | посик сварщиков | 1h | 2026-09-09 09:00 | 2026-09-09 10:00 |  |  |  | 130.47d |  | start no earlier than 2026-09-09 09:00 | Домоводов К | 1h |  |
| 9 | 1.5.2 | **монтаж доп плащадки** | 9.19d | 2026-09-10 09:00 | 2026-09-23 10:30 |  |  |  | 120.41d |  |  |  | 17.5h |  |
| 10 | 1.5.2.1 | составить чертеж площадки | 1h | 2026-09-10 09:00 | 2026-09-10 10:00 |  |  |  | 120.41d | 0d | start no earlier than 2026-09-10 09:00 | Домоводов К | 1h |  |
| 11 | 1.5.2.2 | заявка | 15min | 2026-09-11 10:00 | 2026-09-11 10:15 | 10FS+1d |  |  | 120.41d | 0d | start no earlier than 2026-09-10 09:00 | Зорькин В | 0.25h |  |
| 12 | 1.5.2.3 | контроль доставки | 15min | 2026-09-18 10:15 | 2026-09-18 10:30 | 11FS+5d |  |  | 120.41d | 0d | start no earlier than 2026-09-08 08:00 | Зорькин В | 0.25h |  |
| 13 | 1.5.2.4 | монтаж | 2d | 2026-09-21 10:30 | 2026-09-23 10:30 | 12FS+1d |  |  | 120.41d |  | start no earlier than 2026-09-10 09:00 | Тимофеев В | 16h |  |
| 14 | 1.5.3 | **монтаж перегородка корридор** | 8.06d | 2026-09-10 09:00 | 2026-09-22 09:30 |  |  |  | 121.53d |  |  |  | 17.5h |  |
| 15 | 1.5.3.1 | составить чертеж площадки | 1h | 2026-09-10 09:00 | 2026-09-10 10:00 |  |  |  | 129.47d |  | start no earlier than 2026-09-10 09:00 | Домоводов К | 1h |  |
| 16 | 1.5.3.2 | заявка | 15min | 2026-09-10 09:00 | 2026-09-10 09:15 |  |  |  | 121.53d | 0d | start no earlier than 2026-09-10 09:00 | Зорькин В | 0.25h |  |
| 17 | 1.5.3.3 | контроль доставки | 15min | 2026-09-17 09:15 | 2026-09-17 09:30 | 16FS+5d |  |  | 121.53d | 0d | start no earlier than 2026-09-08 08:00 | Зорькин В | 0.25h |  |
| 18 | 1.5.3.4 | монтаж | 2d | 2026-09-18 09:30 | 2026-09-22 09:30 | 17FS+1d |  |  | 121.53d |  | start no earlier than 2026-09-10 09:00 | Тимофеев В | 16h |  |
| 19 | 1.5.4 | **врезка двери в проем на упаковку** | 0.04d | 2026-09-09 09:00 | 2026-09-09 09:20 |  |  |  | 130.55d |  |  |  | 0.33h |  |
| 20 | 1.5.4.1 | планирование с Олегом, как сделана стена | 20min | 2026-09-09 09:00 | 2026-09-09 09:20 |  |  |  | 130.55d |  | start no earlier than 2026-09-09 09:00 | Домоводов К | 0.33h |  |
| 21 | 1.5.5 | замена двери в гидролизатную - | 1d? | 2026-09-08 09:00 | 2026-09-08 18:00 |  |  |  | 130.59d |  | start no earlier than 2026-09-08 08:00 |  |  |  |
| 22 | 1.5.6 | перенос батареи отопления в гидролизатной | 1d? | 2026-09-08 09:00 | 2026-09-08 18:00 |  |  |  | 130.59d |  | start no earlier than 2026-09-08 08:00 |  |  |  |
| 23 | 1.5.7 | демонтаж бетонного отлива/отмостка | 2d | 2026-09-08 09:00 | 2026-09-09 18:00 |  |  |  | 129.59d |  | start no earlier than 2026-09-08 08:00 | Олег | 16h |  |
| 24 | 1.6 | ревизия парогенератор КАРЧЕР | 1h | 2026-09-09 09:00 | 2026-09-09 10:00 |  |  |  | 130.47d |  | start no earlier than 2026-09-09 09:00 | Бундин В | 1h |  |

| ID | WBS | Task | Type | Duration | Start | Finish | Predecessors | Complete | Remaining | Total slack | Free slack | Constraint | Resources | Work | Actual work |
| --- | --- | --- | --- | --- | --- | --- | --- | --- | --- | --- | --- | --- | --- | --- | --- |
| 25 | 1.7 | **подключить циклоны 1 и 2 линия** |  | 1.5d | 2026-09-09 09:00 | 2026-09-10 13:00 |  |  |  | 129.09d |  |  |  | 4.17h |  |
| 26 | 1.7.1 | контроль поставка кабель |  | 10min | 2026-09-09 09:00 | 2026-09-09 09:10 |  |  |  | 130.57d |  | start no earlier than 2026-09-09 09:00 | Зорькин В | 0.17h |  |
| 27 | 1.7.2 | монтаж кабеля |  | 4h | 2026-09-10 09:00 | 2026-09-10 13:00 |  |  |  | 129.09d |  | start no earlier than 2026-09-10 09:00 | Бундин В | 4h |  |
| 28 | 1.8 | замена бактерицидных ламп в коридоре и посмотреть, где не горят |  | 1h | 2026-09-09 09:00 | 2026-09-09 10:00 |  |  |  | 130.47d |  | start no earlier than 2026-09-09 09:00 | Бундин В | 1h |  |
| 29 | 1.9 | исправить "не возможность открыть" краны фильтр жир 2л |  | 30min | 2026-09-10 09:00 | 2026-09-10 09:30 |  |  |  | 129.53d |  | start no earlier than 2026-09-10 09:00 | Тимофеев В | 0.5h |  |
| 30 | 1.10 | ремонт силиконовых уплотнений печи на сетке 1 и 2 л |  | 3h? | 2026-09-10 09:00 | 2026-09-10 12:00 |  |  |  | 129.22d |  | start no earlier than 2026-09-10 09:00 | Бобренок В | 3h |  |
| 31 | 1.11 | **сместить квадропак в сторону охладителя 2л** |  | 0.38d | 2026-09-10 09:00 | 2026-09-10 12:00 |  |  |  | 129.22d |  |  |  | 12h |  |
| 32 | 1.11.1 | отключение / перенгос мехнизмов |  | 3h | 2026-09-10 09:00 | 2026-09-10 12:00 |  |  |  | 129.22d |  | start no earlier than 2026-09-10 09:00 | Некрасов А; Труфанов А | 6h |  |
| 33 | 1.11.2 | подключение |  | 3h | 2026-09-10 09:00 | 2026-09-10 12:00 |  |  |  | 129.22d |  | start no earlier than 2026-09-10 09:00 | Некрасов А; Труфанов А | 6h |  |
| 34 | 1.12 | Ревизия утечек воздуха на квадропаке (важно проверить пневмораспределителях) и вакуумную систему | manual | 2h | 2026-09-10 09:00 | 2026-09-10 11:00 |  |  |  |  |  | start no earlier than 2026-09-10 09:00 | Бундин В | 2h |  |
| 35 | 1.13 | Комплексное ТО квадропака, проверка всех соединений, протяжка болтов на всех узлах | manual | 2h | 2026-09-10 09:00 | 2026-09-10 11:00 |  |  |  |  |  | start no earlier than 2026-09-10 09:00 | Бундин В | 2h |  |
| 36 | 1.14 | Сделать основную кнопку на НОТИСЕ, чтоб срабатывало от нее, а не от блока управления |  | 1h | 2026-09-09 09:00 | 2026-09-09 10:00 |  |  |  | 130.47d |  | start no earlier than 2026-09-09 09:00 | Зорькин В | 1h |  |
| 37 | 1.15 | Убрать все кабеля на полу в зоне фасовки, теко-нотис (кабельный менеджмент) |  | 2h | 2026-09-10 09:00 | 2026-09-10 11:00 |  |  |  | 129.34d |  | start no earlier than 2026-09-10 09:00 | Бундин В | 2h |  |
| 38 | 1.16 | Клемная коробка на жирах сделать, сейчас вся висит на хомутах 2 линия |  | 1h | 2026-09-07 09:00 A | 2026-09-07 10:00 A |  | 100% |  |  |  | start no earlier than 2026-09-05 09:00 | Дедов В | 1h | 1h |
| 39 | 1.17 | **Дефектовка двигателя от питателя прекондиционера/ прозвонить (возможно подготовить для сдачи на перемотку)** |  | 4.02d | 2026-09-04 09:00 A | 2026-09-09 09:10 |  | 92% | 0.31d | 130.57d |  |  |  | 2.17h | 2h |
| 40 | 1.17.1 | разбрка тест |  | 1h | 2026-09-04 09:00 A | 2026-09-04 10:00 A |  | 100% |  |  |  | start no earlier than 2026-09-04 09:00 | Бобренок В | 1h | 1h |
| 41 | 1.17.2 | тест 2 с редуктором |  | 1h | 2026-09-08 09:00 A | 2026-09-08 10:00 A |  | 100% |  |  |  | start no earlier than 2026-09-08 08:00 | Тимофеев В | 1h | 1h |
| 42 | 1.17.3 | решение о ремонт оформить |  | 10min | 2026-09-09 09:00 | 2026-09-09 09:10 |  |  |  | 130.57d |  | start no earlier than 2026-09-09 09:00 | Зорькин В | 0.17h |  |
| 43 | 1.18 | Ошибка на баке жиротопки 2 линия Err.4 /разобраться и устранить причину |  | 1h | 2026-09-04 09:00 A | 2026-09-04 10:00 A |  | 100% |  |  |  | start no earlier than 2026-09-04 09:00 | Бобренок В | 1h | 1h |
| 44 | 1.19 | Установить новые газлифты, которые получил Бобренок на жиротопку 2 этаж |  | 2h | 2026-09-07 09:00 A | 2026-09-07 11:00 A |  | 100% |  |  |  | start no earlier than 2026-09-07 09:00 | Тимофеев В | 2h | 2h |
| 45 | 1.20 | **Не работают роль ставни на жирах, не стопоряться сделать/устранить неисправность** |  | 1.04d | 2026-09-09 09:00 A | 2026-09-10 09:20 |  | 2% | 1.02d | 129.55d |  |  |  | 8.33h | 0.17h |
| 46 | 1.20.1 | Вызвать подрядчика/контроль |  | 10min | 2026-09-09 09:00 A | 2026-09-09 09:10 A |  | 100% |  |  |  | start no earlier than 2026-09-09 09:00 | Зорькин В | 0.17h | 0.17h |
| 47 | 1.20.2 | получить счет на ремонт |  | 1d | 2026-09-09 09:10 | 2026-09-10 09:10 | 46 |  |  | 129.55d | 0d | start no earlier than 2026-09-08 09:00 | Зорькин В | 8h |  |
| 48 | 1.20.3 | согласовать с подрядчиком дату ремонта |  | 10min | 2026-09-10 09:10 | 2026-09-10 09:20 | 47 |  |  | 129.55d |  | start no earlier than 2026-09-08 09:00 | Зорькин В | 0.17h |  |
| 49 | 1.21 | закреить отбойник корридор навесок (заанкерить) |  | 1h | 2026-09-03 09:00 A | 2026-09-03 10:00 A |  | 100% |  |  |  | start no earlier than 2026-09-03 08:00 | Бобренок В | 1h | 1h |
| 50 | 1.22 | Переподключение кондиционера срежима кондиционера на автоматический |  | 15min | 2026-09-02 09:00 A | 2026-09-02 09:15 A |  | 100% |  |  |  | start no earlier than 2026-09-02 09:00 | Бобренок В | 0.25h | 0.25h |
| 51 | 1.23 | Замена редуктора поворотного стола |  | 1h | 2026-09-02 09:00 A | 2026-09-02 10:00 A |  | 100% |  |  |  | start no earlier than 2026-09-02 09:00 | Бобренок В | 1h | 1h |
| 52 | 1.24 | Программирование частотника теко 0,4 привод смещения ленты |  | 2h | 2026-09-02 09:00 A | 2026-09-02 11:00 A |  | 100% |  |  |  | start no earlier than 2026-09-02 09:00 | Тимофеев В | 2h | 2h |
| 53 | 1.25 | Прозвонить кабель паллетных весов ошибка Error 10 |  | 1h | 2026-09-07 09:00 A | 2026-09-07 10:00 A |  | 100% |  |  |  | start no earlier than 2026-09-05 09:00 | Дедов В | 1h | 1h |
| 54 | 1.26 | Замена подшипников на ножевом узле |  | 2h | 2026-09-01 09:00 A | 2026-09-01 11:00 A |  | 100% |  |  |  | start no earlier than 2026-09-01 09:00 | Бундин В | 2h | 2h |
| 55 | 1.27 | Замена насоса на водяной рубашке жиротопке 2 этаж |  | 2h | 2026-09-01 09:00 A | 2026-09-01 11:00 A |  | 100% |  |  |  | start no earlier than 2026-09-01 09:00 | Бундин В | 2h | 2h |
| 56 | 1.28 | Замена контактора 1 линия 2 зона экструдера |  | 1h | 2026-09-01 09:00 A | 2026-09-01 10:00 A |  | 100% |  |  |  | start no earlier than 2026-09-01 09:00 | Бундин В | 1h | 1h |
| 57 | 1.29 | Редуктор смесителя 1 линия, собрать информацию, что не так, что нужно сделать |  | 30min | 2026-09-02 09:00 A | 2026-09-02 09:30 A |  | 100% |  |  |  | start no earlier than 2026-09-02 09:00 | Тимофеев В | 0.5h | 0.5h |
| 58 | 1.30 | Ремонт мухобойки 1 цех в корридоре завоза навесок |  | 1h | 2026-09-01 09:00 A | 2026-09-01 10:00 A |  | 100% |  |  |  | start no earlier than 2026-09-01 09:00 | Труфанов А | 1h | 1h |
| 59 | 1.31 | капает с кондиционера ближе к жировику (устранить) |  | 2h | 2026-08-31 09:00 A | 2026-08-31 11:00 A |  | 100% |  |  |  | start no earlier than 2026-08-31 09:00 | Бундин В; Тимофеев В | 4h | 4h |
| 60 | 1.32 | отвезти внутренний блок с 1 цеха на синий склад | manual | 1h | 2026-08-30 09:00 A | 2026-08-30 10:00 A |  | 100% |  |  |  | start no earlier than 2026-08-30 09:00 | Бундин В | 1h | 1h |
| 61 | 1.33 | чистка фильтра кондиционера между печками | manual | 1h | 2026-08-31 09:00 A | 2026-08-31 10:00 A |  | 100% |  |  |  | start no earlier than 2026-08-31 09:00 | Бундин В | 1h | 1h |
| 62 | 1.34 | ревизия приточной вентиляции (протяжка контактов и т.д.) | manual | 3h | 2026-08-31 09:00 A | 2026-08-31 12:00 A |  | 100% |  |  |  | start no earlier than 2026-08-31 09:00 | Дедов В | 3h | 3h |
| 63 | 1.35 | прикрутить лоток между барабанами, чтобы не бил о лопасти 1 линия | manual | 1h | 2026-08-30 09:00 A | 2026-08-30 10:00 A |  | 100% |  |  |  | start no earlier than 2026-08-30 09:00 | Бундин В | 1h | 1h |
| 64 | 1.36 | улитка на подиуме за цехом, прикрутить отвод в бок (отвод под подиумом) | manual | 1h | 2026-08-31 09:00 A | 2026-08-31 10:00 A |  | 100% |  |  |  | start no earlier than 2026-08-31 09:00 | Бундин В | 1h | 1h |
| 65 | 1.37 | течет вода с поломоечной машинки - разобраться | manual | 2h | 2026-08-31 09:00 A | 2026-08-31 11:00 A |  | 100% |  |  |  | start no earlier than 2026-08-31 09:00 | Дедов В | 2h | 2h |

| ID | WBS | Task | Duration | Start | Finish | Complete | Remaining | Total slack | Constraint | Resources | Work | Actual work |
| --- | --- | --- | --- | --- | --- | --- | --- | --- | --- | --- | --- | --- |
| 66 | 1.38 | **почистить шнек сухого гидрализата (1 линия)** | 0.12d | 2026-08-28 08:00 A | 2026-08-28 10:00 A | 100% |  |  |  | Бобренок В | 3h | 3h |
| 67 | 1.38.1 | замена пошипников | 1h | 2026-08-28 08:00 A | 2026-08-28 10:00 A | 100% |  |  | start no earlier than 2026-08-28 08:00 | Тимофеев В; Некрасов А | 2h | 2h |
| 68 | 1.39 | замена фильтров на приточке | 1h | 2026-08-27 09:00 A | 2026-08-27 10:00 A | 100% |  |  | start no earlier than 2026-08-27 09:00 | Дедов В | 1h | 1h |
| 69 | 1.40 | **продумать как сделать герметичную крышку на смесителе сухого гидрализата** | 11.25d | 2026-08-27 09:00 A | 2026-09-10 11:00 | 40% | 6.75d | 129.34d |  |  | 14h | 8h |
| 70 | 1.40.1 | изготовить крышку (расскажу по телефону) | 4h | 2026-08-27 09:00 A | 2026-08-27 13:00 A | 100% |  |  | start no earlier than 2026-08-27 09:00 | Бобренок В; Шуранов Ю | 8h | 8h |
| 71 | 1.40.2 | изготовить крышку для 2 линии (как сделал Слава) | 4h | 2026-09-01 09:00 | 2026-09-01 13:00 |  |  | 137.09d | start no earlier than 2026-09-01 09:00 | Макаревич А | 4h |  |
| 72 | 1.40.3 | установка на струбцинах с уплотнителями | 2h | 2026-09-10 09:00 | 2026-09-10 11:00 |  |  | 129.34d | start no earlier than 2026-09-10 09:00 | Бобренок В | 2h |  |
| 73 | 1.41 | **метал от тенов печи, устранить причину** | 14.38d? | 2026-08-24 09:00 A | 2026-09-10 12:00 | 45% | 7.96d? | 129.22d |  |  | 5.42h | 2.42h |
| 74 | 1.41.1 | выяснить сгорел тен русский или китайский (будет ночью остановка) | 15min | 2026-08-27 09:00 A | 2026-08-27 09:15 A | 100% |  |  | start no earlier than 2026-08-27 09:00 | Бобренок В | 0.25h | 0.25h |
| 75 | 1.41.2 | вскрыть 2 зону и посмотреть какой тен (мойка) | 1h | 2026-08-31 09:00 A | 2026-08-31 10:00 A | 100% |  |  | start no earlier than 2026-09-02 09:00 | Некрасов А | 1h | 1h |
| 76 | 1.41.3 | осмотр состояния тенов/ планирование замены | 10min | 2026-08-27 09:00 A | 2026-08-27 09:10 A | 100% |  |  | start no earlier than 2026-08-27 09:00 | Бобренок В | 0.17h | 0.17h |
| 77 | 1.41.4 | выяснить статус поставки тенов из китая | 1h | 2026-08-24 09:00 A | 2026-08-24 10:00 A | 100% |  |  | start no earlier than 2026-08-24 09:00 | Шуранов Ю | 1h | 1h |
| 78 | 1.41.5 | замена заброкованных осмотром тенов | 3h? | 2026-09-10 09:00 | 2026-09-10 12:00 |  |  | 129.22d | start no earlier than 2026-09-10 09:00 | Тимофеев В | 3h |  |
| 79 | 1.42 | замена плата 485 в контроллере 2 линия | 1h | 2026-08-21 09:00 A | 2026-08-21 10:00 A | 100% |  |  | start no earlier than 2026-08-21 09:00 | Дедов В | 1h | 1h |
| 80 | 1.43 | перемонтаж частотный привод сух гидролизат | 2h | 2026-09-02 09:00 A | 2026-09-02 11:00 A | 100% |  |  | start no earlier than 2026-09-04 09:00 | Некрасов А; Дедов В | 4h | 4h |
| 81 | 1.44 | поменять светильник где вывозят готовую продукцию (с люлки) | 2h | 2026-08-31 09:00 A | 2026-08-31 11:00 A | 100% |  |  | start no earlier than 2026-08-31 09:00 | Тимофеев В; Бундин В | 4h | 4h |
| 82 | 1.45 | на нотис настроить кнопку, чтобы работала в цикле | 1h | 2026-08-20 09:00 A | 2026-08-20 10:00 A | 100% |  |  | start no earlier than 2026-08-20 09:00 | Дедов В | 1h | 1h |
| 83 | 1.46 | изготовление герметичной крышки под мойкой экструдера (объясню по телефону) занкрепить на анкера | 2h | 2026-08-19 08:00 A | 2026-08-19 11:00 A | 100% |  |  | start no earlier than 2026-08-19 08:00 | Бобренок В | 2h | 2h |
| 84 | 1.47 | **проверка пылесоса, почему не стартует (в слесарке)** | 1d? | 2026-08-25 09:00 A | 2026-08-25 18:00 A | 100% |  |  |  | Бобренок В | 16h | 16h |
| 85 | 1.47.1 | заказать двигатель и выяснить на гарантии он или нет | 1d? | 2026-08-25 09:00 A | 2026-08-25 18:00 A | 100% |  |  | start no earlier than 2026-08-25 08:00 | Шуранов Ю | 8h | 8h |
| 86 | 1.48 | ремонт свет в раздевалке | 30min | 2026-08-14 09:00 A | 2026-08-14 09:30 A | 100% |  |  | start no earlier than 2026-08-14 09:00 | Бундин В | 0.5h | 0.5h |
| 87 | 1.49 | стиральная машинка проверка насоса слива, разборка, фото шильдик. Не качает. | 2h | 2026-08-15 09:00 A | 2026-08-17 11:00 A | 100% |  |  | start no earlier than 2026-08-15 09:00 | Бундин В | 2h | 2h |
| 88 | 1.50 | **настройка пробники на толстую цветную пленку** | 9.38d? | 2026-08-14 09:00 A | 2026-08-27 12:00 A | 100% |  |  |  |  | 25.25h | 25.25h |
| 89 | 1.50.1 | тест пленки на пробнике с Луговских В в 11 00 | 1h | 2026-08-14 09:00 A | 2026-08-14 10:00 A | 100% |  |  | start no earlier than 2026-08-14 09:00 | Тимофеев В | 1h | 1h |
| 90 | 1.50.2 | установить протяжной ролик к турбе от ТЕКО 1.5 с синего,снять с синего примерка | 2h | 2026-08-17 09:00 A | 2026-08-17 11:00 A | 100% |  |  | start no earlier than 2026-08-17 09:00 | Тимофеев В | 2h | 2h |
| 91 | 1.50.3 | настройка пробника с режимом фотометки | 1h | 2026-08-27 09:00 A | 2026-08-27 10:00 A | 100% |  |  | start no earlier than 2026-08-27 09:00 | Дедов В | 1h | 1h |
| 92 | 1.50.4 | получить пневмоцилиндр | 15min | 2026-08-20 09:00 A | 2026-08-20 09:15 A | 100% |  |  | start no earlier than 2026-08-20 09:00 | Тимофеев В | 0.25h | 0.25h |
| 93 | 1.50.5 | изготовление крепления вспомогательной протяжки | 6h | 2026-08-21 09:00 A | 2026-08-21 16:00 A | 100% |  |  | start no earlier than 2026-08-21 09:00 | Тимофеев В | 6h | 6h |
| 94 | 1.50.6 | подключение частотника через реле от двигателя протяжки (спросить Константина) | 1d? | 2026-08-25 09:00 A | 2026-08-25 18:00 A | 100% |  |  | start no earlier than 2026-08-25 08:00 | Бундин В | 8h | 8h |
| 95 | 1.50.7 | настройка частотника для работы пробника | 3h | 2026-08-27 09:00 A | 2026-08-27 12:00 A | 100% |  |  | start no earlier than 2026-08-27 09:00 | Тимофеев В; Шуранов Ю | 6h | 6h |
| 96 | 1.50.8 | жалобы, что пробники бьют периодически током- проверить соединения, контакты и т.д. | 1h | 2026-08-26 08:00 A | 2026-08-26 10:00 A | 100% |  |  | start no earlier than 2026-08-26 08:00 | Бобренок В | 1h | 1h |
| 97 | 1.51 | настройка параметров ЧП сухой ГДЗ сбиты, переставлен с линии 2. Снял Слава, найти. Настройка в птц | 15min | 2026-08-20 09:00 A | 2026-08-20 09:15 A | 100% |  |  | start no earlier than 2026-08-20 09:00 | Дедов В | 0.25h | 0.25h |

| ID | WBS | Task | Type | Duration | Start | Finish | Predecessors | Complete | Remaining | Total slack | Free slack | Constraint | Resources | Work | Actual work |
| --- | --- | --- | --- | --- | --- | --- | --- | --- | --- | --- | --- | --- | --- | --- | --- |
| 98 | 1.52 | **ТЕКО ремонт кнопки, которую снял Бобренок В , вернуть то что снял с 3ц** |  | 19.12d | 2026-08-13 09:00 A | 2026-09-08 10:00 A |  | 100% |  |  |  |  |  | 2.75h | 2.75h |
| 99 | 1.52.1 | осмотр |  | 30min | 2026-08-13 09:00 A | 2026-08-13 09:30 A |  | 100% |  |  |  | start no earlier than 2026-08-13 09:00 | Домоводов К | 0.5h | 0.5h |
| 100 | 1.52.2 | заявка в ТЕКО платы |  | 30min | 2026-08-18 09:00 A | 2026-08-18 09:30 A | 99 | 100% |  |  |  | start no earlier than 2026-08-18 09:00 | Зорькин В | 0.5h | 0.5h |
| 101 | 1.52.3 | контроль поставки |  | 15min | 2026-09-04 09:00 A | 2026-09-04 09:15 A | 100FS+10d | 100% |  |  |  | start no earlier than 2026-09-04 09:00 | Зорькин В | 0.25h | 0.25h |
| 102 | 1.52.4 | монтаж платы на место |  | 1h | 2026-09-08 09:00 A | 2026-09-08 10:00 A | 101FS+1d | 100% |  |  |  | start no earlier than 2026-09-09 09:00 | Тимофеев В | 1h | 1h |
| 103 | 1.52.5 | Вернуть голову с восстановленной клавиатурой на НОТИС в 3 цех |  | 30min | 2026-09-08 09:00 A | 2026-09-08 09:30 A |  | 100% |  |  |  | start no earlier than 2026-09-09 09:00 | Тимофеев В | 0.5h | 0.5h |
| 104 | 1.53 | установить вент решетки на трассу кондиционера |  | 30min | 2026-08-12 09:00 A | 2026-08-12 09:30 A |  | 100% |  |  |  | start no earlier than 2026-08-12 09:00 | Труфанов А; Некрасов А | 1h | 1h |
| 105 | 1.54 | течь сливной трубы кондиционара править трассу |  | 2h | 2026-08-12 09:00 A | 2026-08-12 11:00 A |  | 100% |  |  |  | start no earlier than 2026-08-12 09:00 | Труфанов А; Некрасов А | 4h | 4h |
| 106 | 1.55 | слить конденсат и чистка фильтров, продуть радиаторы компрессора | manual | 2h | 2026-08-09 09:00 A | 2026-08-09 11:00 A |  | 100% |  |  |  | start no earlier than 2026-08-09 09:00 | Бундин В | 2h | 2h |
| 107 | 1.56 | заменить камеру над квадропаком (слева) -камера у нас в слесарке, взять в помощь оператора | manual | 1h | 2026-08-09 09:00 A | 2026-08-09 10:00 A |  | 100% |  |  |  | start no earlier than 2026-08-09 09:00 | Бундин В | 1h | 1h |
| 108 | 1.57 | дверь тяжело открывается в гидрализаторную (попробовать поправить, задевает металл-металл) |  | 1h | 2026-08-06 09:00 A | 2026-08-06 10:00 A |  | 100% |  |  |  | start no earlier than 2026-08-06 08:00 | Труфанов А | 1h | 1h |
| 109 | 1.58 | заменить плафон в душе | manual | 1h | 2026-08-06 09:00 A | 2026-08-06 10:00 A |  | 100% |  |  |  | start no earlier than 2026-08-06 09:00 | Бундин В | 1h | 1h |
| 110 | 1.59 | ТО пробники и Теко 0,4 (чистка тен, ножей, смазка) |  | 4h | 2026-08-05 08:00 A | 2026-08-05 13:00 A |  | 100% |  |  |  | start no earlier than 2026-08-05 08:00 | Макаревич А | 4h | 4h |
| 111 | 1.60 | **палетообмостчик монтаж в 1ц** |  | 24.38d | 2026-08-12 09:00 A | 2026-09-14 12:00 |  | 29% | 17.21d | 127.22d |  |  |  | 7.25h | 1.25h |
| 112 | 1.60.1 | получить договор + счет |  | 1h | 2026-08-12 09:00 A | 2026-08-12 10:00 A |  | 100% |  |  |  | start no earlier than 2026-08-12 09:00 | Зорькин В | 1h | 1h |
| 113 | 1.60.2 | **согласвоание договор** |  | 2.89d | 2026-08-12 10:00 A | 2026-08-17 09:05 A | 112 | 100% |  |  |  |  |  | 0.17h | 0.17h |
| 114 | 1.60.2.1 | передать Маше |  | 5min | 2026-08-12 10:00 A | 2026-08-12 10:05 A |  | 100% |  |  |  | start no earlier than 2026-08-12 09:00 | Домоводов К | 0.08h | 0.08h |
| 115 | 1.60.2.2 | контроль |  | 5min | 2026-08-17 09:00 A | 2026-08-17 09:05 A | 114FS+3d | 100% |  |  |  | start no earlier than 2026-08-17 09:00 | Домоводов К | 0.08h | 0.08h |
| 116 | 1.60.3 | оплата подать счет | milestone | 0d | 2026-08-12 09:00 A | 2026-08-12 09:00 A |  | 100% |  |  |  | start no earlier than 2026-08-12 09:00 | Домоводов К |  |  |
| 117 | 1.60.4 | доставка конетроль |  | 5min | 2026-09-01 09:00 A | 2026-09-01 09:05 A |  | 100% |  |  |  | start no earlier than 2026-09-01 09:00 | Зорькин В | 0.08h | 0.08h |
| 118 | 1.60.5 | монтаж |  | 3h | 2026-09-14 09:00 | 2026-09-14 12:00 |  |  |  | 127.22d |  | start no earlier than 2026-09-14 09:00 | Некрасов А; Труфанов А | 6h |  |
| 119 | 1.61 | **замена сетка печи линия 1** |  | 39.09d? | 2026-08-12 09:00 A | 2026-10-05 09:45 |  | 5% | 36.98d? | 112.5d |  |  |  | 9.5h | 0.75h |
| 120 | 1.61.1 | замерить параметры сетки |  | 15min | 2026-08-12 09:00 A | 2026-08-12 09:15 A |  | 100% |  |  |  | start no earlier than 2026-08-12 09:00 | Домоводов К; Тимофеев В | 0.5h | 0.5h |
| 121 | 1.61.2 | получить счет на сетку КИТАЙ |  | 15min | 2026-08-17 09:00 A | 2026-08-17 09:15 A | 120 | 100% |  |  |  | start no earlier than 2026-08-17 09:00 | Зорькин В | 0.25h | 0.25h |
| 122 | 1.61.3 | контроль оплата | milestone | 0d | 2026-08-21 09:00 A | 2026-08-21 09:00 A | 121FS+2d | 100% |  |  |  | start no earlier than 2026-08-21 09:00 | Зорькин В |  |  |
| 123 | 1.61.4 | контроль доставки |  | 15min | 2026-10-01 09:00 | 2026-10-01 09:15 | 122FS+30d |  |  | 112.5d | 0d | start no earlier than 2026-08-10 08:00 | Зорькин В | 0.25h |  |
| 124 | 1.61.5 | приемка |  | 30min | 2026-10-01 09:15 | 2026-10-01 09:45 | 123 |  |  | 112.5d | 0d | start no earlier than 2026-08-10 08:00 | Зорькин В | 0.5h |  |
| 125 | 1.61.6 | замена |  | 1d? | 2026-10-02 09:45 | 2026-10-05 09:45 | 124FS+1d |  |  | 112.5d |  | start no earlier than 2026-08-10 08:00 | Тимофеев В | 8h |  |

| ID | WBS | Task | Type | Duration | Start | Finish | Predecessors | Complete | Remaining | Actual finish | Total slack | Constraint | Resources | Work | Actual work |
| --- | --- | --- | --- | --- | --- | --- | --- | --- | --- | --- | --- | --- | --- | --- | --- |
| 126 | 1.62 | **зависает диспелей на расходомере 2л** |  | 16.06d | 2026-08-11 09:00 A | 2026-09-02 09:30 |  | 82% | 2.92d |  | 136.53d |  |  | 2.75h | 2.25h |
| 127 | 1.62.1 | контроль поставки |  | 15min | 2026-08-11 09:00 A | 2026-08-11 09:15 A |  | 100% |  |  |  | start no earlier than 2026-08-11 09:00 | Домоводов К | 0.25h | 0.25h |
| 128 | 1.62.2 | замена кабель к монитору |  | 30min | 2026-08-19 09:00 A | 2026-08-19 09:30 A | 127 | 100% |  |  |  | start no earlier than 2026-08-19 09:00 | Домоводов К | 0.5h | 0.5h |
| 129 | 1.62.3 | объеденить минус шину контроллера с нулевым проводом оборудования ч/з резистор 10 Ом |  | 30min | 2026-09-02 09:00 | 2026-09-02 09:30 |  |  |  |  | 136.53d | start no earlier than 2026-09-02 09:00 | Домоводов К | 0.5h |  |
| 130 | 1.62.4 | замена кабель от ЧП к контроллеру на экранированный |  | 30min | 2026-08-24 09:00 A | 2026-08-24 09:30 A |  | 100% |  |  |  | start no earlier than 2026-08-24 09:00 | Домоводов К | 0.5h | 0.5h |
| 131 | 1.62.5 | замена блок питания 5в |  | 1h | 2026-08-13 09:00 A | 2026-08-13 10:00 A |  | 100% |  |  |  | start no earlier than 2026-08-13 09:00 | Труфанов А | 1h | 1h |
| 132 | 1.63 | подключить розетку на правой ноге квадропака (отключить квадропак на 5 минут) |  | 2h | 2026-08-11 09:00 A | 2026-08-11 11:00 A |  | 100% |  |  |  | start no earlier than 2026-08-11 09:00 | Бобренок В | 2h | 2h |
| 133 | 1.64 | **перенос вентилятор охладителя линия2 в реверс, убрать шкаф** |  | 24.5d | 2026-08-18 09:00 A | 2026-09-18 13:00 |  | 84% | 3.82d |  | 123.09d |  |  | 34h | 29h |
| 134 | 1.64.1 | проектирование рамы |  | 2d | 2026-08-19 09:00 A | 2026-08-20 18:00 A |  | 100% |  |  |  | start no earlier than 2026-08-19 09:00 | Зорькин В | 16h | 16h |
| 135 | 1.64.2 | чертеж рамы под вентилятор |  | 2h | 2026-08-18 09:00 A | 2026-08-18 11:00 A |  | 100% |  |  |  | start no earlier than 2026-08-18 09:00 | Зорькин В; Домоводов К | 4h | 4h |
| 136 | 1.64.3 | заявка вент фитинги |  | 1h | 2026-08-21 09:00 A | 2026-08-21 10:00 A | 135 | 100% |  |  |  | start no earlier than 2026-08-21 09:00 | Зорькин В | 1h | 1h |
| 137 | 1.64.4 | конроль поставки |  | 15min | 2026-09-09 09:00 | 2026-09-09 09:15 | 136FS+10d |  |  |  | 130.56d | start no earlier than 2026-09-09 09:00 | Зорькин В | 0.25h |  |
| 138 | 1.64.5 | сборка рама |  | 4h | 2026-09-07 09:00 A | 2026-09-07 13:00 A |  | 100% |  |  |  | start no earlier than 2026-09-07 09:00 | Некрасов А; Труфанов А | 8h | 8h |
| 139 | 1.64.6 | модернизация венттилятора |  | 4h | 2026-09-18 09:00 | 2026-09-18 13:00 | 138 |  |  |  | 123.09d | start no earlier than 2026-09-18 09:00 | Тимофеев В; Бундин В | 4.75h |  |
| 140 | 1.65 | **ревизия красного смесителя 2 линия (просыпается мука)** |  | 19.03d | 2026-08-17 09:00 A | 2026-09-10 09:15 |  | 92% | 1.46d |  | 129.56d |  |  | 3.25h | 3h |
| 141 | 1.65.1 | подтянуть торцевое уплотнение смесителя |  | 30min | 2026-08-17 09:00 A | 2026-08-17 09:30 A |  | 100% |  |  |  | start no earlier than 2026-08-17 09:00 | Бундин В | 0.5h | 0.5h |
| 142 | 1.65.2 | запрос штатное уплотнеие у производителя / заявка |  | 30min | 2026-08-19 09:00 A | 2026-08-19 09:30 A |  | 100% |  |  |  | start no earlier than 2026-08-19 09:00 | Шуранов Ю | 0.5h | 0.5h |
| 143 | 1.65.3 | контроль поставки уплотнение торцевое вала |  | 15min | 2026-09-10 09:00 | 2026-09-10 09:15 | 142FS+5d |  |  |  | 129.56d | start no earlier than 2026-09-10 09:00 | Зорькин В | 0.25h |  |
| 144 | 1.65.4 | замена |  | 2h | 2026-09-01 09:00 A | 2026-09-01 11:00 A | 143FS+1d | 100% |  |  |  | start no earlier than 2026-09-04 09:00 | Тимофеев В | 2h | 2h |
| 145 | 1.66 | шум зл двигателя 2 линия / смазка |  | 1h | 2026-08-10 08:00 A | 2026-08-10 10:00 A |  | 100% |  |  |  | start no earlier than 2026-08-10 08:00 | Тимофеев В | 1h | 1h |
| 146 | 1.67 | натяжка транспортер №2 линия 2 |  | 2h | 2026-08-12 09:00 A | 2026-08-12 11:00 A |  | 100% |  |  |  | start no earlier than 2026-08-12 09:00 | Тимофеев В | 2h | 2h |
| 147 | 1.68 | монтаж- подключение внутреннего блока кондиционера |  | 2h | 2026-08-05 09:00 A | 2026-08-05 11:00 A |  | 100% |  |  |  | start no earlier than 2026-08-05 09:00 | Труфанов А; Тимофеев В | 4h | 4h |
| 148 | 1.69 | **теко 0,4 -восстановить или заменить блок для тепловухи** |  | 1.12d? | 2026-08-04 09:00 A | 2026-08-05 10:00 |  | 100% |  | 2026-08-05 18:00 |  |  | Макаревич А | 17h | 17h |
| 149 | 1.69.1 | проверить подключение транспортера и тепловуху |  | 1d? | 2026-08-05 09:00 A | 2026-08-05 18:00 A |  | 100% |  |  |  | start no earlier than 2026-08-05 09:00 | Шуранов Ю | 8h | 8h |
| 150 | 1.70 | замена перегоревших светильников, монтаж доп. Светильников (Шуранов- покажу) |  | 4h | 2026-08-05 09:00 A | 2026-08-05 13:00 A |  | 100% |  |  |  | start no earlier than 2026-08-12 09:00 | Труфанов А; Тимофеев В | 8h | 8h |
| 151 | 1.71 | включить мухоловку 1 линия экструдер | manual | 0.5h | 2026-08-02 09:00 A | 2026-08-02 09:30 A |  | 100% |  |  |  | start no earlier than 2026-08-02 09:00 | Бобренок В | 0.5h | 0.5h |
| 152 | 1.72 | пропадает питание на весах смесителя 2 линия- проверить | manual | 1h | 2026-08-01 09:00 A | 2026-08-01 10:00 A |  | 100% |  |  |  | start no earlier than 2026-08-01 09:00 | Бундин В | 1h | 1h |
| 153 | 1.73 | эксперимент с лейкой жиры |  | 2h | 2026-08-06 09:00 A | 2026-08-06 11:00 A |  | 100% |  |  |  | start no earlier than 2026-08-07 09:00 | Тимофеев В | 2h | 2h |
| 154 | 1.74 | камера над компрессором снять и поменять (камеры у нас в кабинете) |  | 1h | 2026-08-03 09:00 A | 2026-08-03 10:00 A |  | 100% |  |  |  | start no earlier than 2026-08-03 09:00 | Макаревич А; Тимофеев В | 2h | 2h |
| 155 | 1.75 | на мезонине смотрит на квадропак, поменять и сделать чуть ниже обзор |  | 1h | 2026-08-03 09:00 A | 2026-08-03 10:00 A |  | 100% |  |  |  | start no earlier than 2026-08-03 09:00 | Макаревич А; Тимофеев В | 2h | 2h |
| 156 | 1.76 | камера 1 линия повернуть чуть правее и приподнять |  | 1h | 2026-08-03 09:00 A | 2026-08-03 10:00 A |  | 100% |  |  |  | start no earlier than 2026-08-03 09:00 | Макаревич А; Тимофеев В | 2h | 2h |
| 157 | 1.77 | камера на углу, где вывозят готовую продукцию с люльки поменять (камеры у нас в кабинете) |  | 2h | 2026-08-03 09:00 A | 2026-08-03 11:00 A |  | 100% |  |  |  | start no earlier than 2026-08-03 09:00 | Макаревич А; Тимофеев В | 4h | 4h |
| 158 | 1.78 | повесить камеру над входом в фасовку, чтобы смотрела на коридор и как обрабатывают руки, монтаж кабеля |  | 3h | 2026-08-03 09:00 A | 2026-08-03 12:00 A |  | 100% |  |  |  | start no earlier than 2026-08-03 09:00 | Макаревич А; Тимофеев В | 6h | 6h |

| ID | WBS | Task | Type | Duration | Start | Finish | Predecessors | Complete | Remaining | Total slack | Free slack | Constraint | Resources | Work | Actual work |
| --- | --- | --- | --- | --- | --- | --- | --- | --- | --- | --- | --- | --- | --- | --- | --- |
| 159 | 1.79 | **снять камеру зона экструдера и повесить на жирах со стороны экструдера, монтаж кабель** |  | 0.12d | 2026-09-09 09:00 | 2026-09-09 10:00 |  |  |  | 130.47d |  |  |  | 2h |  |
| 160 | 1.79.1 | на мойке попробовать снять камеру |  | 1h | 2026-09-09 09:00 | 2026-09-09 10:00 |  |  |  | 130.47d |  | start no earlier than 2026-09-09 09:00 | Труфанов А; Некрасов А | 2h |  |
| 161 | 1.80 | открутить полочку на столе на жирах, сделать ребра жесткости |  | 1h | 2026-07-31 09:00 A | 2026-07-31 10:00 A |  | 100% |  |  |  | start no earlier than 2026-07-31 08:00 | Бундин В | 1h | 1h |
| 162 | 1.81 | слив конденсата с компрессора и продуть радиаторы и фильтры |  | 1h | 2026-07-31 08:00 A | 2026-07-31 10:00 A |  | 100% |  |  |  | start no earlier than 2026-07-31 08:00 | Тимофеев В | 1h | 1h |
| 163 | 1.82 | Ревизия головы от Нотис/заключение |  | 1h | 2026-07-27 08:00 A | 2026-07-27 10:00 A |  | 100% |  |  |  | start no earlier than 2026-07-27 08:00 | Дедов В | 1h | 1h |
| 164 | 1.83 | Снять клавиатуру с головы нотис, подготовить ее к замене лежит на верстаке |  | 30min | 2026-07-29 08:00 A | 2026-07-29 09:30 A |  | 100% |  |  |  | start no earlier than 2026-07-29 08:00 | Дедов В | 0.5h | 0.5h |
| 165 | 1.84 | Ремонт клавиатуры от головы нотис, клаву получить на складе, голову взять у нас в кабинете |  | 1h | 2026-09-01 09:00 A | 2026-09-01 10:00 A |  | 100% |  |  |  | start no earlier than 2026-09-01 08:00 | Бундин В | 1h | 1h |
| 166 | 1.85 | **ремонт кондиционер зона фасовки** |  | 0.5d | 2026-07-16 09:00 A | 2026-07-16 13:00 A |  | 100% |  |  |  |  |  | 6h | 6h |
| 167 | 1.85.1 | демонтаж внутреннего блока |  | 2h | 2026-07-16 09:00 A | 2026-07-16 11:00 A |  | 100% |  |  |  | start no earlier than 2026-07-16 09:00 | Некрасов А; Труфанов А | 4h | 4h |
| 168 | 1.85.2 | разборка, отделить испаритель от рамы |  | 1h | 2026-07-16 11:00 A | 2026-07-16 12:00 A | 167 | 100% |  |  |  | start no earlier than 2026-07-15 09:00 | Бундин В | 1h | 1h |
| 169 | 1.85.3 | опресовка в воде |  | 1h | 2026-07-16 12:00 A | 2026-07-16 13:00 A | 168 | 100% |  |  |  | start no earlier than 2026-07-15 09:00 | Бундин В | 1h | 1h |
| 170 | 1.86 | редуктор конвейера выгрузки пакетов квадропак -> обеспечить гибкое соединеине к раме, жесткое будет ломать либо вал либо редутор |  | 2h | 2026-07-16 09:00 A | 2026-07-16 11:00 A |  | 100% |  |  |  | start no earlier than 2026-07-16 09:00 | Некрасов А | 2h | 2h |
| 171 | 1.87 | **выполнить смотровые люки состояния цепи средниий и верхние этажи. На торцевой крышке с стороны экструдера.** |  | 37d | 2026-07-14 09:00 A | 2026-09-02 18:00 |  | 13% | 32.29d | 135.59d |  |  |  | 9.17h | 1.17h |
| 172 | 1.87.1 | заявка шарниры нерж + бугельный зажим |  | 1h | 2026-07-14 09:00 A | 2026-07-14 10:00 A |  | 100% |  |  |  | start no earlier than 2026-07-14 08:00 | Домоводов К | 1h | 1h |
| 173 | 1.87.2 | контроль доставка |  | 10min | 2026-08-17 09:00 A | 2026-08-17 09:10 A | 172FS+7d | 100% |  |  |  | start no earlier than 2026-08-17 09:00 | Шуранов Ю | 0.17h | 0.17h |
| 174 | 1.87.3 | монтаж 1 линия |  | 4h | 2026-09-02 09:00 | 2026-09-02 13:00 | 173FS+1d |  |  | 135.59d | 0d | start no earlier than 2026-09-02 09:00 | Макаревич А | 4h |  |
| 175 | 1.87.4 | монтаж 2 линия |  | 4h | 2026-09-02 14:00 | 2026-09-02 18:00 | 174 |  |  | 135.59d |  | start no earlier than 2026-07-14 08:00 | Макаревич А | 4h |  |
| 176 | 1.88 | монтаж светильник под площадку дозатора квадропака |  | 4h | 2026-07-10 09:00 A | 2026-07-10 13:00 A |  | 100% |  |  |  | start no earlier than 2026-07-10 09:00 | Бобренок В | 4h | 4h |
| 177 | 1.89 | **замена вентилятор вытяжка с экструдеров** |  | 2.25d | 2026-07-13 09:00 A | 2026-07-15 11:00 A |  | 100% |  |  |  |  |  | 13h | 13h |
| 178 | 1.89.1 | подключение воздуховоды |  | 4h | 2026-07-13 09:00 A | 2026-07-13 13:00 A |  | 100% |  |  |  | start no earlier than 2026-07-13 09:00 | Некрасов А; Бундин В | 8h | 8h |
| 179 | 1.89.2 | установить крыльчатку на мотор |  | 1h | 2026-07-14 09:00 A | 2026-07-14 10:00 A |  | 100% |  |  |  | start no earlier than 2026-07-14 08:00 | Труфанов А | 1h | 1h |
| 180 | 1.89.3 | устарнить причину вибрации мотора |  | 2h | 2026-07-15 09:00 A | 2026-07-15 11:00 A |  | 100% |  |  |  | start no earlier than 2026-07-15 09:00 | Некрасов А; Труфанов А | 4h | 4h |
| 181 | 1.90 | **сборка дозатор на квадропак** |  | 48.25d | 2026-07-09 08:00 A | 2026-09-14 11:00 |  | 84% | 7.61d | 127.34d |  |  |  | 36.83h | 31.5h |
| 182 | 1.90.1 | установить переключатель блокировки сброса дозатором |  | 30min | 2026-08-15 09:00 A | 2026-08-17 09:30 A |  | 100% |  |  |  | start no earlier than 2026-08-15 09:00 | Труфанов А | 0.5h | 0.5h |
| 183 | 1.90.2 | упорядочить схему |  | 30min | 2026-08-15 09:00 A | 2026-08-17 09:30 A |  | 100% |  |  |  | start no earlier than 2026-08-15 09:00 | Труфанов А | 0.5h | 0.5h |
| 184 | 1.90.3 | транспортировка дозатора в слесарку |  | 1h | 2026-08-04 08:00 A | 2026-08-04 10:00 A |  | 100% |  |  |  | start no earlier than 2026-08-04 08:00 | Труфанов А; Тимофеев В | 2h | 2h |
| 185 | 1.90.4 | установить розетку для дозатора. Вывод кабель сверлить платформу, что бы он был не под ногами и удобен при уборке |  | 2h | 2026-07-09 08:00 A | 2026-07-09 11:00 A |  | 100% |  |  |  | start no earlier than 2026-07-09 08:00 | Бобренок В | 2h | 2h |
| 186 | 1.90.5 | закрепить монитор фото Зорькин |  | 2h | 2026-07-09 08:00 A | 2026-07-09 11:00 A |  | 100% |  |  |  | start no earlier than 2026-07-09 08:00 | Бобренок В | 2h | 2h |
| 187 | 1.90.6 | подключение дозатора к машине / поиск кабеля в 3 цехе / изучение документации |  | 4h | 2026-07-14 09:00 A | 2026-07-14 13:00 A |  | 100% |  |  |  | start no earlier than 2026-07-14 09:00 | Труфанов А | 4h | 4h |
| 188 | 1.90.7 | подключить реле аварии дозатора паралельно датчику отсутствия пакета квадропака (схема прилагается) |  | 1h | 2026-08-12 09:00 A | 2026-08-12 10:00 A | 187 | 100% |  |  |  | start no earlier than 2026-08-12 09:00 | Труфанов А | 1h | 1h |
| 189 | 1.90.8 | калибровка весов и разгон наполнения, тестирование работы |  | 4h | 2026-08-12 09:00 A | 2026-08-12 13:00 A |  | 100% |  |  |  | start no earlier than 2026-08-12 09:00 | Труфанов А | 4h | 4h |
| 190 | 1.90.9 | монтаж кабель выравнивания потенциалов площадка дозатора и площадка квадропака |  | 30min | 2026-08-15 09:00 A | 2026-08-17 09:30 A |  | 100% |  |  |  | start no earlier than 2026-08-15 09:00 | Труфанов А | 0.5h | 0.5h |
| 191 | 1.90.10 | контроль поставки маткериал | milestone | 0d | 2026-08-27 09:00 A | 2026-08-27 09:00 A |  | 100% |  |  |  | start no earlier than 2026-08-27 09:00 | Зорькин В |  |  |
| 192 | 1.90.11 | тестирование весов / разгон |  | 2h | 2026-09-14 09:00 | 2026-09-14 11:00 | 191 |  |  | 127.34d |  | start no earlier than 2026-09-14 09:00 | Зорькин В | 2h |  |
| 193 | 1.90.12 | подключить синхронизацию пуска дозатора паралельно катушки открытия заслонки квадропака |  | 4h | 2026-08-04 11:00 A | 2026-08-04 16:00 A | 188 | 100% |  |  |  | start no earlier than 2026-07-16 09:00 | Труфанов А | 4h | 4h |
| 194 | 1.90.13 | монтаж перила на площадку - подготовка |  | 2h | 2026-08-14 09:00 A | 2026-08-14 11:00 A |  | 100% |  |  |  | start no earlier than 2026-08-14 09:00 | Тимофеев В | 2h | 2h |
| 195 | 1.90.14 | монтаж перила на площадку |  | 2h | 2026-08-17 09:00 A | 2026-08-17 11:00 A |  | 100% |  |  |  | start no earlier than 2026-08-17 09:00 | Тимофеев В; Бобренок В | 4h | 4h |
| 196 | 1.90.15 | сверлить для крепления перил |  | 2h | 2026-09-04 09:00 A | 2026-09-04 11:00 A | 192 | 100% |  |  |  | start no earlier than 2026-09-04 09:00 | Макаревич А | 2h | 2h |
| 197 | 1.90.16 | закрыть зад крышку |  | 20min | 2026-09-10 09:00 | 2026-09-10 09:20 |  |  |  | 129.55d |  | start no earlier than 2026-09-10 09:00 | Труфанов А | 0.33h |  |
| 198 | 1.90.17 | монтаж кнопка дозатор ОН/ОФФ |  | 1h | 2026-09-10 09:00 | 2026-09-10 10:00 |  |  |  | 129.47d |  | start no earlier than 2026-09-10 09:00 | Труфанов А | 1h |  |
| 199 | 1.90.18 | закрыть металлом пустые места между площадками квадропак и дозатор |  | 2h | 2026-09-11 09:00 | 2026-09-11 11:00 | 196 |  |  | 128.34d |  | start no earlier than 2026-09-11 09:00 | Тимофеев В | 2h |  |
| 200 | 1.90.19 | Сделать перегородки в бункер дозатора для увеличения объема секций |  | 3h | 2026-09-02 09:00 A | 2026-09-02 12:00 A |  | 100% |  |  |  | start no earlier than 2026-09-04 09:00 | Тимофеев В | 3h | 3h |
| 201 | 1.91 | навести сортиировка / порядок пандус 1ц |  | 4h | 2026-07-10 09:00 A | 2026-07-10 13:00 A |  | 100% |  |  |  | start no earlier than 2026-07-10 09:00 | Тимофеев В; Амрулин Р | 7h | 7h |

| ID | WBS | Task | Type | Duration | Start | Finish | Predecessors | Complete | Remaining | Actual start | Total slack | Free slack | Constraint | Resources | Work | Actual work |
| --- | --- | --- | --- | --- | --- | --- | --- | --- | --- | --- | --- | --- | --- | --- | --- | --- |
| 202 | 1.92 | **Кондиционер зоны экструдера** |  | 0.5d | 2026-07-07 09:00 A | 2026-07-07 13:00 A |  | 100% |  |  |  |  |  |  | 4h | 4h |
| 203 | 1.92.1 | Чистка сливной магистрали |  | 4h | 2026-07-07 09:00 A | 2026-07-07 13:00 A |  | 100% |  |  |  |  | start no earlier than 2026-07-07 09:00 | Бундин В | 4h | 4h |
| 204 | 1.93 | **установить датчик давления на экструдер** |  | 49.53d | 2026-07-06 08:00 A | 2026-09-10 14:15 |  | 68% | 15.89d |  | 129.06d |  |  |  | 15.25h | 11h |
| 205 | 1.93.1 | контроль поставка фитинги |  | 15min | 2026-09-10 09:00 | 2026-09-10 09:15 |  |  |  |  | 129.06d | 0d | start no earlier than 2026-09-10 09:00 | Зорькин В | 0.25h |  |
| 206 | 1.93.2 | монтаж кронштейны для фиксации датчикоа давления 1+2 линия |  | 2h | 2026-07-10 09:00 A | 2026-07-10 11:00 A |  | 100% |  |  |  |  | start no earlier than 2026-07-10 09:00 | Макаревич А; Некрасов А | 4h | 4h |
| 207 | 1.93.3 | установить датчики давления через гидравлические шланги |  | 2h | 2026-07-06 08:00 A | 2026-07-06 11:00 A |  | 100% |  |  |  |  | start no earlier than 2026-07-06 08:00 | Дедов В | 2h | 2h |
| 208 | 1.93.4 | доработка кожух нож узла для закрытия |  | 2h | 2026-07-07 09:00 A | 2026-07-07 11:00 A |  | 100% |  |  |  |  | start no earlier than 2026-07-07 09:00 | Бобренок В | 2h | 2h |
| 209 | 1.93.5 | Прокинуть кабель ШВВП 2х0,75 от датчиков давления до регистраторов, сделать по красоте. |  | 3h | 2026-07-10 09:00 A | 2026-07-10 12:00 A |  | 100% |  |  |  |  | start no earlier than 2026-07-10 09:00 | Бобренок В | 3h | 3h |
| 210 | 1.93.6 | подключение датчиков давления к регистратору |  | 4h | 2026-09-10 09:15 | 2026-09-10 14:15 | 205 |  |  |  | 129.06d |  | start no earlier than 2026-09-02 09:00 | Домоводов К | 4h |  |
| 211 | 1.94 | печь №1 ревизия/замена перемычек |  | 4h | 2026-07-04 09:00 A | 2026-07-06 13:00 A |  | 100% |  |  |  |  | start no earlier than 2026-07-04 09:00 | Макаревич А | 4h | 4h |
| 212 | 1.95 | печь №2 ревизия/замена перемычек |  | 2h | 2026-07-16 09:00 A | 2026-07-16 11:00 A |  | 100% |  |  |  |  | start no earlier than 2026-07-16 09:00 | Бобренок В | 2h | 2h |
| 213 | 1.96 | **заменить амперметры неиспрвные на ШУ 1 и 2 линия (они на складе приехали сегодня новые посмотреть фото в выдаче)** |  | 1h? | 2026-09-04 09:00 | 2026-09-04 10:00 |  | 50% | 0.5h? | 2026-09-05 09:00 |  |  |  |  | 4h | 2h |
| 214 | 1.96.1 | монтаж - оказалить не те |  | 2h | 2026-09-05 09:00 A | 2026-09-05 11:00 A |  | 100% |  |  |  |  | start no earlier than 2026-09-05 09:00 | Дедов В | 2h | 2h |
| 215 | 1.96.2 | контроль датч тока | milestone | 0d | 2026-09-09 09:00 | 2026-09-09 09:00 |  |  |  |  | 130.59d |  | start no earlier than 2026-09-09 09:00 | Зорькин В |  |  |
| 216 | 1.96.3 | монтаж датчиковтока на 2л |  | 2h | 2026-09-10 09:00 | 2026-09-10 11:00 |  |  |  |  | 129.34d |  | start no earlier than 2026-09-10 09:00 | Бундин В | 2h |  |
| 217 | 1.97 | **ставим 2 частотника на вентиляторы вытяжки с печек №1 и 2** |  | 0.5d | 2026-07-02 09:00 A | 2026-07-02 13:00 A |  | 100% |  |  |  |  |  |  | 4h | 4h |
| 218 | 1.97.1 | подключение к улиткам вытяжки 1 и 2 линия (помошника дадим) |  | 4h | 2026-07-02 09:00 A | 2026-07-02 13:00 A |  | 100% |  |  |  |  | start no earlier than 2026-07-02 09:00 | Тимофеев В | 4h | 4h |
| 219 | 1.98 | подключить частотный привод вентилятор на площадке жиротопки |  | 4h | 2026-07-14 09:00 A | 2026-07-14 13:00 A |  | 100% |  |  |  |  | start no earlier than 2026-07-14 09:00 | Дедов В | 4h | 4h |
| 220 | 1.99 | установка частотника для улитку в жиротопке (по телефону расскажу) |  | 4h | 2026-07-02 09:00 A | 2026-07-02 13:00 A |  | 100% |  |  |  |  | start no earlier than 2026-07-02 09:00 | Дедов В | 4h | 4h |
| 221 | 1.100 | заменить шнеки и гильзы на 2 линии (ставим усиленные, 2 гильзы) по уровню (операторы помогут) | manual | 10h | 2026-07-05 09:00 A | 2026-07-06 11:00 A |  | 100% |  |  |  |  | start no earlier than 2026-07-05 09:00 | Бундин В | 10h | 10h |
| 222 | 1.101 | **поменять фильтрующую ткань на фильтрах кондиционеров 1 цех** |  | 0.25d | 2026-07-01 09:00 A | 2026-07-01 11:00 A |  | 100% |  |  |  |  |  |  | 4h | 4h |
| 223 | 1.101.1 | установка фильтров закрываем внутренние блоки |  | 2h | 2026-07-01 09:00 A | 2026-07-01 11:00 A |  | 100% |  |  |  |  | start no earlier than 2026-07-01 09:00 | Макаревич А; Некрасов А | 4h | 4h |
| 224 | 1.102 | изготовление кронштейна для установки вентилятора крепим на место в зоне экструдера |  | 2h | 2026-06-30 09:00 A | 2026-06-30 11:00 A |  | 100% |  |  |  |  | start no earlier than 2026-06-30 09:00 | Некрасов А; Тимофеев В | 4h | 4h |
| 225 | 1.103 | снять на всех валах барабанов колеса, будем покрывать полиуретаном |  | 3h | 2026-06-29 09:00 A | 2026-06-29 12:00 A |  | 100% |  |  |  |  | start no earlier than 2026-06-29 09:00 | Бундин В | 3h | 3h |

| ID | WBS | Task | Type | Duration | Start | Finish | Predecessors | Complete | Actual start | Actual finish | Total slack | Free slack | Constraint | Resources | Work | Actual work |
| --- | --- | --- | --- | --- | --- | --- | --- | --- | --- | --- | --- | --- | --- | --- | --- | --- |
| 226 | 1.104 | **сборка раковина нерж для мойки конвейер** |  | 7.25d? | 2026-10-12 09:00 | 2026-10-21 11:00 |  |  |  |  | 100.34d |  |  |  | 34h |  |
| 227 | 1.104.1 | подготовить данные, оформить как проект / инициировать совещание |  | 2h | 2026-10-12 09:00 | 2026-10-12 11:00 |  |  |  |  | 100.34d | 0d | start no earlier than 2026-10-12 09:00 | Зорькин В | 2h |  |
| 228 | 1.104.2 | совещание с руководителями / фиксация решения |  | 1d? | 2026-10-13 11:00 | 2026-10-14 11:00 | 227FS+1d |  |  |  | 100.34d | 0d | start no earlier than 2026-08-31 09:00 | Зорькин В | 8h |  |
| 229 | 1.104.3 | подготовить чертеж раковины, проверить материал |  | 1d? | 2026-10-15 11:00 | 2026-10-16 11:00 | 228FS+1d |  |  |  | 100.34d | 0d | start no earlier than 2026-09-08 09:00 | Зорькин В | 8h |  |
| 230 | 1.104.4 | сборка |  | 2d | 2026-10-19 11:00 | 2026-10-21 11:00 | 229FS+1d |  |  |  | 100.34d |  | start no earlier than 2026-07-14 08:00 | Бундин В | 16h |  |
| 231 | 1.105 | ревизия шестеренок питателя 2 линия, если нужно замена с зип- питатель синий склад |  | 3h | 2026-06-29 09:00 A | 2026-06-29 12:00 A |  | 100% |  |  |  |  | start no earlier than 2026-06-29 09:00 | Бундин В | 3h | 3h |
| 232 | 1.106 | повесить полочки у ОТК в кабинете- крепеж по гипсокортону у меня на столе |  | 1h | 2026-06-26 09:00 A | 2026-06-26 10:00 A |  | 100% |  |  |  |  | start no earlier than 2026-06-26 09:00 | Тимофеев В; Дедов В | 2h | 2h |
| 233 | 1.107 | нормально прикрутить светильник на стойке со сканером QR- кодов на фасовке, если нужно заменить на другой | manual | 2h | 2026-07-03 09:00 A | 2026-07-03 11:00 A |  | 100% |  |  |  |  | start no earlier than 2026-07-03 09:00 | Макаревич А | 2h | 2h |
| 234 | 1.108 | прикрутить розетку возле ШУ приточки |  | 1h | 2026-07-04 09:00 A | 2026-07-06 10:00 A |  | 100% |  |  |  |  | start no earlier than 2026-07-04 09:00 | Дедов В | 1h | 1h |
| 235 | 1.109 | заменить светильник 50Вт на жиротопке | manual | 2h | 2026-06-27 09:00 A | 2026-06-27 11:00 A |  | 100% |  |  |  |  | start no earlier than 2026-06-27 09:00 | Дедов В | 2h | 2h |
| 236 | 1.110 | мойка внутрених и внешних блоков керхером |  | 4h | 2026-06-24 09:00 A | 2026-06-24 13:00 A |  | 100% |  |  |  |  | start no earlier than 2026-06-24 09:00 | Тимофеев В; Дедов В | 8h | 8h |
| 237 | 1.111 | 1 линия средняя зона печи 115А |  | 2h | 2026-07-01 09:00 A | 2026-07-01 11:00 A |  | 100% |  |  |  |  | start no earlier than 2026-07-01 09:00 | Некрасов А | 2h | 2h |
| 238 | 1.112 | продуть внешний блок кондиционера (посередине) |  | 2h | 2026-06-24 09:00 A | 2026-06-24 11:00 A |  | 100% |  |  |  |  | start no earlier than 2026-06-24 09:00 | Тимофеев В | 2h | 2h |
| 239 | 1.113 | слить конденсат и продуть радиаторы на компрессоре |  | 1h | 2026-06-22 09:00 A | 2026-06-22 10:00 A |  | 100% |  |  |  |  | start no earlier than 2026-06-22 08:00 | Бундин В | 1h | 1h |
| 240 | 1.114 | взять ключи на складе и повесить возле каждого щитка | manual | 1h | 2026-07-05 09:00 A | 2026-07-05 10:00 A |  | 100% |  |  |  |  | start no earlier than 2026-07-05 09:00 | Бундин В | 1h | 1h |
| 241 | 1.115 | заменить монтажную коробку- пускатели улиток, зона экструдера | manual | 1h | 2026-06-30 09:00 A | 2026-06-30 10:00 A |  | 100% |  |  |  |  | start no earlier than 2026-06-30 09:00 | Бундин В | 1h | 1h |
| 242 | 1.116 | герметизация стыков в душевой женской, потечка воды | manual | 1h | 2026-06-21 09:00 A | 2026-06-21 10:00 A |  | 100% |  |  |  |  | start no earlier than 2026-06-21 09:00 | Бундин В | 1h | 1h |
| 243 | 1.117 | **вернуть колбу уровня подачи воды на 2 линию** |  | 1h? | 2026-06-26 09:00 | 2026-06-26 10:00 |  | 100% | 2026-06-29 09:00 | 2026-06-29 18:00 |  |  |  |  | 8h | 8h |
| 244 | 1.117.1 | найти колбу |  | 1d? | 2026-06-29 09:00 A | 2026-06-29 18:00 A |  | 100% |  |  |  |  | start no earlier than 2026-06-29 09:00 | Шуранов Ю | 8h | 8h |
| 245 | 1.118 | **изготовить шило для экструдерщиков, они подскажут** |  | 1h? | 2026-06-26 09:00 | 2026-06-26 10:00 |  |  |  |  |  |  |  |  | 0.25h |  |
| 246 | 1.118.1 | заказать спицы не пустые |  | 15min | 2026-09-01 09:00 | 2026-09-01 09:15 |  |  |  |  | 137.56d |  | start no earlier than 2026-09-01 09:00 | Шуранов Ю | 0.25h |  |
| 247 | 1.119 | отключить кондеры и продуть внешние блоки кондиционеров 1 ц. |  | 2h | 2026-06-20 09:00 A | 2026-06-22 11:00 A |  | 100% |  |  |  |  | start no earlier than 2026-06-20 09:00 | Бундин В | 2h | 2h |
| 248 | 1.120 | **померить верхний воздуховод и трассу для подключения новой улитки** |  | 1d? | 2026-06-22 09:00 A | 2026-06-22 18:00 A |  | 100% |  |  |  |  |  | Тимофеев В; Зорькин В | 24h | 24h |
| 249 | 1.120.1 | заказать переходник |  | 1d? | 2026-06-22 09:00 A | 2026-06-22 18:00 A |  | 100% |  |  |  |  | start no earlier than 2026-06-22 08:00 | Зорькин В | 8h | 8h |
| 250 | 1.121 | слив конденсата с компрессора и продуть радиаторы и фильтры |  | 1h | 2026-06-14 09:00 A | 2026-06-15 10:00 A |  | 100% |  |  |  |  | start no earlier than 2026-06-14 09:00 | Бобренок В | 1h | 1h |

| ID | WBS | Task | Duration | Start | Finish | Predecessors | Complete | Total slack | Constraint | Resources | Work | Actual work |
| --- | --- | --- | --- | --- | --- | --- | --- | --- | --- | --- | --- | --- |
| 251 | 1.122 | **закрепить редуктор к отводящему транспортеру** | 1d? | 2026-06-17 09:00 A | 2026-06-17 18:00 A |  | 100% |  |  | Некрасов А | 16h | 16h |
| 252 | 1.122.1 | сделать надежное крепление на мойке | 1d? | 2026-06-17 09:00 A | 2026-06-17 18:00 A |  | 100% |  | start no earlier than 2026-06-17 09:00 | Бундин В | 8h | 8h |
| 253 | 1.123 | заменить сальник на вакууматоре (редуктор) | 1h | 2026-06-11 09:00 A | 2026-06-11 10:00 A |  | 100% |  | start no earlier than 2026-06-11 09:00 | Тимофеев В | 1h | 1h |
| 254 | 1.124 | законтрогаить шпильки-ножки запайщиков | 1h | 2026-06-12 09:00 A | 2026-06-12 10:00 A |  | 100% |  | start no earlier than 2026-06-12 09:00 | Бундин В | 1h | 1h |
| 255 | 1.125 | настроить подачу масла на квадропаке по пневмо системе (спросить у Дедова) | 1h | 2026-06-10 09:00 A | 2026-06-10 10:00 A |  | 100% |  | start no earlier than 2026-06-10 09:00 | Труфанов А | 1h | 1h |
| 256 | 1.126 | **проверить давление в гидроаккумуляторе водоподготовки** | 0.25d | 2026-06-10 09:00 A | 2026-06-10 11:00 A |  | 100% |  |  | Дедов В | 4h | 4h |
| 257 | 1.126.1 | замена мембраны | 2h | 2026-06-10 09:00 A | 2026-06-10 11:00 A |  | 100% |  | start no earlier than 2026-06-10 09:00 | Дедов В | 2h | 2h |
| 258 | 1.127 | модернизация опроры пневмоцилиндра встряживателя №1 квадропак | 4h | 2026-10-19 09:00 | 2026-10-19 13:00 |  |  | 102.09d | start no earlier than 2026-10-19 09:00 | Некрасов А | 4h |  |
| 259 | 1.128 | **готовить в зип сетку оборотную для печей (нижняя)** | 0.5d | 2026-06-09 09:00 A | 2026-06-09 13:00 A |  | 100% |  |  |  | 4.5h | 4.5h |
| 260 | 1.128.1 | проверка материал | 30min | 2026-06-09 09:00 A | 2026-06-09 09:30 A |  | 100% |  | start no earlier than 2026-06-09 09:00 | Тимофеев В | 0.5h | 0.5h |
| 261 | 1.128.2 | сборка | 4h | 2026-06-09 09:00 A | 2026-06-09 13:00 A |  | 100% |  | start no earlier than 2026-06-09 09:00 | Тимофеев В | 4h | 4h |
| 262 | 1.129 | подключить частотный привод насос жир 2 линия/ при остановке | 2h | 2026-06-07 09:00 A | 2026-06-08 11:00 A |  | 100% |  | start no earlier than 2026-06-07 09:00 | Дедов В | 2h | 2h |
| 263 | 1.130 | **жиротопка текет сальник насоса** | 36.03d? | 2026-06-28 09:00 A | 2026-08-18 09:15 A |  | 100% |  |  |  | 18.5h | 18.5h |
| 264 | 1.130.1 | замена насос из зип | 1h | 2026-06-28 09:00 A | 2026-06-29 10:00 A |  | 100% |  | start no earlier than 2026-06-28 09:00 | Дедов В | 1h | 1h |
| 265 | 1.130.2 | замена сальник на снятом насосе | 1h | 2026-06-28 10:00 A | 2026-06-29 10:00 A | 264 | 100% |  | start no earlier than 2026-06-17 09:00 | Дедов В | 1h | 1h |
| 266 | 1.130.3 | заказать | 1d? | 2026-06-29 09:00 A | 2026-06-29 18:00 A |  | 100% |  | start no earlier than 2026-06-29 09:00 | Шуранов Ю | 8h | 8h |
| 267 | 1.130.4 | ревизия прогресса утечки | 15min | 2026-08-05 09:00 A | 2026-08-05 09:15 A |  | 100% |  | start no earlier than 2026-08-05 09:00 | Дедов В | 0.25h | 0.25h |
| 268 | 1.130.5 | контроль наличия сальника | 15min | 2026-08-18 09:00 A | 2026-08-18 09:15 A |  | 100% |  | start no earlier than 2026-08-18 09:00 | Шуранов Ю | 0.25h | 0.25h |
| 269 | 1.130.6 | замена сальника | 1d? | 2026-08-05 09:00 A | 2026-08-05 18:00 A |  | 100% |  | start no earlier than 2026-08-05 09:00 | Дедов В | 8h | 8h |
| 270 | 1.131 | ремонт весов напольный (палетные) проверить кабель на обрыв | 3h | 2026-06-11 09:00 A | 2026-06-11 12:00 A |  | 100% |  | start no earlier than 2026-06-11 09:00 | Дедов В | 3h | 3h |
| 271 | 1.132 | печь №2 проверка токов, тен, замена | 2h | 2026-06-04 09:00 A | 2026-06-04 11:00 A |  | 100% |  | start no earlier than 2026-06-04 09:00 | Некрасов А; Бундин В | 4h | 4h |
| 272 | 1.133 | изготовление шторки после приемного лотка циклона | 2h | 2026-06-04 09:00 A | 2026-06-04 11:00 A |  | 100% |  | start no earlier than 2026-06-04 09:00 | Бундин В | 2h | 2h |
| 273 | 1.134 | **на аппликаторе настроить печать QR-кода на пакет, чтобы не размазывало (по тел. Объясню)** | 3.12d | 2026-06-04 09:00 A | 2026-06-09 10:00 A |  | 100% |  |  |  | 2h | 2h |
| 274 | 1.134.1 | тест (подключить доп. Датчик -настроить печать без размытия, картридж находиться у Луговских подписанный) | 1h | 2026-06-04 09:00 A | 2026-06-04 10:00 A |  | 100% |  | start no earlier than 2026-06-04 09:00 | Дедов В | 1h | 1h |
| 275 | 1.134.2 | тест | 1h | 2026-06-09 09:00 A | 2026-06-09 10:00 A |  | 100% |  | start no earlier than 2026-06-09 09:00 | Тимофеев В | 1h | 1h |
| 276 | 1.135 | целкает аппликатор -разобраться, устранить | 1h | 2026-06-03 08:00 A | 2026-06-03 10:00 A |  | 100% |  | start no earlier than 2026-06-03 08:00 | Дедов В | 1h | 1h |

| ID | WBS | Task | Type | Duration | Start | Finish | Predecessors | Complete | Remaining | Total slack | Free slack | Constraint | Resources | Work | Actual work |
| --- | --- | --- | --- | --- | --- | --- | --- | --- | --- | --- | --- | --- | --- | --- | --- |
| 277 | 1.136 | **установить резервную трубку/штангу с форсункой на подачу жира** |  | 11.12d | 2026-09-08 09:00 A | 2026-09-23 10:00 |  | 10% | 10.01d | 120.47d |  |  |  | 10h | 1h |
| 278 | 1.136.1 | проект-схема разработать |  | 1h | 2026-09-08 09:00 A | 2026-09-08 10:00 A |  | 100% |  |  |  | start no earlier than 2026-09-08 09:00 | Домоводов К | 1h | 1h |
| 279 | 1.136.2 | разработать спецкронштейн крепления 4х трубок |  | 1h | 2026-09-10 09:00 | 2026-09-10 10:00 |  |  |  | 120.47d | 0d | start no earlier than 2026-09-10 09:00 | Домоводов К | 1h |  |
| 280 | 1.136.3 | монтаж спец кронштенна |  | 1h | 2026-09-11 10:00 | 2026-09-11 11:00 | 279FS+1d |  |  | 120.47d | 0d | start no earlier than 2026-09-10 09:00 | Тимофеев В | 1h |  |
| 281 | 1.136.4 | заявка фитинги / тройники / краны / трубка |  | 1h | 2026-09-11 11:00 | 2026-09-11 12:00 | 278FS+1d, 280 |  |  | 120.47d | 0d | start no earlier than 2026-06-03 08:00 | Зорькин В | 1h |  |
| 282 | 1.136.5 | доставка контроль | milestone | 0d | 2026-09-18 12:00 | 2026-09-18 12:00 | 281FS+5d |  |  | 120.47d | 0d | start no earlier than 2026-06-03 08:00 | Зорькин В |  |  |
| 283 | 1.136.6 | сборка в мастерской |  | 4h | 2026-09-21 12:00 | 2026-09-21 17:00 | 282FS+1d |  |  | 120.47d | 0d | start no earlier than 2026-06-15 09:00 | Тимофеев В | 4h |  |
| 284 | 1.136.7 | монтаж на линию |  | 2h | 2026-09-22 17:00 | 2026-09-23 10:00 | 283FS+1d |  |  | 120.47d |  | start no earlier than 2026-06-03 08:00 | Тимофеев В | 2h |  |
| 285 | 1.137 | **установить автоматику запуска шнека + смеситель по датчику уровня сырья в бункере экструдера** |  | 10.4d? | 2026-09-09 09:00 | 2026-09-23 12:10 |  |  |  | 120.2d |  |  |  | 19.17h |  |
| 286 | 1.137.1 | разработка схема / компановка |  | 1h | 2026-09-09 09:00 | 2026-09-09 10:00 |  |  |  | 120.2d | 0d | start no earlier than 2026-09-09 09:00 | Домоводов К | 1h |  |
| 287 | 1.137.2 | заявка датчики / пускатели / эл щит |  | 2h | 2026-09-09 10:00 | 2026-09-09 12:00 | 286 |  |  | 120.2d | 0d | start no earlier than 2026-06-04 09:00 | Домоводов К | 2h |  |
| 288 | 1.137.3 | доставка контроль |  | 5min | 2026-09-18 12:00 | 2026-09-18 12:05 | 287FS+7d |  |  | 120.2d | 0d | start no earlier than 2026-06-03 08:00 | Зорькин В | 0.08h |  |
| 289 | 1.137.4 | контроль поставки |  | 5min | 2026-09-21 12:05 | 2026-09-21 12:10 | 288FS+1d |  |  | 120.2d | 0d | start no earlier than 2026-06-03 08:00 | Зорькин В | 0.08h |  |
| 290 | 1.137.5 | сборка ШУ |  | 1d? | 2026-09-21 12:10 | 2026-09-22 12:10 | 289 |  |  | 120.2d | 0d | start no earlier than 2026-06-24 09:00 | Дедов В | 8h |  |
| 291 | 1.137.6 | монтаж в линию |  | 1d? | 2026-09-22 12:10 | 2026-09-23 12:10 | 290 |  |  | 120.2d |  | start no earlier than 2026-06-03 08:00 | Дедов В | 8h |  |
| 292 | 1.138 | поставить на двигатели накопительных столов тепловые реле |  | 2h | 2026-06-15 09:00 | 2026-06-15 11:00 |  |  |  | 193.34d |  | start no earlier than 2026-06-15 09:00 | Дедов В | 2h |  |
| 293 | 1.139 | влагоотделитель крышки загрузки квадропак треснул- замена |  | 1h | 2026-06-10 09:00 | 2026-06-10 10:00 |  |  |  | 196.47d |  | start no earlier than 2026-06-10 09:00 | Дедов В | 1h |  |
| 294 | 1.140 | установка ПЧ на насос жира 2 линия |  | 2h | 2026-06-02 09:00 A | 2026-06-02 11:00 A |  | 100% |  |  |  | start no earlier than 2026-06-02 09:00 | Дедов В | 2h | 2h |
| 295 | 1.141 | установка ПЧ на барабаны жиров 1 и 2 линия |  | 2h | 2026-06-02 09:00 A | 2026-06-02 11:00 A |  | 100% |  |  |  | start no earlier than 2026-06-02 09:00 | Дедов В | 2h | 2h |
| 296 | 1.142 | **рассекатели после шлюзовика 1 и 2 линия сделать, чтобы корм равномерно ложился по поверхности сетки** |  | 5.25d | 2026-06-03 09:00 A | 2026-06-10 11:00 A |  | 100% |  |  |  |  |  | 11h | 11h |
| 297 | 1.142.1 | после обеда будет остановка 2 линия- модернизация рассекателя |  | 1h | 2026-06-03 09:00 A | 2026-06-03 10:00 A |  | 100% |  |  |  | start no earlier than 2026-06-03 09:00 | Бундин В | 1h | 1h |
| 298 | 1.142.2 | **установить зубчатую пластину для выравнивания слоя на входе в печь** |  | 5.25d | 2026-06-03 09:00 A | 2026-06-10 11:00 A |  | 100% |  |  |  |  |  | 10h | 10h |
| 299 | 1.142.2.1 | подготовиьт чертеж |  | 2h | 2026-06-03 09:00 A | 2026-06-03 11:00 A |  | 100% |  |  |  | start no earlier than 2026-06-03 08:00 | Домоводов К | 2h | 2h |
| 300 | 1.142.2.2 | изготовить |  | 6h | 2026-06-05 09:00 A | 2026-06-05 16:00 A | 299 | 100% |  |  |  | start no earlier than 2026-06-05 09:00 | Бундин В | 6h | 6h |
| 301 | 1.142.2.3 | монтаж |  | 2h | 2026-06-10 09:00 A | 2026-06-10 11:00 A | 300 | 100% |  |  |  | start no earlier than 2026-06-10 09:00 | Некрасов А | 2h | 2h |

| ID | WBS | Task | Type | Duration | Start | Finish | Predecessors | Complete | Remaining | Total slack | Constraint | Resources | Work | Actual work |
| --- | --- | --- | --- | --- | --- | --- | --- | --- | --- | --- | --- | --- | --- | --- |
| 302 | 1.143 | **монтаж 2х прожекторов на барабаны жиров** |  | 0.25d | 2026-06-02 09:00 A | 2026-06-02 11:00 A |  | 100% |  |  |  |  | 2h | 2h |
| 303 | 1.143.1 | подключить в ШУ самого транспортера на автомат |  | 2h | 2026-06-02 09:00 A | 2026-06-02 11:00 A |  | 100% |  |  | start no earlier than 2026-06-02 09:00 | Макаревич А | 2h | 2h |
| 304 | 1.144 | **проверка вентилятор упавший в зимний период. Тест на месте** |  | 6.25d | 2026-06-05 09:00 A | 2026-06-15 11:00 A |  | 100% |  |  |  |  | 10h | 10h |
| 305 | 1.144.1 | изготовить подиум под улитку |  | 6h | 2026-06-05 09:00 A | 2026-06-05 16:00 A |  | 100% |  |  | start no earlier than 2026-06-05 09:00 | Тимофеев В | 6h | 6h |
| 306 | 1.144.2 | перенос вентилятора |  | 2h | 2026-06-15 09:00 A | 2026-06-15 11:00 A |  | 100% |  |  | start no earlier than 2026-06-15 09:00 | Тимофеев В; Некрасов А | 4h | 4h |
| 307 | 1.145 | прачка 1ц замена светильник |  | 1h | 2026-05-29 09:00 A | 2026-05-29 10:00 A |  | 100% |  |  | start no earlier than 2026-05-29 08:00 | Бундин В | 1h | 1h |
| 308 | 1.146 | запайщик замена нихром |  | 1h | 2026-05-29 09:00 A | 2026-05-29 10:00 A |  | 100% |  |  | start no earlier than 2026-05-29 08:00 | Бундин В | 1h | 1h |
| 309 | 1.147 | устранить провисание патрубка подачи ГДЗ линия 2 |  | 1h | 2026-08-31 09:00 A | 2026-08-31 10:00 A |  | 100% |  |  | start no earlier than 2026-08-31 09:00 | Тимофеев В | 1h | 1h |
| 310 | 1.148 | крепеление РР магистраль ф20 воздух в склад гдз |  | 15min | 2026-05-27 09:00 A | 2026-05-27 09:15 A |  | 100% |  |  | start no earlier than 2026-05-27 09:00 | Бундин В | 0.25h | 0.25h |
| 311 | 1.149 | **перевод насосов ГДЗ на канистры с трассой на насос > 1/2** |  | 3.25d | 2026-05-28 09:00 A | 2026-06-02 11:00 |  | 50% | 1.62d | 202.34d |  |  | 4h | 2h |
| 312 | 1.149.1 | подготовка канистры установить штуцер, подготовить шланг + фитинги на насос |  | 2h | 2026-05-28 09:00 A | 2026-05-28 11:00 A |  | 100% |  |  | start no earlier than 2026-05-28 09:00 | Бундин В | 2h | 2h |
| 313 | 1.149.2 | монаж на линию 1 |  | 2h | 2026-06-02 09:00 | 2026-06-02 11:00 | 312 |  |  | 202.34d | start no earlier than 2026-06-02 09:00 | Бундин В | 2h |  |
| 314 | 1.150 | **с тена печей осыпается оребрение, попадая в продукт** |  | 10.5d | 2026-05-27 09:00 A | 2026-06-10 13:00 A |  | 100% |  |  |  |  | 11h | 11h |
| 315 | 1.150.1 | осмотр тенов печей линия 1 и линия 2 на предмет отслоения оребрения. Очистка / замена |  | 3h | 2026-05-27 09:00 A | 2026-05-27 12:00 A |  | 100% |  |  | start no earlier than 2026-05-27 09:00 | Некрасов А | 3h | 3h |
| 316 | 1.150.2 | замена неисправных тенов линия 2, по диагностике Некрасова 27.05 (токи) 2 линия |  | 4h | 2026-06-02 09:00 A | 2026-06-02 13:00 A |  | 100% |  |  | start no earlier than 2026-06-02 09:00 | Некрасов А | 4h | 4h |
| 317 | 1.150.3 | замена прогнувшихся тен |  | 4h | 2026-06-10 09:00 A | 2026-06-10 13:00 A |  | 100% |  |  | start no earlier than 2026-06-10 09:00 | Некрасов А | 4h | 4h |
| 318 | 1.151 | перенести частотный привод ШУ печи 1л для доступа обслуживания |  | 2h | 2026-06-02 09:00 A | 2026-06-02 11:00 A |  | 100% |  |  | start no earlier than 2026-06-02 09:00 | Дедов В | 2h | 2h |
| 319 | 1.152 | нет фазы линия 2 печь оперативно |  | 1h | 2026-05-26 09:00 A | 2026-05-26 10:00 A |  | 100% |  |  | start no earlier than 2026-05-26 09:00 | Тимофеев В; Бундин В | 2h | 2h |
| 320 | 1.153 | замена твердотельное реле фаза В 2шт (найти пробитый) |  | 30min | 2026-05-27 09:00 A | 2026-05-27 09:30 A |  | 100% |  |  | start no earlier than 2026-05-27 09:00 | Бундин В | 0.5h | 0.5h |
| 321 | 1.154 | выравнивание потенциалов ШУ тв реле печей 1 и 2 |  | 1h | 2026-05-27 09:00 A | 2026-05-27 10:00 A |  | 100% |  |  | start no earlier than 2026-05-27 09:00 | Бундин В | 1h | 1h |
| 322 | 1.155 | **заменить фитинги с гайками (они на складе) на жирах 1 + 2 линия** |  | 28d | 2026-05-27 09:00 A | 2026-07-04 11:00 A |  | 100% |  |  |  |  | 6.08h | 6.08h |
| 323 | 1.155.1 | доставка шланг 8х12мм. Контроль |  | 5min | 2026-05-27 09:00 A | 2026-05-27 09:05 A |  | 100% |  |  | start no earlier than 2026-05-27 09:00 | Шуранов Ю | 0.08h | 0.08h |
| 324 | 1.155.2 | замена 2 линия |  | 2h | 2026-05-27 09:00 A | 2026-05-27 11:00 A |  | 100% |  |  | start no earlier than 2026-05-27 09:00 | Тимофеев В | 2h | 2h |
| 325 | 1.155.3 | замена 1 линия |  | 2h | 2026-06-15 09:00 A | 2026-06-15 11:00 A |  | 100% |  |  | start no earlier than 2026-06-15 09:00 | Тимофеев В | 2h | 2h |
| 326 | 1.155.4 | проверить где не поставлены фитинги с гайками- поменять | manual | 2h | 2026-07-04 09:00 A | 2026-07-04 11:00 A |  | 100% |  |  | start no earlier than 2026-07-04 09:00 | Тимофеев В | 2h | 2h |
| 327 | 1.156 | подключить Sаvema на теко 0,4 через ИБП (ибп на складе) |  | 1h | 2026-05-26 09:00 A | 2026-05-26 10:00 A |  | 100% |  |  | start no earlier than 2026-05-26 09:00 | Дедов В | 1h | 1h |
| 328 | 1.157 | найти и закрутить мотор-редукторы на транспортерах и отписаться на каких были не прикручены и не законтрогаек. |  | 1h | 2026-05-25 09:00 A | 2026-05-25 10:00 A |  | 100% |  |  | start no earlier than 2026-05-25 09:00 | Макаревич А | 1h | 1h |
| 329 | 1.158 | транспортер с жиров на виброохладитель- поменять кнопку стоп 2 линия | manual | 1h | 2026-05-27 09:00 A | 2026-05-27 10:00 A |  | 100% |  |  | start no earlier than 2026-05-27 09:00 | Дедов В | 1h | 1h |
| 330 | 1.159 | демонтировать на накопительном столе квадропака силиконовую резинку по диаметру | manual | 1h | 2026-05-24 09:00 A | 2026-05-24 10:00 A |  | 100% |  |  | start no earlier than 2026-05-24 09:00 | Макаревич А | 1h | 1h |

| ID | WBS | Task | Type | Duration | Start | Finish | Predecessors | Complete | Remaining | Total slack | Constraint | Resources | Work | Actual work |
| --- | --- | --- | --- | --- | --- | --- | --- | --- | --- | --- | --- | --- | --- | --- |
| 331 | 1.160 | **установка фосунок - подача жира 1 линия** |  | 22.12d? | 2026-06-05 09:00 A | 2026-07-07 10:00 |  | 17% | 18.44d? | 177.47d |  |  | 4h | 2h |
| 332 | 1.160.1 | сборка кронштейн для фильтров + счетчик/ покраска |  | 1h | 2026-06-05 09:00 A | 2026-06-05 10:00 A |  | 100% |  |  | start no earlier than 2026-06-05 09:00 | Тимофеев В | 1h | 1h |
| 333 | 1.160.2 | установка |  | 1d? | 2026-07-06 09:00 | 2026-07-06 18:00 |  |  |  | 177.59d | start no earlier than 2026-07-06 09:00 |  |  |  |
| 334 | 1.160.3 | монтаж в линию |  | 2h | 2026-07-06 09:00 | 2026-07-06 11:00 |  |  |  | 178.34d | start no earlier than 2026-07-06 09:00 | Тимофеев В | 2h |  |
| 335 | 1.160.4 | монтаж розетка для блок питания 5в для регистратора |  | 1h | 2026-07-07 09:00 A | 2026-07-07 10:00 A |  | 100% |  |  | start no earlier than 2026-07-07 09:00 | Тимофеев В | 1h | 1h |
| 336 | 1.161 | **конв №2 линия 2 нижний вал нет защиты подшипников (был фетр)** |  | 9.16d | 2026-08-19 09:00 A | 2026-09-01 10:15 A |  | 100% |  |  |  |  | 5.25h | 5.25h |
| 337 | 1.161.1 | разборка, ревизия, подбор / чертеж уплотнеия |  | 2h | 2026-08-26 09:00 A | 2026-08-26 11:00 A |  | 100% |  |  | start no earlier than 2026-08-26 09:00 | Тимофеев В | 2h | 2h |
| 338 | 1.161.2 | заявка уплотнение |  | 1h | 2026-08-19 09:00 A | 2026-08-19 10:00 A |  | 100% |  |  | start no earlier than 2026-08-19 09:00 | Шуранов Ю | 1h | 1h |
| 339 | 1.161.3 | контроль поставки |  | 15min | 2026-09-01 10:00 A | 2026-09-01 10:15 A | 338FS+10d | 100% |  |  | start no earlier than 2026-08-12 09:00 | Шуранов Ю | 0.25h | 0.25h |
| 340 | 1.161.4 | монтаж уплотнения |  | 2h | 2026-08-31 09:00 A | 2026-08-31 11:00 A | 339FS+1d | 100% |  |  | start no earlier than 2026-08-12 09:00 | Тимофеев В | 2h | 2h |
| 341 | 1.162 | вентилятор на охладителе верхний краний слишком большой - переделать крепление |  | 1h | 2026-08-26 09:00 A | 2026-08-26 10:00 A |  | 100% |  |  | start no earlier than 2026-08-26 09:00 | Тимофеев В | 1h | 1h |
| 342 | 1.163 | устанить утечку на мойке зона экструдера |  | 1h | 2023-03-10 09:00 A | 2023-03-10 10:00 A |  | 100% |  |  |  | Бобренок В | 1h | 1h |
| 343 | 1.164 | выдать шестигранные болты и шайбы на ножевой узел экструдерщикам (штук 20) |  | 1h | 2026-05-21 09:00 A | 2026-05-21 10:00 A |  | 100% |  |  | start no earlier than 2026-05-21 08:00 | Бундин В | 1h | 1h |
| 344 | 1.165 | приварить болты к заслонке подачи гранулы на квадропаке (остановить, с мастером согласовать) |  | 1h | 2026-05-26 09:00 A | 2026-05-26 10:00 A |  | 100% |  |  | start no earlier than 2026-05-26 09:00 | Бобренок В | 1h | 1h |
| 345 | 1.166 | увеличить диаметр отверстия, чтобы горловина подачи сух. Гидрализата проходила (жиротопка) |  | 1h | 2026-05-20 09:00 A | 2026-05-20 10:00 A |  | 100% |  |  | start no earlier than 2026-05-20 09:00 | Некрасов А | 1h | 1h |
| 346 | 1.167 | посмотреть приточку, выпадает часто в аварию по насосу |  | 2h | 2026-05-18 08:00 A | 2026-05-18 11:00 A |  | 100% |  |  | start no earlier than 2026-05-18 08:00 | Дедов В | 2h | 2h |
| 347 | 1.168 | замена светильника в зоне завоза навесок (работа на высоте) |  | 2h | 2026-05-15 09:00 A | 2026-05-15 11:00 A |  | 100% |  |  | start no earlier than 2026-05-15 09:00 | Некрасов А; Труфанов А | 4h | 4h |
| 348 | 1.169 | закрепить встиряхиватель полного пакета №1 квадропак |  | 1h | 2026-05-14 08:00 A | 2026-05-14 10:00 A |  | 100% |  |  | start no earlier than 2026-05-14 08:00 | Бобренок В | 1h | 1h |
| 349 | 1.170 | замена лампа светильник гардероб М = на короткий. |  | 1h | 2026-05-13 09:00 A | 2026-05-13 10:00 A |  | 100% |  |  | start no earlier than 2026-05-13 09:00 | Бундин В | 1h | 1h |
| 350 | 1.171 | устранить потерю мощности печи в 2х фазах |  | 2h | 2026-05-12 08:00 A | 2026-05-12 11:00 A |  | 100% |  |  | start no earlier than 2026-05-12 08:00 | Тимофеев В; Бобренок В | 4h | 4h |
| 351 | 1.172 | квадропак изготовить и заменить текстолит на термоноже |  | 2h | 2026-05-12 09:00 A | 2026-05-12 11:00 A |  | 100% |  |  | start no earlier than 2026-05-12 08:00 | Некрасов А | 2h | 2h |
| 352 | 1.173 | **бак стабилизации воды-утечка** |  | 0.25d | 2026-05-22 09:00 A | 2026-05-22 11:00 A |  | 100% |  |  |  | Тимофеев В | 4h | 4h |
| 353 | 1.173.1 | монтаж подачи воды 2 линия в прекондиционер |  | 2h | 2026-05-22 09:00 A | 2026-05-22 11:00 A |  | 100% |  |  | start no earlier than 2026-05-22 09:00 | Тимофеев В | 2h | 2h |
| 354 | 1.174 | **парогенератор 1ц ремонт по гарантии** |  | 30d? | 2026-04-27 09:00 A | 2026-06-05 18:00 A |  | 100% |  |  |  |  | 11.33h | 11.33h |
| 355 | 1.174.1 | отправить ПГ на ремонт орг курьера |  | 10min | 2026-04-27 09:00 A | 2026-04-27 09:10 A |  | 100% |  |  | start no earlier than 2026-04-27 08:00 | Шуранов Ю | 0.17h | 0.17h |
| 356 | 1.174.2 | контроль ремонт |  | 10min | 2026-05-04 09:10 A | 2026-05-04 09:20 A | 355FS+5d | 100% |  |  | start no earlier than 2026-04-27 08:00 | Шуранов Ю | 0.17h | 0.17h |
| 357 | 1.174.3 | нужно посмотреть парогенератор там релюха не щелкает- может разберешься, он находиться на складе у Веры |  | 2h | 2026-05-11 09:00 A | 2026-05-11 11:00 A |  | 100% |  |  | start no earlier than 2026-05-11 09:00 | Дедов В | 2h | 2h |
| 358 | 1.174.4 | орг ремонт по гарантии |  | 1h | 2026-05-13 09:00 A | 2026-05-13 10:00 A |  | 100% |  |  | start no earlier than 2026-05-13 09:00 | Шуранов Ю | 1h | 1h |
| 359 | 1.174.5 | контроль возврата |  | 1d? | 2026-06-05 09:00 A | 2026-06-05 18:00 A |  | 100% |  |  | start no earlier than 2026-06-05 09:00 | Шуранов Ю | 8h | 8h |
| 360 | 1.175 | проверить мотор-редуктор на накопительном столе фасовка и | manual | 4h | 2026-05-11 09:00 A | 2026-05-11 13:00 A |  | 100% |  |  | start no earlier than 2026-05-11 09:00 | Бундин В | 4h | 4h |
| 361 | 1.176 | прикрутить ножку на 2 столе (ножка у Луговских в кабинете) |  | 1h | 2026-05-12 09:00 A | 2026-05-12 10:00 A |  | 100% |  |  | start no earlier than 2026-05-12 08:00 | Бундин В | 1h | 1h |

| ID | WBS | Task | Duration | Start | Finish | Predecessors | Complete | Constraint | Resources | Work | Actual work |
| --- | --- | --- | --- | --- | --- | --- | --- | --- | --- | --- | --- |
| 362 | 1.177 | **отодвинуть миксер подачи сухого гидрализата, чтобы сыпал не на ребра барабана, а на обод выхода** | 0.38d | 2026-05-08 08:00 A | 2026-05-08 12:00 A |  | 100% |  |  | 3h | 3h |
| 363 | 1.177.1 | перекрутить платформу миксера подачи сухого гидрализата снизу, чтобы дуло не задевало барабан | 3h | 2026-05-08 08:00 A | 2026-05-08 12:00 A |  | 100% | start no earlier than 2026-05-08 08:00 | Макаревич А | 3h | 3h |
| 364 | 1.178 | монтаж светильник в районе ВРУ сверху (зона экструдера) | 2h | 2026-05-16 09:00 A | 2026-05-18 11:00 A |  | 100% | start no earlier than 2026-05-16 09:00 | Макаревич А | 2h | 2h |
| 365 | 1.179 | закрепить трубу п/п на фасовке в углу, где стеллаж на клипсы к стене | 1h | 2026-05-07 08:00 A | 2026-05-07 10:00 A |  | 100% | start no earlier than 2026-05-07 08:00 | Бобренок В | 1h | 1h |
| 366 | 1.180 | прикрутить пускатели запуска вытяжки перед лестницей на 2 этаж зона экструдера и розетки | 2h | 2026-05-06 08:00 A | 2026-05-06 11:00 A |  | 100% | start no earlier than 2026-05-06 08:00 | Бобренок В | 2h | 2h |
| 367 | 1.181 | нет напряжения в розетке для инсектицидного светильника, корридор где вывозят готовую продукцию | 1h | 2026-05-07 09:00 A | 2026-05-07 10:00 A |  | 100% | start no earlier than 2026-05-07 09:00 | Бобренок В | 1h | 1h |
| 368 | 1.182 | подключить через счетчик подачу жира | 2h | 2026-05-05 08:00 A | 2026-05-05 11:00 A |  | 100% | start no earlier than 2026-05-05 08:00 | Тимофеев В | 2h | 2h |
| 369 | 1.183 | **повесить на места светильники инсектицидные (замена ламп)** | 0.38d | 2026-05-05 09:00 A | 2026-05-05 12:00 A |  | 100% |  |  | 3h | 3h |
| 370 | 1.183.1 | заменить инсектицидные лампы в светильниках (количество, которое поменял -записать) | 3h | 2026-05-05 09:00 A | 2026-05-05 12:00 A |  | 100% | start no earlier than 2026-05-05 08:00 | Бундин В | 3h | 3h |
| 371 | 1.184 | на жиротопке установить газ лифты (они на складе) | 1h | 2026-05-05 08:00 A | 2026-05-05 10:00 A |  | 100% | start no earlier than 2026-05-05 08:00 | Бобренок В | 1h | 1h |
| 372 | 1.185 | **дверь вход в столовую вкрыть заглушки и установить личинку с ключами (взять на складе)** | 14.12d | 2026-05-13 09:00 A | 2026-06-02 10:00 A |  | 100% |  |  | 42.5h | 42.5h |
| 373 | 1.185.1 | заказать ручку / ответ | 30min | 2026-05-13 09:00 A | 2026-05-13 09:30 A |  | 100% | start no earlier than 2026-05-13 09:00 | Шуранов Ю | 0.5h | 0.5h |
| 374 | 1.185.2 | конроль | 5d | 2026-05-18 09:00 A | 2026-05-22 18:00 A | 373 | 100% | start no earlier than 2026-05-18 09:00 | Карабанов | 40h | 40h |
| 375 | 1.185.3 | замена | 1h | 2026-05-30 09:00 A | 2026-06-01 10:00 A | 374 | 100% | start no earlier than 2026-05-30 09:00 | Тимофеев В | 1h | 1h |
| 376 | 1.185.4 | перевернуть замок ручкой вверх, личика переворачивается в любую сторону | 1h | 2026-06-02 09:00 A | 2026-06-02 10:00 A |  | 100% | start no earlier than 2026-06-02 09:00 | Макаревич А | 1h | 1h |
| 377 | 1.186 | поставить шпонки на питатель в слесарке | 1h | 2026-05-04 09:00 A | 2026-05-04 10:00 A |  | 100% | start no earlier than 2026-05-04 08:00 | Тимофеев В | 1h | 1h |
| 378 | 1.187 | установить транспортер на 1 линии | 1h | 2026-05-04 08:00 A | 2026-05-04 10:00 A |  | 100% | start no earlier than 2026-05-04 08:00 | Дедов В | 1h | 1h |
| 379 | 1.188 | собрать транспортер ковшевой (валы приехали, фетр на складе) | 4h | 2026-04-30 08:00 A | 2026-04-30 13:00 A |  | 100% | start no earlier than 2026-04-30 08:00 | Дедов В | 4h | 4h |
| 380 | 1.189 | **со старой ленты снять ковши в слесарке** | 0.5d | 2026-05-05 09:00 A | 2026-05-05 13:00 A |  | 100% |  |  | 4h | 4h |
| 381 | 1.189.1 | подготовить ленту с ковшами (150 мм между ковшами) лента на складе 5120мм в кольце и унести на желтый склад | 4h | 2026-05-05 09:00 A | 2026-05-05 13:00 A |  | 100% | start no earlier than 2026-05-05 09:00 | Бундин В | 4h | 4h |
| 382 | 1.190 | **разбираем улитки циклон и печи, замена подшипников** | 1d? | 2026-06-03 09:00 A | 2026-06-03 18:00 A |  | 100% |  | Тимофеев В; Бундин В | 16h | 16h |
| 383 | 1.190.1 | проверка подшипников на улитках печей | 1d? | 2026-06-03 09:00 A | 2026-06-03 18:00 A |  | 100% | start no earlier than 2026-06-03 09:00 |  |  |  |
| 384 | 1.191 | ТО Теко 1,5 (чистка тен, смазка штоков пневмоцилиндров, подшипников) | 3h | 2026-04-28 09:00 A | 2026-04-28 12:00 A |  | 100% | start no earlier than 2026-04-28 09:00 | Дедов В | 3h | 3h |
| 385 | 1.192 | ТО Теко 0,4 (чистка тен, смазка штоков пневмоцилиндров, подшипников) | 3h | 2026-04-28 09:00 A | 2026-04-28 12:00 A |  | 100% | start no earlier than 2026-04-28 09:00 | Дедов В | 3h | 3h |
| 386 | 1.193 | полное ТО квадропака (чистка тен, смазка штоков пневмоцилиндров, шприцевание подшипников, протяжка болтовых соединений) | 3h | 2026-04-28 09:00 A | 2026-04-28 12:00 A |  | 100% | start no earlier than 2026-04-28 09:00 | Дедов В | 3h | 3h |

| ID | WBS | Task | Type | Duration | Start | Finish | Predecessors | Complete | Total slack | Free slack | Constraint | Resources | Work | Actual work |
| --- | --- | --- | --- | --- | --- | --- | --- | --- | --- | --- | --- | --- | --- | --- |
| 387 | 1.194 | **модернизация трассы слива зона мойки экструдеров** |  | 20d? | 2026-04-27 09:00 A | 2026-05-23 10:00 A |  | 100% |  |  |  |  | 15.5h | 15.5h |
| 388 | 1.194.1 | заявка соединения и гидрозатвор |  | 15min | 2026-04-27 09:00 A | 2026-04-27 09:15 A |  | 100% |  |  | start no earlier than 2026-04-27 08:00 | Шуранов Ю | 0.25h | 0.25h |
| 389 | 1.194.2 | контроль доставки |  | 15min | 2026-05-04 09:15 A | 2026-05-04 09:30 A | 388FS+5d | 100% |  |  | start no earlier than 2026-04-27 08:00 | Шуранов Ю | 0.25h | 0.25h |
| 390 | 1.194.3 | монтаж |  | 1d? | 2026-05-06 09:30 A | 2026-05-07 09:30 A | 389FS+2d | 100% |  |  | start no earlier than 2026-04-27 08:00 | Тимофеев В | 8h | 8h |
| 391 | 1.194.4 | заявка на бурить стену / получить счет |  | 1h | 2026-04-28 09:00 A | 2026-04-28 10:00 A |  | 100% |  |  | start no earlier than 2026-04-28 09:00 | Зорькин В | 1h | 1h |
| 392 | 1.194.5 | расчет угла бурения. Замер + зхарисовать схему |  | 4h | 2026-05-13 09:00 A | 2026-05-13 13:00 A | 391 | 100% |  |  | start no earlier than 2026-05-13 09:00 | Зорькин В | 4h | 4h |
| 393 | 1.194.6 | орг работу подрядчика по бурению |  | 1h | 2026-05-20 09:00 A | 2026-05-20 10:00 A | 392 | 100% |  |  | start no earlier than 2026-05-20 09:00 | Зорькин В | 1h | 1h |
| 394 | 1.194.7 | запенить стыки в месте бурения | manual | 1h | 2026-05-23 09:00 A | 2026-05-23 10:00 A |  | 100% |  |  | start no earlier than 2026-05-23 09:00 | Бобренок В | 1h | 1h |
| 395 | 1.195 | взять на складе 2 гофросифона и заменить на мойке экструдер |  | 1h | 2026-04-24 09:00 A | 2026-04-24 10:00 A |  | 100% |  |  | start no earlier than 2026-04-24 08:00 | Бундин В | 1h | 1h |
| 396 | 1.196 | заменить монтажную коробку на 150х200мм -она у них на стяжках. Коробка новая на складе | manual | 1h | 2026-04-26 09:00 A | 2026-04-26 10:00 A |  | 100% |  |  | start no earlier than 2026-04-26 09:00 | Бобренок В | 1h | 1h |
| 397 | 1.197 | под мойкой в зоне экструдера на слив 3 греющего кабеля, нужно разобраться |  | 1h | 2026-04-24 09:00 A | 2026-04-24 10:00 A |  | 100% |  |  | start no earlier than 2026-04-24 08:00 | Шуранов Ю | 1h | 1h |
| 398 | 1.198 | жиротопка течет сальник, проверить и устранить течи везде. Чистка фильтров. |  | 2h | 2026-04-28 09:00 A | 2026-04-28 11:00 A |  | 100% |  |  | start no earlier than 2026-04-28 09:00 | Тимофеев В | 2h | 2h |
| 399 | 1.199 | ТО печи линия 1 ( вскрыть, ревизия- замена перемычек и т.д.) |  | 4h | 2026-04-23 09:00 A | 2026-04-23 13:00 A |  | 100% |  |  | start no earlier than 2026-04-23 08:00 | Бундин В | 4h | 4h |
| 400 | 1.200 | протянуть кабель UTP от столя Луговских до шкафа серверного (расскажу как протянуть по звонку) |  | 4h | 2026-04-23 09:00 A | 2026-04-23 13:00 A |  | 100% |  |  | start no earlier than 2026-04-23 08:00 | Бундин В | 4h | 4h |
| 401 | 1.201 | **подключить приточку как было** |  | 0.25d | 2026-04-29 09:00 A | 2026-04-29 11:00 A |  | 100% |  |  |  | Дедов В | 4h | 4h |
| 402 | 1.201.1 | подключить сервопривод на шибер и подключить |  | 2h | 2026-04-29 09:00 A | 2026-04-29 11:00 A |  | 100% |  |  | start no earlier than 2026-04-29 09:00 | Дедов В | 2h | 2h |
| 403 | 1.202 | **замена ленты на транспортере тип 2 2 линия (дособрать)** |  | 1.5d | 2026-04-24 09:00 A | 2026-04-27 13:00 A |  | 100% |  |  |  |  | 6h | 6h |
| 404 | 1.202.1 | со снятой ленты транспортера тип 2 снять все ковши (готовим для замены на 1 линии) |  | 2h | 2026-04-24 09:00 A | 2026-04-24 11:00 A |  | 100% |  |  | start no earlier than 2026-04-24 09:00 | Бундин В | 2h | 2h |
| 405 | 1.202.2 | установка ковшей со старой ленты на новую со склада 400х 5120мм |  | 4h | 2026-04-25 09:00 A | 2026-04-27 13:00 A |  | 100% |  |  | start no earlier than 2026-04-25 09:00 | Макаревич А | 4h | 4h |
| 406 | 1.203 | **система угольной фильтрации вытяжных газов с печей и пневотранспорта** |  | 0.25d | 2026-04-21 09:00 A | 2026-04-21 11:00 A |  | 100% |  |  |  |  | 3h | 3h |
| 407 | 1.203.1 | подготовить пластины 200*200 5мм для анкерения колон к полу ф12 6шт |  | 2h | 2026-04-21 09:00 A | 2026-04-21 11:00 A |  | 100% |  |  | start no earlier than 2026-04-21 09:00 | Бундин В | 2h | 2h |
| 408 | 1.203.2 | подготовить пластины 100*100 5мм для анкерения колон к стене 8шт |  | 1h | 2026-04-21 09:00 A | 2026-04-21 10:00 A |  | 100% |  |  | start no earlier than 2026-04-21 09:00 | Бундин В | 1h | 1h |
| 409 | 1.204 | проверка фильтров воды с редуктором в прекондиционер на ТО |  | 1h | 2026-04-22 09:00 A | 2026-04-22 10:00 A |  | 100% |  |  | start no earlier than 2026-04-22 09:00 | Бундин В | 1h | 1h |
| 410 | 1.205 | **заменить фильтры на жиротопка** |  | 10.28d | 2026-09-14 09:00 | 2026-09-28 11:15 |  |  | 117.31d |  |  |  | 2.25h |  |
| 411 | 1.205.1 | выяснить тип фильтров, заказ катриджи |  | 1h | 2026-09-14 09:00 | 2026-09-14 10:00 |  |  | 117.31d | 0d | start no earlier than 2026-09-14 09:00 | Зорькин В | 1h |  |
| 412 | 1.205.2 | контроль |  | 15min | 2026-09-28 10:00 | 2026-09-28 10:15 | 411FS+10d |  | 117.31d | 0d | start no earlier than 2026-04-22 09:00 | Зорькин В | 0.25h |  |
| 413 | 1.205.3 | замена |  | 1h | 2026-09-28 10:15 | 2026-09-28 11:15 | 412 |  | 117.31d |  | start no earlier than 2026-07-23 09:00 | Бобренок В | 1h |  |
| 414 | 1.206 | проверить напряжение в розетке конатушка вывоза готовой продукции |  | 1h | 2026-04-19 09:00 A | 2026-04-20 10:00 A |  | 100% |  |  | start no earlier than 2026-04-19 09:00 | Дедов В | 1h | 1h |

| ID | WBS | Task | Duration | Start | Finish | Predecessors | Complete | Remaining | Total slack | Free slack | Constraint | Resources | Work | Actual work |
| --- | --- | --- | --- | --- | --- | --- | --- | --- | --- | --- | --- | --- | --- | --- |
| 415 | 1.207 | **обслуживание инсекьюеров, утлизация отработанных ламп** | 105.25d | 2026-04-21 08:00 A | 2026-09-14 11:00 |  | 98% | 2.35d | 127.34d |  |  |  | 89.5h | 87.5h |
| 416 | 1.207.1 | Составить список ламп по цехам и передать Зорькину | 2h | 2026-04-21 08:00 A | 2026-04-21 11:00 A |  | 100% |  |  |  | start no earlier than 2026-04-21 08:00 | Тимофеев В | 2h | 2h |
| 417 | 1.207.2 | Заказать новые лампы | 30min | 2026-04-21 10:00 A | 2026-04-21 10:30 A | 416 | 100% |  |  |  | start no earlier than 2026-04-21 08:00 | Зорькин В | 0.5h | 0.5h |
| 418 | 1.207.3 | доставка | 10d | 2026-04-21 10:30 A | 2026-05-05 10:30 A | 417 | 100% |  |  |  | start no earlier than 2026-04-21 08:00 | Карабанов | 80h | 80h |
| 419 | 1.207.4 | снять все светильники мухоловки, извлечь лампы, уложить аккуратно в коробку (оставить в слесарке отработанные) светильники снятые передать мастеру смены для мытья | 2h | 2026-05-05 10:30 A | 2026-05-05 12:30 A | 418 | 100% |  |  |  | start no earlier than 2026-05-01 09:00 | Бобренок В | 2h | 2h |
| 420 | 1.207.5 | после чистки установить лампы в светильники, тусклые замнеить | 2h | 2026-05-12 09:00 A | 2026-05-12 11:00 A | 419 | 100% |  |  |  | start no earlier than 2026-05-12 09:00 | Бундин В | 2h | 2h |
| 421 | 1.207.6 | сообщить кол-во замененных ламп нач цехов | 1h | 2026-05-12 11:00 A | 2026-05-12 12:00 A | 420 | 100% |  |  |  | start no earlier than 2026-05-01 09:00 | Шуранов Ю | 1h | 1h |
| 422 | 1.207.7 | запрос договор на утилизацию ламп | 1h | 2026-09-14 09:00 | 2026-09-14 10:00 |  |  |  | 127.34d | 0d | start no earlier than 2026-09-14 09:00 | Домоводов К | 1h |  |
| 423 | 1.207.8 | подготовить лампы к утилизации | 1h | 2026-09-14 10:00 | 2026-09-14 11:00 | 421, 422 |  |  | 127.34d |  | start no earlier than 2026-05-27 09:00 | Труфанов А | 1h |  |
| 424 | 1.208 | **на 1 линии подготовить из оргстекла обратные крышки транспортера тип 2 (ковшевой), согласовать остановка с мастером и установить** | 0.12d | 2026-04-24 09:00 A | 2026-04-24 10:00 A |  | 100% |  |  |  |  | Бобренок В | 2h | 2h |
| 425 | 1.208.1 | перекрутить оргстекло (операторы подскажут в чем проблема) | 1h | 2026-04-24 09:00 A | 2026-04-24 10:00 A |  | 100% |  |  |  | start no earlier than 2026-04-24 09:00 | Бобренок В | 1h | 1h |
| 426 | 1.209 | проверить гидроаккумуляторы парогенераторов 1 и 2 линия и 100литровый в комнате стабилизации воды, если нужно качаем 2 очка. | 2h | 2026-04-19 09:00 A | 2026-04-20 11:00 A |  | 100% |  |  |  | start no earlier than 2026-04-19 09:00 | Макаревич А | 2h | 2h |
| 427 | 1.210 | проверка фильтров на редукторы экструдеров | 1h | 2026-04-24 09:00 A | 2026-04-24 10:00 A |  | 100% |  |  |  | start no earlier than 2026-04-24 09:00 | Тимофеев В | 1h | 1h |
| 428 | 1.211 | проверка токов, всех перемычек, шприцевание всех подшипников печи №2 | 3h | 2026-04-23 09:00 A | 2026-04-23 12:00 A |  | 100% |  |  |  | start no earlier than 2026-04-24 09:00 | Бобренок В | 3h | 3h |
| 429 | 1.212 | на питателе заменить втулки линия 1 и 2 | 2h | 2026-04-15 08:00 A | 2026-04-15 11:00 A |  | 100% |  |  |  | start no earlier than 2026-04-15 08:00 | Бобренок В | 2h | 2h |
| 430 | 1.213 | проверить радиатор приточки (протечки, есть ли подача горячей воды), если нет - выключить приточку, чтобы не разморозить! | 1h | 2026-04-14 09:00 A | 2026-04-14 10:00 A |  | 100% |  |  |  | start no earlier than 2026-04-14 08:00 | Труфанов А | 1h | 1h |
| 431 | 1.214 | приварить левую ногу мезонина на фасовке (штабелером сместили) | 1h | 2026-04-15 09:00 A | 2026-04-15 10:00 A |  | 100% |  |  |  | start no earlier than 2026-04-15 09:00 | Бобренок В | 1h | 1h |
| 432 | 1.215 | на печи №1 прошприцевать подшипники, проверить токи, если нужно вскрываем на ревизию перемычек | 3h | 2026-04-14 09:00 A | 2026-04-14 12:00 A |  | 100% |  |  |  | start no earlier than 2026-04-14 08:00 | Труфанов А | 3h | 3h |
| 433 | 1.216 | замена электродной группы на парогенераторе линия №1 (электроды подготовили в слесарке) | 4h | 2026-04-14 09:00 A | 2026-04-14 13:00 A |  | 100% |  |  |  | start no earlier than 2026-04-14 08:00 | Труфанов А | 4h | 4h |
| 434 | 1.217 | на квадропаке тена выставить в параллель | 1h | 2026-04-13 09:00 A | 2026-04-13 10:00 A |  | 100% |  |  |  | start no earlier than 2026-04-13 08:00 | Труфанов А | 1h | 1h |
| 435 | 1.218 | покрасить подиум под циклонами линия 1 и 2 | 2h | 2026-04-22 09:00 A | 2026-04-22 11:00 A |  | 100% |  |  |  | start no earlier than 2026-04-22 09:00 | Бундин В | 2h | 2h |
| 436 | 1.219 | подготовить лекало на приемный лоток транспортера тип 2 (у них в работе картонка, можно по ней и сделать), если будет остановка приварить | 1h | 2026-04-27 09:00 A | 2026-04-27 10:00 A |  | 100% |  |  |  | start no earlier than 2026-04-27 09:00 | Тимофеев В | 1h | 1h |
| 437 | 1.220 | на пнемоулитку поставить пистолет (зона экструдера) | 1h | 2026-04-11 09:00 A | 2026-04-13 10:00 A |  | 100% |  |  |  | start no earlier than 2026-04-11 09:00 | Макаревич А | 1h | 1h |
| 438 | 1.221 | установить фильтр на кондиционер между печками (фильтр у Луговских) | 1h | 2026-04-22 09:00 A | 2026-04-22 10:00 A |  | 100% |  |  |  | start no earlier than 2026-04-22 09:00 | Труфанов А | 1h | 1h |

| ID | WBS | Task | Type | Duration | Start | Finish | Predecessors | Complete | Actual start | Actual finish | Total slack | Constraint | Resources | Work | Actual work |
| --- | --- | --- | --- | --- | --- | --- | --- | --- | --- | --- | --- | --- | --- | --- | --- |
| 439 | 1.222 | **зафиксировать ручку в туалет (закрутить)** |  | 856.12d | 2023-03-22 09:00 A | 2026-04-22 10:00 |  | 100% |  | 2026-05-05 10:00 |  |  |  | 2h | 2h |
| 440 | 1.222.1 | заказать ручки |  | 1h | 2023-03-22 09:00 A | 2023-03-22 10:00 A |  | 100% |  |  |  |  | Шуранов Ю | 1h | 1h |
| 441 | 1.222.2 | установка (заменить ручку, взять на складе) |  | 1h | 2026-05-05 09:00 A | 2026-05-05 10:00 A |  | 100% |  |  |  | start no earlier than 2026-05-05 09:00 | Бобренок В | 1h | 1h |
| 442 | 1.223 | ТО теко 1,5 (чистка тен, смазка штоков пневмоцилиндров, подшипников) | manual | 3h | 2026-04-25 09:00 A | 2026-04-25 12:00 A |  | 100% |  |  |  | start no earlier than 2026-04-25 09:00 | Труфанов А | 3h | 3h |
| 443 | 1.224 | слить конденсат с компрессора, чистка фильтров и радиаторов | manual | 2h | 2026-04-12 09:00 A | 2026-04-12 11:00 A |  | 100% |  |  |  | start no earlier than 2026-04-12 09:00 | Макаревич А | 2h | 2h |
| 444 | 1.225 | **заказать газлифт жиротопка** |  | 11.12d? | 2026-04-22 09:00 A | 2026-05-06 10:00 |  | 100% |  | 2026-08-18 09:20 |  |  |  | 84.08h | 84.08h |
| 445 | 1.225.1 | доставка |  | 10d | 2026-04-22 09:00 A | 2026-05-05 18:00 A |  | 100% |  |  |  | start no earlier than 2026-04-22 09:00 | Карабанов | 80h | 80h |
| 446 | 1.225.2 | **установка газ лифт** |  | 69.04d | 2026-05-13 09:00 A | 2026-08-18 09:20 A |  | 100% |  |  |  |  |  | 4.08h | 4.08h |
| 447 | 1.225.2.1 | контроль поставки / размер |  | 20min | 2026-08-18 09:00 A | 2026-08-18 09:20 A |  | 100% |  |  |  | start no earlier than 2026-08-18 09:00 | Шуранов Ю | 0.33h | 0.33h |
| 448 | 1.225.2.2 | наварить уголок для площадки упора газлифта |  | 1h | 2026-05-13 09:00 A | 2026-05-13 10:00 A |  | 100% |  |  |  | start no earlier than 2026-05-13 09:00 | Труфанов А; Некрасов А | 2h | 2h |
| 449 | 1.225.2.3 | заявка газлифт с меньшей усилием/ выяснить координата |  | 30min | 2026-05-27 09:00 A | 2026-05-27 09:30 A |  | 100% |  |  |  | start no earlier than 2026-05-27 09:00 | Зорькин В | 0.5h | 0.5h |
| 450 | 1.225.2.4 | доставка контроль |  | 15min | 2026-08-12 09:00 A | 2026-08-12 09:15 A | 449FS+10d | 100% |  |  |  | start no earlier than 2026-05-13 09:00 | Зорькин В | 0.25h | 0.25h |
| 451 | 1.225.2.5 | замена |  | 1h | 2026-08-12 09:00 A | 2026-08-12 10:00 A |  | 100% |  |  |  | start no earlier than 2026-08-12 09:00 | Бобренок В | 1h | 1h |
| 452 | 1.226 | убрать диммер за еврокубом, где завозят навески (провода заизолировать и спрятать в кабель-канал) |  | 1h | 2026-04-10 08:00 A | 2026-04-10 10:00 A |  | 100% |  |  |  | start no earlier than 2026-04-10 08:00 | Бобренок В | 1h | 1h |
| 453 | 1.227 | закрыть монтажную коробку над дверью зона жиров выход |  | 1h | 2026-04-09 08:00 A | 2026-04-09 10:00 A |  | 100% |  |  |  | start no earlier than 2026-04-09 08:00 | Бобренок В | 1h | 1h |
| 454 | 1.228 | **на аппликаторе установить принтер (взять на складе)** |  | 3h? | 2026-04-10 09:00 | 2026-04-10 12:00 |  | 100% | 2026-04-09 08:00 | 2026-05-14 10:00 |  |  |  | 5h | 5h |
| 455 | 1.228.1 | монтаж витой пары от аппликатора до шкафа где вывозят ГП справа |  | 4h | 2026-04-09 08:00 A | 2026-04-09 13:00 A |  | 100% |  |  |  | start no earlier than 2026-04-09 08:00 | Бобренок В | 4h | 4h |
| 456 | 1.228.2 | тест принтера |  | 1h | 2026-05-14 09:00 A | 2026-05-14 10:00 A |  | 100% |  |  |  | start no earlier than 2026-05-14 09:00 | Зорькин В | 1h | 1h |
| 457 | 1.229 | замена шнек+гильзы (б/у) на 2 линии |  | 4h | 2026-04-09 08:00 A | 2026-04-09 13:00 A |  | 100% |  |  |  | start no earlier than 2026-04-09 08:00 | Тимофеев В | 4h | 4h |
| 458 | 1.230 | закрепить светильник в комнатке перед выходом, где вывозят готовую продукцию справа, оторвался | manual | 1h | 2026-04-08 09:00 A | 2026-04-08 10:00 A |  | 100% |  |  |  | start no earlier than 2026-04-08 08:00 | Бундин В | 1h | 1h |
| 459 | 1.231 | **замена лент на аппликаторе, подумать какой сделать отражатель для фотометки, чтобы не цепляло пакеты в работе** |  | 0.5d | 2026-05-27 09:00 | 2026-05-27 13:00 |  |  |  |  |  |  |  | 4h |  |
| 460 | 1.231.1 | замена ленеты |  | 4h | 2026-10-12 09:00 | 2026-10-12 13:00 |  |  |  |  | 107.09d | start no earlier than 2026-10-12 09:00 | Тимофеев В | 4h |  |
| 461 | 1.232 | подготовить электродную группу для парогенератора (собрать) |  | 2h | 2026-04-08 09:00 A | 2026-04-08 11:00 A |  | 100% |  |  |  | start no earlier than 2026-04-08 08:00 | Бундин В | 2h | 2h |
| 462 | 1.233 | **просыпается гранула на пересыпке с барабана в конвейер** |  | 0.5d | 2026-04-08 09:00 A | 2026-04-08 13:00 A |  | 100% |  |  |  |  |  | 6h | 6h |
| 463 | 1.233.1 | пододвинуть ближе к барабану конвейер + охладитель + вентилятор |  | 2h | 2026-04-08 09:00 A | 2026-04-08 11:00 A |  | 100% |  |  |  | start no earlier than 2026-04-08 09:00 | Бобренок В | 2h | 2h |
| 464 | 1.233.2 | доработка приемного лотка конвейера |  | 4h | 2026-04-08 09:00 A | 2026-04-08 13:00 A |  | 100% |  |  |  | start no earlier than 2026-04-08 09:00 | Некрасов А | 4h | 4h |
| 465 | 1.234 | забрать 2 рохли с пандуса, снять колеса в зип (зад- перед), а сами рохли в контейнер |  | 3h | 2026-04-04 09:00 A | 2026-04-06 12:00 A |  | 100% |  |  |  | start no earlier than 2026-04-04 09:00 | Труфанов А | 3h | 3h |

| ID | WBS | Task | Type | Duration | Start | Finish | Predecessors | Complete | Constraint | Resources | Work | Actual work |
| --- | --- | --- | --- | --- | --- | --- | --- | --- | --- | --- | --- | --- |
| 466 | 1.235 | **квадропак модернизация регулировки пластины нажима роликов для захвата пакета** |  | 2.12d | 2026-04-15 09:00 A | 2026-04-17 10:00 A |  | 100% |  |  | 3h | 3h |
| 467 | 1.235.1 | регулировочной тягой отвезти нажимную площадку на 5мм (остановить работу на 10 минут, согласовать с мастером) |  | 1h | 2026-04-17 09:00 A | 2026-04-17 10:00 A |  | 100% | start no earlier than 2026-04-17 09:00 | Бобренок В | 1h | 1h |
| 468 | 1.235.2 | изготовление пластины на ногу по аналогии как на первой ноге |  | 1h | 2026-04-15 09:00 A | 2026-04-15 10:00 A | 467 | 100% | start no earlier than 2026-04-15 09:00 | Бобренок В | 1h | 1h |
| 469 | 1.235.3 | монтаж |  | 1h | 2026-04-15 10:00 A | 2026-04-15 11:00 A | 468 | 100% | start no earlier than 2026-04-10 09:00 | Бобренок В | 1h | 1h |
| 470 | 1.236 | изготовить крышку на приямок слива канализации под раковинами зона экструдер. Из нерж, с ручкой. |  | 4h | 2026-04-02 08:00 A | 2026-04-02 13:00 A |  | 100% | start no earlier than 2026-04-02 08:00 | Бобренок В | 4h | 4h |
| 471 | 1.237 | выпрямить погнутые роль-ворота на рампе - в сторону слесарки (нужно откутить левую направляшку и вставить воротину на место) |  | 1h | 2026-04-02 08:00 A | 2026-04-02 10:00 A |  | 100% | start no earlier than 2026-04-02 08:00 | Бобренок В | 1h | 1h |
| 472 | 1.238 | **выключатель света на входе в гидролизатную закрепить сам рычаг переключения, проскальзывает** |  | 15.12d | 2026-04-06 09:00 A | 2026-04-27 10:00 A |  | 100% |  | Макаревич А | 123h | 123h |
| 473 | 1.238.1 | заказать выключатель |  | 1h | 2026-04-06 09:00 A | 2026-04-06 10:00 A |  | 100% | start no earlier than 2026-04-06 08:00 | Шуранов Ю | 1h | 1h |
| 474 | 1.238.2 | замена выключателя (выключатель в слесарке тебе показывал) |  | 1h | 2026-04-25 09:00 A | 2026-04-27 10:00 A |  | 100% | start no earlier than 2026-04-25 09:00 | Бобренок В | 1h | 1h |
| 475 | 1.239 | на пандусе 1 цеха справа - пометить шнеки и гильзы что они рабочие и вывести в контейнер |  | 2h | 2026-04-01 08:00 A | 2026-04-01 11:00 A |  | 100% | start no earlier than 2026-04-01 08:00 | Бобренок В | 2h | 2h |
| 476 | 1.240 | взять с контейнера пысос- проверить рабочий или нет (если работает выдать в 1 цех) |  | 2h | 2026-04-01 08:00 A | 2026-04-01 11:00 A |  | 100% | start no earlier than 2026-04-01 08:00 | Бобренок В | 2h | 2h |
| 477 | 1.241 | заменить плату интерфейса RS485 |  | 1h | 2026-04-04 09:00 A | 2026-04-06 10:00 A |  | 100% | start no earlier than 2026-04-04 09:00 | Труфанов А | 1h | 1h |
| 478 | 1.242 | замена шнеки 1 линия |  | 4h | 2026-03-31 08:00 A | 2026-03-31 13:00 A |  | 100% | start no earlier than 2026-03-31 08:00 | Тимофеев В; Бобренок В | 8h | 8h |
| 479 | 1.243 | замер износ шнеков |  | 1h | 2026-03-31 08:00 A | 2026-03-31 10:00 A |  | 100% | start no earlier than 2026-03-31 08:00 | Тимофеев В; Бобренок В; Зорькин В | 3h | 3h |
| 480 | 1.244 | почистить канальные вентиляторы вытяжки в курилке |  | 2h | 2026-03-28 09:00 A | 2026-03-30 11:00 A |  | 100% | start no earlier than 2026-03-28 09:00 | Бундин В | 2h | 2h |
| 481 | 1.245 | монтаж розетки на ногу нотис справа для подключения весов |  | 2h | 2026-03-27 09:00 A | 2026-03-27 11:00 A |  | 100% | start no earlier than 2026-03-27 09:00 | Труфанов А | 2h | 2h |
| 482 | 1.246 | добавить вибрации на виброохладителе линия 2 (согласовать с мастером, если будет остановка) |  | 2h | 2026-04-30 09:00 A | 2026-04-30 11:00 A | 491 | 100% |  | Бундин В | 2h | 2h |
| 483 | 1.247 | **замена ленты конвейер 2 линия 2** |  | 12.38d | 2026-04-07 09:00 A | 2026-04-23 12:00 A |  | 100% |  |  | 15h | 15h |
| 484 | 1.247.1 | взять ленту 400мм и начать крепить ковши для транспортера тип 2 (посчитать количество на транспортере) | manual | 9h | 2026-04-07 09:00 A | 2026-04-08 10:00 A |  | 100% | start no earlier than 2026-04-07 09:00 | Тимофеев В | 9h | 9h |
| 485 | 1.247.2 | замена ленты |  | 3h | 2026-04-23 09:00 A | 2026-04-23 12:00 A |  | 100% | start no earlier than 2026-04-23 09:00 | Тимофеев В; Бундин В | 6h | 6h |
| 486 | 1.248 | заменить на штабелере второй АКБ в зоне экструдера |  | 1h | 2026-03-28 09:00 A | 2026-03-30 10:00 A |  | 100% | start no earlier than 2026-03-28 09:00 | Дедов В | 1h | 1h |
| 487 | 1.249 | на кпп №1 опустить на 10см кабель в гофре для камер видеонаблюдения | manual | 2h | 2026-03-28 09:00 A | 2026-03-28 11:00 A |  | 100% | start no earlier than 2026-03-28 09:00 | Бундин В | 2h | 2h |
| 488 | 1.250 | вход охладителя 1 линии - нужно на среднем лотке между уровнями сделать сбоков шторки (фото скину) |  | 2h | 2026-03-28 09:00 A | 2026-03-30 11:00 A |  | 100% | start no earlier than 2026-03-28 09:00 | Бундин В | 2h | 2h |
| 489 | 1.251 | на первой линии под выходом из печи прикрутить на стенку оргстекло (Слава готовил по размерам оргстекло) |  | 1h | 2026-03-28 09:00 A | 2026-03-30 10:00 A |  | 100% | start no earlier than 2026-03-28 09:00 | Труфанов А | 1h | 1h |
| 490 | 1.252 | На пробниках оторвали разъем питания, нужно припаять |  | 2h | 2026-03-27 09:00 A | 2026-03-27 11:00 A |  | 100% | start no earlier than 2026-03-27 09:00 | Дедов В | 2h | 2h |
| 491 | 1.253 | подготовить 1 ленты с ковшами для транспортера тип 2 (зип) |  | 1d? | 2026-04-29 09:00 A | 2026-04-29 18:00 A |  | 100% | start no earlier than 2026-04-29 09:00 | Шуранов Ю | 8h | 8h |
| 492 | 1.254 | замена на старые капролонновые втулки в питателе линия 1 |  | 1h | 2026-03-26 09:00 A | 2026-03-26 10:00 A |  | 100% | start no earlier than 2026-03-26 09:00 | Тимофеев В | 1h | 1h |
| 493 | 1.255 | сделать на 2 линии вставыш на ленту транспортера тип 2 и установить на транспортер |  | 4h | 2026-03-25 09:00 A | 2026-03-25 13:00 A |  | 100% | start no earlier than 2026-03-25 09:00 | Некрасов А; Бобренок В | 8h | 8h |
| 494 | 1.256 | герметизация мезонина подачи навесок по шву |  | 1h | 2026-04-15 09:00 A | 2026-04-15 10:00 A |  | 100% | start no earlier than 2026-04-15 09:00 | Бобренок В | 1h | 1h |

| ID | WBS | Task | Type | Duration | Start | Finish | Complete | Remaining | Actual start | Actual finish | Constraint | Resources | Work | Actual work |
| --- | --- | --- | --- | --- | --- | --- | --- | --- | --- | --- | --- | --- | --- | --- |
| 495 | 1.257 | **на 2 линии на хомуты закрепить горловину к бункеру подачи сухого гидрализата (все расскажу)** |  | 0.25d | 2026-04-27 09:00 A | 2026-04-27 11:00 A | 100% |  |  |  |  | Некрасов А | 4h | 4h |
| 496 | 1.257.1 | на горловине подачи сухого гидрализата приварить выход под углом 45 градусов (углы из нерж есть в 3 цехе) |  | 2h | 2026-04-27 09:00 A | 2026-04-27 11:00 A | 100% |  |  |  | start no earlier than 2026-04-27 09:00 | Макаревич А | 2h | 2h |
| 497 | 1.258 | **разобрать с двух сторон питатель 2 линия - ревизия шестеренок и втулок спереди (оставить все разобранное)** |  | 2h | 2026-03-24 09:00 | 2026-03-24 11:00 | 100% |  | 2026-03-26 09:00 | 2026-03-26 11:00 |  |  | 2h | 2h |
| 498 | 1.258.1 | собрать питатель, ревизия втулок, подшипников, шнеков, шестеренок. Подогнать капролонновые втулки |  | 2h | 2026-03-26 09:00 A | 2026-03-26 11:00 A | 100% |  |  |  | start no earlier than 2026-03-26 09:00 | Тимофеев В | 2h | 2h |
| 499 | 1.259 | пульт управления кондиционером в зоне экструдера- закрепить гофру и заизолировать разрыв гофры, закрепить к стенке |  | 1h | 2026-03-24 08:00 A | 2026-03-24 10:00 A | 100% |  |  |  | start no earlier than 2026-03-24 08:00 | Бобренок В | 1h | 1h |
| 500 | 1.260 | блок питания для весов на жирах развалился, стянуть изолентой |  | 1h | 2026-03-24 08:00 A | 2026-03-24 10:00 A | 100% |  |  |  | start no earlier than 2026-03-24 08:00 | Бобренок В | 1h | 1h |
| 501 | 1.261 | **ремонт /отключить 2 вентилятора охладитель 1 линия** |  | 801d | 2023-06-21 09:00 A | 2026-07-15 18:00 A | 100% |  |  |  |  | Тимофеев В | 12801h | 12801h |
| 502 | 1.261.1 | заказать в зип |  | 6392h | 2023-06-21 09:00 A | 2026-07-15 18:00 A | 100% |  |  |  |  | Шуранов Ю | 6392h | 6392h |
| 503 | 1.261.2 | заменить 2 вентилятора |  | 1h | 2026-04-04 09:00 A | 2026-04-06 10:00 A | 100% |  |  |  |  | Макаревич А | 1h | 1h |
| 504 | 1.262 | демонтаж крышка лотка в проеме между краем площадки вентиляции приточной и проемом ворот вход в кооридор завода навесок |  | 383520min | 2023-06-21 09:00 A | 2026-07-15 18:00 A | 100% |  |  |  |  | Труфанов А | 6392h | 6392h |
| 505 | 1.263 | стук шнек 2 линия - проверить, при необходимости разобрать |  | 3h | 2026-04-27 09:00 A | 2026-04-27 12:00 A | 100% |  |  |  | start no earlier than 2026-04-27 09:00 | Тимофеев В; Бобренок В | 6h | 6h |
| 506 | 1.264 | слить конденсат и продуть все радиаторы компрессор |  | 1h | 2026-03-21 09:00 A | 2026-03-23 10:00 A | 100% |  |  |  | start no earlier than 2026-03-21 09:00 | Дедов В | 1h | 1h |
| 507 | 1.265 | закрепить аварийную кнопку в гидролизатной (фото в чате будет) / пожарный выключатель |  | 1h | 2026-03-22 09:00 A | 2026-03-23 10:00 A | 100% |  |  |  | start no earlier than 2026-03-22 09:00 | Бобренок В | 1h | 1h |
| 508 | 1.266 | кнопки на управление ворот зона жиров поднять и закпепить выше |  | 2h | 2026-03-18 08:00 A | 2026-03-18 11:00 A | 100% |  |  |  | start no earlier than 2026-03-18 08:00 | Макаревич А | 2h | 2h |
| 509 | 1.267 | закрепить все отбойники где завозят навески экструдерщики |  | 2h | 2026-03-18 08:00 A | 2026-03-18 11:00 A | 100% |  |  |  | start no earlier than 2026-03-18 08:00 | Макаревич А | 2h | 2h |
| 510 | 1.268 | закрыить все электро шкафы |  | 30min | 2026-03-17 08:00 A | 2026-03-17 09:30 A | 100% |  |  |  | start no earlier than 2026-03-17 08:00 | Бобренок В | 0.5h | 0.5h |
| 511 | 1.269 | поломоечная машинка устранить течь |  | 1h | 2026-03-17 08:00 A | 2026-03-17 10:00 A | 100% |  |  |  | start no earlier than 2026-03-17 08:00 | Бобренок В | 1h | 1h |
| 512 | 1.270 | закрыить крышку на пробниках, задняя стенка прикрутить |  | 30min | 2026-03-17 08:00 A | 2026-03-17 09:30 A | 100% |  |  |  | start no earlier than 2026-03-17 08:00 | Бобренок В | 0.5h | 0.5h |
| 513 | 1.271 | продувка кабельного лотка |  | 2h | 2026-03-18 09:00 A | 2026-03-18 11:00 A | 100% |  |  |  | start no earlier than 2026-03-18 09:00 | Труфанов А; Некрасов А | 4h | 4h |
| 514 | 1.272 | монтаж крючков под халаты. Получить у мастера |  | 1h | 2026-03-17 08:00 A | 2026-03-17 10:00 A | 100% |  |  |  | start no earlier than 2026-03-17 08:00 | Бобренок В | 1h | 1h |
| 515 | 1.273 | **установить расходомеры пара на ПГ** |  | 0.38d | 2026-04-01 09:00 | 2026-04-01 12:00 |  | 0.38d | 2026-09-11 09:00 |  |  |  | 3h |  |
| 516 | 1.273.1 | монтаж 1 линия расходомер / кабель / блок питания | manual | 3h | 2026-09-11 09:00 A | 2026-09-11 12:00 |  | 3h |  |  | start no earlier than 2026-09-11 09:00 | Некрасов А | 3h |  |
| 517 | 1.274 | **монтаж регистратор данных линия 1 и 2:** |  | 0.25d | 2026-03-18 09:00 A | 2026-03-18 11:00 A | 100% |  |  |  |  |  | 2h | 2h |
| 518 | 1.274.1 | подключение линия 1 |  | 2h | 2026-03-18 09:00 A | 2026-03-18 11:00 A | 100% |  |  |  | start no earlier than 2026-03-18 09:00 | Домоводов К | 2h | 2h |

| ID | WBS | Task | Type | Duration | Start | Finish | Predecessors | Complete | Remaining | Total slack | Free slack | Constraint | Resources | Work | Actual work |
| --- | --- | --- | --- | --- | --- | --- | --- | --- | --- | --- | --- | --- | --- | --- | --- |
| 519 | 1.275 | **разделить воду в экструдер и парогенераторы** |  | 119.44d | 2026-03-19 09:00 A | 2026-09-02 12:30 |  | 90% | 11.69d | 136.16d |  |  |  | 117.5h | 106h |
| 520 | 1.275.1 | заявка поплавкой клапан вертикальный, подводка с боку по аналогии с 4ц |  | 1h | 2026-03-19 09:00 A | 2026-03-19 10:00 A |  | 100% |  |  |  | start no earlier than 2026-03-19 08:00 | Зорькин В | 1h | 1h |
| 521 | 1.275.2 | доставка |  | 10d | 2026-03-19 10:00 A | 2026-04-02 10:00 A | 520 | 100% |  |  |  | start no earlier than 2026-03-19 08:00 | Карабанов | 80h | 80h |
| 522 | 1.275.3 | испытать производсительность маленького черн насоса с "медленным" счетким |  | 2h | 2026-05-20 09:00 A | 2026-05-20 11:00 A |  | 100% |  |  |  | start no earlier than 2026-05-20 09:00 | Тимофеев В | 2h | 2h |
| 523 | 1.275.4 | изготовить емкость для поплавкой камеры и насоса из нерж |  | 4h | 2026-04-27 09:00 A | 2026-04-27 13:00 A |  | 100% |  |  |  | start no earlier than 2026-04-27 09:00 | Макаревич А | 4h | 4h |
| 524 | 1.275.5 | доставка частотный 220 контроль | milestone | 0d | 2026-04-24 09:00 A | 2026-04-24 09:00 A |  | 100% |  |  |  | start no earlier than 2026-04-24 09:00 | Зорькин В |  |  |
| 525 | 1.275.6 | испытать регулирование насоса на частотнике |  | 1h | 2026-05-26 09:00 A | 2026-05-26 10:00 A |  | 100% |  |  |  | start no earlier than 2026-05-26 09:00 | Дедов В | 1h | 1h |
| 526 | 1.275.7 | монтаж насоса + бак нерж на линия 2 |  | 1h | 2026-05-27 09:00 A | 2026-05-27 10:00 A |  | 100% |  |  |  | start no earlier than 2026-05-27 09:00 | Тимофеев В | 1h | 1h |
| 527 | 1.275.8 | монтаж розетка, кабель до насаса, подключение двигатель насоса |  | 1h | 2026-05-27 09:00 A | 2026-05-27 10:00 A |  | 100% |  |  |  | start no earlier than 2026-05-27 09:00 | Бундин В | 1h | 1h |
| 528 | 1.275.9 | подключение насос + счетчик + кран + частотник - сборка схема с байпасом на мал насосе |  | 2h | 2026-08-11 09:00 A | 2026-08-11 11:00 A |  | 100% |  |  |  | start no earlier than 2026-08-11 09:00 | Тимофеев В | 2h | 2h |
| 529 | 1.275.10 | установить счетчик в линию |  | 1h | 2026-08-12 09:00 A | 2026-08-12 10:00 A |  | 100% |  |  |  | start no earlier than 2026-08-12 09:00 | Тимофеев В | 1h | 1h |
| 530 | 1.275.11 | испытания производительности и регулировки |  | 1h | 2026-08-12 09:00 A | 2026-08-12 10:00 A |  | 100% |  |  |  | start no earlier than 2026-08-12 09:00 | Тимофеев В | 1h | 1h |
| 531 | 1.275.12 | тестирование работы при обновленном SSID |  | 1h | 2026-08-19 09:00 A | 2026-08-19 10:00 A |  | 100% |  |  |  | start no earlier than 2026-08-19 09:00 | Домоводов К | 1h | 1h |
| 532 | 1.275.13 | **монтаж на линия 1** |  | 18.44d | 2026-08-07 09:00 | 2026-09-02 12:30 |  |  |  | 136.16d |  |  |  | 11.5h |  |
| 533 | 1.275.13.1 | заявка на счетчик, насос, 3х ход клапан, фитинги, канистра |  | 1h | 2026-08-07 09:00 | 2026-08-07 10:00 |  |  |  | 136.16d | 0d | start no earlier than 2026-08-07 09:00 | Зорькин В | 1h |  |
| 534 | 1.275.13.2 | контроль поставки |  | 30min | 2026-08-28 10:00 | 2026-08-28 10:30 | 533FS+15d |  |  | 136.16d | 0d | start no earlier than 2026-08-12 09:00 | Зорькин В | 0.5h |  |
| 535 | 1.275.13.3 | сборка корпус |  | 4h | 2026-08-31 10:30 | 2026-08-31 15:30 | 534FS+1d |  |  | 136.16d | 0d | start no earlier than 2026-08-12 09:00 | Тимофеев В | 4h |  |
| 536 | 1.275.13.4 | монтаж линия 1 |  | 6h | 2026-09-01 15:30 | 2026-09-02 12:30 | 535FS+1d |  |  | 136.16d |  | start no earlier than 2026-08-12 09:00 | Тимофеев В | 6h |  |
| 537 | 1.275.14 | подключть конденсатор к насосу, запуск системы |  | 1h | 2026-05-27 08:00 A | 2026-05-27 10:00 A |  | 100% |  |  |  | start no earlier than 2026-05-27 08:00 | Дедов В | 1h | 1h |
| 538 | 1.275.15 | подготовить емкость нерж (попловок, сгон) для подключения к насосу |  | 4h | 2026-05-26 09:00 A | 2026-05-26 13:00 A |  | 100% |  |  |  | start no earlier than 2026-05-26 09:00 | Бундин В | 4h | 4h |
| 539 | 1.275.16 | испытать насос на часотоном приводе |  | 2h | 2026-05-19 09:00 A | 2026-05-19 11:00 A | 524 | 100% |  |  |  | start no earlier than 2026-05-20 09:00 | Тимофеев В | 2h | 2h |
| 540 | 1.275.17 | перенос с 3й линии бак с насосом, установка на линия 2 |  | 4h | 2026-04-08 09:00 A | 2026-04-08 13:00 A | 523 | 100% |  |  |  | start no earlier than 2026-04-08 09:00 | Некрасов А | 4h | 4h |
| 541 | 1.276 | бойлер на экструдере - установить трубку на клапан сброса и смонтировать её ы раковину |  | 1h | 2026-03-14 09:00 A | 2026-03-16 10:00 A |  | 100% |  |  |  | start no earlier than 2026-03-14 09:00 | Бундин В | 1h | 1h |
| 542 | 1.277 | смазать дверную ручку (входную) |  | 1h | 2026-03-15 09:00 A | 2026-03-16 10:00 A |  | 100% |  |  |  | start no earlier than 2026-03-15 09:00 | Бундин В | 1h | 1h |
| 543 | 1.278 | сделать ручку дверную (вход на упаковку) |  | 1h | 2026-03-15 09:00 A | 2026-03-16 10:00 A |  | 100% |  |  |  | start no earlier than 2026-03-15 09:00 | Бундин В | 1h | 1h |
| 544 | 1.279 | дверная ручка в туалет (подкрутить) |  | 1h | 2026-03-15 09:00 A | 2026-03-16 10:00 A |  | 100% |  |  |  | start no earlier than 2026-03-15 09:00 | Бундин В | 1h | 1h |
| 545 | 1.280 | штабелер экструдера натянуть цепь |  | 1h | 2026-03-13 08:00 A | 2026-03-13 10:00 A |  | 100% |  |  |  | start no earlier than 2026-03-13 08:00 | Дедов В | 1h | 1h |
| 546 | 1.281 | установить розетку возле роутера. Место монтажа фото от Шуранова |  | 2h | 2026-03-14 09:00 A | 2026-03-16 11:00 A |  | 100% |  |  |  | start no earlier than 2026-03-14 09:00 | Бундин В | 2h | 2h |
| 547 | 1.282 | линия 1 лоток охладителя под конвейером (по фото) - поднять на 3см, что бы не цеплял сетку. Снять / пересверлить крепеж |  | 2h | 2026-03-14 09:00 A | 2026-03-16 11:00 A |  | 100% |  |  |  | start no earlier than 2026-03-14 09:00 | Бундин В | 2h | 2h |
| 548 | 1.283 | изготовтиь полочку для роутера с "крышей. Двух скатная". |  | 4h | 2026-03-14 09:00 A | 2026-03-16 13:00 A |  | 100% |  |  |  | start no earlier than 2026-03-14 09:00 | Бундин В | 4h | 4h |

| ID | WBS | Task | Type | Duration | Start | Finish | Predecessors | Complete | Remaining | Actual start | Total slack | Constraint | Resources | Work | Actual work |
| --- | --- | --- | --- | --- | --- | --- | --- | --- | --- | --- | --- | --- | --- | --- | --- |
| 549 | 1.284 | **АКБ штабелер на навесках** |  | 43d | 2026-03-13 08:00 A | 2026-05-12 18:00 A |  | 100% |  |  |  |  |  | 2h | 2h |
| 550 | 1.284.1 | заявка на новые АКБ, отправить | milestone | 0d | 2026-03-13 08:00 A | 2026-03-13 08:00 A |  | 100% |  |  |  | start no earlier than 2026-03-13 08:00 | Шуранов Ю |  |  |
| 551 | 1.284.2 | получить счет | milestone | 0d | 2026-03-16 09:00 A | 2026-03-16 09:00 A | 550 | 100% |  |  |  | start no earlier than 2026-03-16 09:00 | Шуранов Ю |  |  |
| 552 | 1.284.3 | доставыка\ |  | 40d | 2026-03-16 09:00 A | 2026-05-12 18:00 A | 551 | 100% |  |  |  | start no earlier than 2026-03-13 08:00 |  |  |  |
| 553 | 1.284.4 | замена (получить на складе 2 АКБ и поменять на штабелере) |  | 2h | 2026-03-25 09:00 A | 2026-03-25 11:00 A |  | 100% |  |  |  | start no earlier than 2026-03-25 09:00 | Бобренок В | 2h | 2h |
| 554 | 1.285 | замена шнеков на 1 линии по команде. Подготовить / старые увезти |  | 1h | 2026-03-14 09:00 A | 2026-03-16 10:00 A |  | 100% |  |  |  | start no earlier than 2026-03-14 09:00 | Бобренок В; Некрасов А | 2h | 2h |
| 555 | 1.286 | **установить принтер датаматрикс на пролистыватель** |  | 122d? | 2026-03-13 09:00 A | 2026-08-31 18:00 |  | 20% | 97.6d? |  | 137.59d |  |  | 11h | 3h |
| 556 | 1.286.1 | разработка крепления принтера |  | 1h | 2026-03-13 09:00 A | 2026-03-13 10:00 A |  | 100% |  |  |  | start no earlier than 2026-03-13 08:00 | Зорькин В; Шуранов Ю | 2h | 2h |
| 557 | 1.286.2 | настройка ПО с агрегатором |  | 1d? | 2026-08-31 09:00 | 2026-08-31 18:00 |  |  |  |  | 137.59d | start no earlier than 2026-08-31 09:00 | Домоводов К | 8h |  |
| 558 | 1.286.3 | изучение документации |  | 1h | 2026-05-28 09:00 A | 2026-05-28 10:00 A |  | 100% |  |  |  | start no earlier than 2026-05-28 09:00 | Домоводов К | 1h | 1h |
| 559 | 1.287 | **заменить мятый профлист коррдиор подачи навесок** |  | 32.25d | 2026-03-13 09:00 A | 2026-04-28 11:00 A |  | 100% |  |  |  |  |  | 85h | 85h |
| 560 | 1.287.1 | расчет материал / заявка |  | 1h | 2026-03-13 09:00 A | 2026-03-13 10:00 A |  | 100% |  |  |  | start no earlier than 2026-03-13 09:00 | Шуранов Ю | 1h | 1h |
| 561 | 1.287.2 | доставка |  | 10d | 2026-03-13 10:00 A | 2026-03-27 10:00 A | 560 | 100% |  |  |  | start no earlier than 2026-03-12 08:00 | Карабанов | 80h | 80h |
| 562 | 1.287.3 | замена |  | 2h | 2026-04-28 09:00 A | 2026-04-28 11:00 A | 561 | 100% |  |  |  | start no earlier than 2026-04-28 09:00 | Некрасов А; Труфанов А | 4h | 4h |
| 563 | 1.288 | **заменить плинтус стена вдольпечи 2** |  | 11.06d? | 2026-03-26 09:00 | 2026-04-10 09:30 |  | 91% | 1d? | 2026-03-13 09:00 |  |  |  | 96.5h | 80.5h |
| 564 | 1.288.1 | заявка |  | 30min | 2026-03-13 09:00 A | 2026-03-13 09:30 A |  | 100% |  |  |  | start no earlier than 2026-03-13 09:00 | Шуранов Ю | 0.5h | 0.5h |
| 565 | 1.288.2 | доставка |  | 10d | 2026-03-13 09:30 A | 2026-03-27 09:30 A | 564 | 100% |  |  |  | start no earlier than 2026-03-12 08:00 | Карабанов | 80h | 80h |
| 566 | 1.288.3 | замена |  | 1d? | 2026-09-14 09:00 | 2026-09-14 18:00 | 565 |  |  |  | 126.59d | start no earlier than 2026-09-14 09:00 | Некрасов А; Олег | 16h |  |
| 567 | 1.289 | **заменить аллюминевый скотч на швах вентиляции** |  | 18.25d | 2026-03-12 09:00 A | 2026-04-07 11:00 A |  | 100% |  |  |  |  |  | 82.33h | 82.33h |
| 568 | 1.289.1 | заявка |  | 20min | 2026-03-12 09:00 A | 2026-03-12 09:20 A |  | 100% |  |  |  | start no earlier than 2026-03-12 08:00 | Зорькин В | 0.33h | 0.33h |
| 569 | 1.289.2 | доставка |  | 10d | 2026-03-12 09:20 A | 2026-03-26 09:20 A | 568 | 100% |  |  |  | start no earlier than 2026-03-12 08:00 | Карабанов | 80h | 80h |
| 570 | 1.289.3 | замена (также на улитках печей, циклона, стык регулировки шибера улитки) | manual | 2h | 2026-04-07 09:00 A | 2026-04-07 11:00 A | 569 | 100% |  |  |  | start no earlier than 2026-04-07 09:00 | Бундин В | 2h | 2h |
| 571 | 1.290 | **замена скорлупа утеплитель горячих труб печи** |  | 16d | 2026-03-13 09:00 A | 2026-04-05 11:00 A |  | 100% |  |  |  |  |  | 83h | 83h |
| 572 | 1.290.1 | заявка |  | 1h | 2026-03-13 09:00 A | 2026-03-13 10:00 A |  | 100% |  |  |  | start no earlier than 2026-03-13 09:00 | Зорькин В | 1h | 1h |
| 573 | 1.290.2 | доставка |  | 10d | 2026-03-13 10:00 A | 2026-03-27 10:00 A | 572 | 100% |  |  |  | start no earlier than 2026-03-12 08:00 | Карабанов | 80h | 80h |
| 574 | 1.290.3 | замена | manual | 2h | 2026-04-05 09:00 A | 2026-04-05 11:00 A | 573 | 100% |  |  |  | start no earlier than 2026-04-05 09:00 | Бундин В | 2h | 2h |

| ID | WBS | Task | Type | Duration | Start | Finish | Predecessors | Complete | Remaining | Actual start | Constraint | Resources | Work | Actual work |
| --- | --- | --- | --- | --- | --- | --- | --- | --- | --- | --- | --- | --- | --- | --- |
| 575 | 1.291 | **купить прокатный запайщик** |  | 85.12d? | 2026-03-16 09:00 A | 2026-07-13 10:00 A |  | 100% |  |  |  |  | 11h | 11h |
| 576 | 1.291.1 | поиск / заявка |  | 2h | 2026-03-16 09:00 A | 2026-03-16 11:00 A |  | 100% |  |  | start no earlier than 2026-03-16 09:00 | Зорькин В | 2h | 2h |
| 577 | 1.291.2 | получить счет + договор |  | 1h | 2026-05-12 09:00 A | 2026-05-12 10:00 A | 576 | 100% |  |  | start no earlier than 2026-05-12 09:00 | Зорькин В | 1h | 1h |
| 578 | 1.291.3 | оплата | milestone | 0d | 2026-05-12 10:00 A | 2026-05-12 10:00 A | 577 | 100% |  |  | start no earlier than 2026-03-12 08:00 | Домоводов К |  |  |
| 579 | 1.291.4 | доставка |  | 40d | 2026-05-12 10:00 A | 2026-07-13 10:00 A | 578 | 100% |  |  | start no earlier than 2026-03-12 08:00 |  |  |  |
| 580 | 1.291.5 | приемка / сборка |  | 1d? | 2026-06-29 09:00 A | 2026-06-29 18:00 A | 579 | 100% |  |  | start no earlier than 2026-03-12 08:00 | Тимофеев В | 8h | 8h |
| 581 | 1.292 | сборка рохли 2шт |  | 1h | 2026-03-13 09:00 A | 2026-03-13 10:00 A |  | 100% |  |  | start no earlier than 2026-03-13 09:00 | Тимофеев В | 1h | 1h |
| 582 | 1.293 | изготовить герметичную крышку на подачку гидролизата |  | 2h | 2026-05-20 09:00 A | 2026-05-20 11:00 A |  | 100% |  |  | start no earlier than 2026-05-20 09:00 | Дедов В; Шуранов Ю | 4h | 4h |
| 583 | 1.294 | **установить крышку печи торцевую с стороны экструдера на шарниры** |  | 12.5d | 2026-03-25 09:00 | 2026-04-10 13:00 |  | 95% | 0.57d | 2026-03-06 09:00 |  |  | 88.08h | 84.08h |
| 584 | 1.294.1 | заказ шарниры |  | 5min | 2026-03-06 09:00 A | 2026-03-06 09:05 A |  | 100% |  |  | start no earlier than 2026-03-06 08:00 | Шуранов Ю | 0.08h | 0.08h |
| 585 | 1.294.2 | доставка |  | 10d | 2026-03-06 09:05 A | 2026-03-20 09:05 A | 584 | 100% |  |  | start no earlier than 2026-03-06 08:00 | Карабанов | 80h | 80h |
| 586 | 1.294.3 | монтаж линия 1 |  | 4h | 2026-05-13 09:00 A | 2026-05-13 13:00 A | 585 | 100% |  |  | start no earlier than 2026-05-13 09:00 | Бобренок В | 4h | 4h |
| 587 | 1.294.4 | монтаж линия 1 и 2 печи (чтобы открывалась и не мешала открыванию лотку сверху) | manual | 4h | 2026-09-10 09:00 | 2026-09-10 13:00 | 585 |  |  |  | start no earlier than 2026-09-10 09:00 | Бундин В | 4h |  |
| 588 | 1.295 | **квадропак заменить пружины на лапках** |  | 10.12d | 2026-03-18 09:00 A | 2026-04-01 10:00 A |  | 100% |  |  |  |  | 3h | 3h |
| 589 | 1.295.1 | попытка заменить |  | 1h | 2026-03-18 09:00 A | 2026-03-18 10:00 A |  | 100% |  |  | start no earlier than 2026-03-18 09:00 | Дедов В | 1h | 1h |
| 590 | 1.295.2 | проврить ролики на износ / заказать |  | 1h | 2026-03-19 09:00 A | 2026-03-19 10:00 A |  | 100% |  |  | start no earlier than 2026-03-19 08:00 | Зорькин В | 1h | 1h |
| 591 | 1.295.3 | проверить / разрабоать полпн прижимная пластина регулировка |  | 1h | 2026-04-01 09:00 A | 2026-04-01 10:00 A |  | 100% |  |  | start no earlier than 2026-04-01 09:00 | Шуранов Ю | 1h | 1h |
| 592 | 1.296 | **звонок на ворота по привозу навесок** |  | 37.25d | 2026-03-05 09:00 A | 2026-04-27 11:00 A |  | 100% |  |  |  |  | 82.5h | 82.5h |
| 593 | 1.296.1 | заявка на сирену / звонок |  | 30min | 2026-03-05 09:00 A | 2026-03-05 09:30 A |  | 100% |  |  | start no earlier than 2026-03-05 09:00 | Шуранов Ю | 0.5h | 0.5h |
| 594 | 1.296.2 | доставка |  | 10d | 2026-03-12 09:00 A | 2026-03-25 18:00 A | 593 | 100% |  |  | start no earlier than 2026-03-12 08:00 | Карабанов | 80h | 80h |
| 595 | 1.296.3 | монтаж кнопка и звонок на складе (кнопку устанавливаем справа от ворот- звонок возле ВРУ слева |  | 2h | 2026-04-25 09:00 A | 2026-04-27 11:00 A | 594 | 100% |  |  | start no earlier than 2026-04-25 09:00 | Бобренок В | 2h | 2h |
| 596 | 1.297 | **установить профлист на левую стену** |  | 47d? | 2026-03-12 09:00 A | 2026-05-15 18:00 A |  | 100% |  |  |  |  | 185.5h | 185.5h |
| 597 | 1.297.1 | расчет материал с Олегом |  | 1h | 2026-03-12 09:00 A | 2026-03-12 10:00 A |  | 100% |  |  | start no earlier than 2026-03-12 09:00 | Шуранов Ю | 1h | 1h |
| 598 | 1.297.2 | заявка |  | 30min | 2026-03-19 09:00 A | 2026-03-19 09:30 A | 597 | 100% |  |  | start no earlier than 2026-03-19 09:00 | Шуранов Ю | 0.5h | 0.5h |
| 599 | 1.297.3 | доставка |  | 10d | 2026-03-19 09:30 A | 2026-04-02 09:30 A | 598 | 100% |  |  | start no earlier than 2026-03-04 08:00 | Карабанов | 80h | 80h |
| 600 | 1.297.4 | монтаж пробный ряд |  | 4h | 2026-04-22 09:00 A | 2026-04-22 13:00 A |  | 100% |  |  | start no earlier than 2026-04-22 09:00 | Некрасов А; Олег; Труфанов А | 12h | 12h |
| 601 | 1.297.5 | монтаж каркас |  | 1d? | 2026-04-23 14:00 A | 2026-04-24 13:00 A | 599, 600FS+1d | 100% |  |  | start no earlier than 2026-04-22 09:00 | Некрасов А; Труфанов А | 16h | 16h |
| 602 | 1.297.6 | монтаж лист |  | 6h | 2026-04-28 09:00 A | 2026-04-28 16:00 A | 601 | 100% |  |  | start no earlier than 2026-04-28 09:00 | Некрасов А; Труфанов А | 12h | 12h |
| 603 | 1.297.7 | монтаж уровень 2 |  | 4d | 2026-05-12 09:00 A | 2026-05-15 18:00 A |  | 100% |  |  | start no earlier than 2026-05-12 08:00 | Некрасов А; Труфанов А | 64h | 64h |

| ID | WBS | Task | Type | Duration | Start | Finish | Predecessors | Complete | Remaining | Total slack | Free slack | Constraint | Resources | Work | Actual work |
| --- | --- | --- | --- | --- | --- | --- | --- | --- | --- | --- | --- | --- | --- | --- | --- |
| 604 | 1.298 | **модернизация вентиляции** |  | 130.28d | 2026-03-13 09:00 A | 2026-09-10 11:15 |  | 26% | 95.8d | 129.31d |  |  |  | 8.5h | 2.25h |
| 605 | 1.298.1 | заявка врезки для отбора проб |  | 15min | 2026-08-21 09:00 A | 2026-08-21 09:15 A |  | 100% |  |  |  | start no earlier than 2026-08-21 09:00 | Зорькин В | 0.25h | 0.25h |
| 606 | 1.298.2 | контроль доставки врезки для отбора проб |  | 15min | 2026-09-09 09:00 | 2026-09-09 09:15 | 605FS+7d |  |  | 129.31d | 0d | start no earlier than 2026-09-09 09:00 | Зорькин В | 0.25h |  |
| 607 | 1.298.3 | монтаж врезки для отбора проб |  | 2h | 2026-09-10 09:15 | 2026-09-10 11:15 | 606FS+1d |  |  | 129.31d |  | start no earlier than 2026-09-07 09:00 | Тимофеев В | 2h |  |
| 608 | 1.298.4 | составить схему, расчет |  | 2h | 2026-03-13 09:00 A | 2026-03-13 11:00 A |  | 100% |  |  |  | start no earlier than 2026-03-13 09:00 | Домоводов К | 2h | 2h |
| 609 | 1.298.5 | монтаж вентиляторов |  | 4h | 2026-05-12 09:00 | 2026-05-12 13:00 |  |  |  | 217.09d |  | start no earlier than 2026-05-12 08:00 | оплот | 4h |  |
| 610 | 1.299 | **заменаить фитинги на жирах** |  | 44.12d | 2026-02-19 09:00 A | 2026-04-22 10:00 A |  | 100% |  |  |  |  |  | 81.5h | 81.5h |
| 611 | 1.299.1 | заявка |  | 30min | 2026-02-19 09:00 A | 2026-02-19 09:30 A |  | 100% |  |  |  | start no earlier than 2026-02-19 09:00 | Шуранов Ю | 0.5h | 0.5h |
| 612 | 1.299.2 | доставка |  | 10d | 2026-02-19 09:30 A | 2026-03-05 09:30 A | 611 | 100% |  |  |  |  | Карабанов | 80h | 80h |
| 613 | 1.299.3 | контроль поставки | milestone | 0d | 2026-03-12 08:00 A | 2026-03-12 08:00 A | 612 | 100% |  |  |  | start no earlier than 2026-03-12 08:00 | Шуранов Ю |  |  |
| 614 | 1.299.4 | контроль. Пришли опять не те | milestone | 0min | 2026-03-12 09:00 A | 2026-03-12 09:00 A | 612, 613 | 100% |  |  |  | start no earlier than 2026-03-12 09:00 | Зорькин В |  |  |
| 615 | 1.299.5 | контроль | milestone | 0d | 2026-04-01 09:00 A | 2026-04-01 09:00 A |  | 100% |  |  |  | start no earlier than 2026-04-01 09:00 | Зорькин В |  |  |
| 616 | 1.299.6 | замена |  | 1h | 2026-04-22 09:00 A | 2026-04-22 10:00 A | 614FS+2d | 100% |  |  |  | start no earlier than 2026-04-22 09:00 | Бобренок В | 1h | 1h |
| 617 | 1.300 | **жиротопка замена воздухоотводчиков** |  | 24.12d | 2026-03-04 09:00 A | 2026-04-07 10:00 A |  | 100% |  |  |  |  |  | 41.25h | 41.25h |
| 618 | 1.300.1 | заявка |  | 15min | 2026-03-04 09:00 A | 2026-03-04 09:15 A |  | 100% |  |  |  | start no earlier than 2026-03-04 09:00 | Зорькин В | 0.25h | 0.25h |
| 619 | 1.300.2 | доставка |  | 5d | 2026-03-04 09:15 A | 2026-03-11 09:15 A | 618 | 100% |  |  |  | start no earlier than 2026-02-27 08:00 | Карабанов | 40h | 40h |
| 620 | 1.300.3 | замена |  | 1h | 2026-04-07 09:00 A | 2026-04-07 10:00 A | 619 | 100% |  |  |  | start no earlier than 2026-04-07 09:00 | Бундин В | 1h | 1h |
| 621 | 1.301 | **увеличить освещение в зоне квадропака** |  | 11.12d | 2026-03-04 09:00 A | 2026-03-19 10:00 A |  | 100% |  |  |  |  |  | 83.5h | 83.5h |
| 622 | 1.301.1 | составить список мматериал для монтажа |  | 30min | 2026-03-04 09:00 A | 2026-03-04 09:30 A |  | 100% |  |  |  | start no earlier than 2026-03-04 09:00 | Зорькин В; Шуранов Ю | 1h | 1h |
| 623 | 1.301.2 | заявка трос, светильники |  | 30min | 2026-03-04 09:30 A | 2026-03-04 10:00 A | 622 | 100% |  |  |  | start no earlier than 2026-02-27 08:00 | Шуранов Ю | 0.5h | 0.5h |
| 624 | 1.301.3 | доставка |  | 10d | 2026-03-05 10:00 A | 2026-03-19 10:00 A | 623FS+1d | 100% |  |  |  | start no earlier than 2026-02-27 08:00 | Карабанов | 80h | 80h |
| 625 | 1.301.4 | монтаж |  | 2h | 2026-03-06 09:00 A | 2026-03-06 11:00 A |  | 100% |  |  |  | start no earlier than 2026-03-06 09:00 | Бобренок В | 2h | 2h |
| 626 | 1.302 | **установить орг стекло/нерж на обратный ход ленты на раму конвейера** |  | 38.25d | 2026-03-03 09:00 A | 2026-04-24 11:00 A |  | 100% |  |  |  |  |  | 83.5h | 83.5h |
| 627 | 1.302.1 | заявка нерж |  | 30min | 2026-03-03 09:00 A | 2026-03-03 09:30 A |  | 100% |  |  |  | start no earlier than 2026-03-03 09:00 | Зорькин В | 0.5h | 0.5h |
| 628 | 1.302.2 | доставка |  | 10d | 2026-03-03 09:30 A | 2026-03-17 09:30 A | 627 | 100% |  |  |  | start no earlier than 2026-03-02 09:00 | Карабанов | 80h | 80h |
| 629 | 1.302.3 | подготовка материала в размер по аналогии 2 линии |  | 1h | 2026-04-15 09:00 A | 2026-04-15 10:00 A | 628 | 100% |  |  |  | start no earlier than 2026-04-15 09:00 | Бундин В | 1h | 1h |
| 630 | 1.302.4 | установка на остановке 1 линии (переустановить) |  | 2h | 2026-04-24 09:00 A | 2026-04-24 11:00 A |  | 100% |  |  |  | start no earlier than 2026-04-24 09:00 | Бобренок В | 2h | 2h |

| ID | WBS | Task | Duration | Start | Finish | Predecessors | Complete | Constraint | Resources | Work | Actual work |
| --- | --- | --- | --- | --- | --- | --- | --- | --- | --- | --- | --- |
| 631 | 1.303 | **установить роутер в зону экструдера для регистрации данных** | 2.12d | 2026-03-02 09:00 A | 2026-03-04 10:00 A |  | 100% |  |  | 10.17h | 10.17h |
| 632 | 1.303.1 | монтаж кабель / розетка, роутер | 4h | 2026-03-02 09:00 A | 2026-03-02 13:00 A |  | 100% | start no earlier than 2026-03-02 09:00 | Некрасов А; Труфанов А | 8h | 8h |
| 633 | 1.303.2 | Монтаж розетки для роутера | 1h | 2026-03-03 09:00 A | 2026-03-03 10:00 A |  | 100% | start no earlier than 2026-03-03 09:00 | Тимофеев В | 1h | 1h |
| 634 | 1.303.3 | Заявка Айтишнику на монтаж наконечников | 10min | 2026-03-03 09:00 A | 2026-03-03 09:10 A |  | 100% | start no earlier than 2026-03-03 09:00 | Зорькин В | 0.17h | 0.17h |
| 635 | 1.303.4 | Монтаж штекеров на кабель | 1h | 2026-03-04 09:00 A | 2026-03-04 10:00 A |  | 100% | start no earlier than 2026-03-04 09:00 | Коленкоров | 1h | 1h |
| 636 | 1.304 | **ремонт приточной вентиляции** | 47.25d | 2026-02-26 09:00 A | 2026-05-04 11:00 A |  | 100% |  |  | 334.5h | 334.5h |
| 637 | 1.304.1 | заявка калорифер | 30min | 2026-03-04 09:00 A | 2026-03-04 09:30 A |  | 100% | start no earlier than 2026-03-04 09:00 | Зорькин В | 0.5h | 0.5h |
| 638 | 1.304.2 | доставка | 10d | 2026-03-04 09:30 A | 2026-03-20 09:30 A | 637 | 100% |  | Карабанов | 80h | 80h |
| 639 | 1.304.3 | замена калорифер | 4h | 2026-03-11 09:00 A | 2026-03-11 13:00 A |  | 100% | start no earlier than 2026-03-11 09:00 | Некрасов А; Труфанов А | 8h | 8h |
| 640 | 1.304.4 | дать фото насоса | 20min | 2026-02-26 09:00 A | 2026-02-26 09:20 A |  | 100% | start no earlier than 2026-02-26 08:00 | Бундин В | 0.33h | 0.33h |
| 641 | 1.304.5 | заявка насос вода | 30min | 2026-03-02 09:30 A | 2026-03-02 10:00 A | 637, 640 | 100% | start no earlier than 2026-02-26 08:00 | Зорькин В | 0.5h | 0.5h |
| 642 | 1.304.6 | доставка | 10d | 2026-03-02 10:00 A | 2026-03-16 10:00 A | 641 | 100% | start no earlier than 2026-02-26 08:00 | Карабанов | 80h | 80h |
| 643 | 1.304.7 | контроль доставки насос и заслонка | 10min | 2026-03-24 09:00 A | 2026-03-24 09:10 A |  | 100% | start no earlier than 2026-03-24 08:00 | Зорькин В | 0.17h | 0.17h |
| 644 | 1.304.8 | замена насоса | 1h | 2026-03-25 09:10 A | 2026-03-25 10:10 A | 643FS+1d | 100% | start no earlier than 2026-03-24 09:00 | Труфанов А | 1h | 1h |
| 645 | 1.304.9 | заявка привод заслонки | 30min | 2026-03-04 09:00 A | 2026-03-04 09:30 A | 641 | 100% | start no earlier than 2026-03-04 09:00 | Зорькин В | 0.5h | 0.5h |
| 646 | 1.304.10 | доставка | 10d | 2026-03-04 09:30 A | 2026-03-18 09:30 A | 645 | 100% | start no earlier than 2026-02-26 08:00 | Карабанов | 80h | 80h |
| 647 | 1.304.11 | замена привода заслонки | 1h | 2026-05-04 09:00 A | 2026-05-04 10:00 A | 643FS+1d | 100% | start no earlier than 2026-05-04 09:00 | Бобренок В | 1h | 1h |
| 648 | 1.304.12 | заявка фильтры на приточная вентиляция | 30min | 2026-03-04 09:00 A | 2026-03-04 09:30 A |  | 100% | start no earlier than 2026-03-04 09:00 | Зорькин В | 0.5h | 0.5h |
| 649 | 1.304.13 | доставка | 10d | 2026-03-04 09:30 A | 2026-03-18 09:30 A | 648 | 100% | start no earlier than 2026-02-27 08:00 | Карабанов | 80h | 80h |
| 650 | 1.304.14 | замена | 2h | 2026-05-04 09:00 A | 2026-05-04 11:00 A | 649 | 100% | start no earlier than 2026-05-04 09:00 | Некрасов А | 2h | 2h |
| 651 | 1.305 | **монтаж регистратор данных линия 1 и 2:** | 1.12d | 2026-02-24 09:00 A | 2026-02-25 10:00 A |  | 100% |  |  | 5h | 5h |
| 652 | 1.305.1 | установить розетку и автомат для для блока питания в ШУ экструдера, без подключения | 2h | 2026-02-24 09:00 A | 2026-02-24 11:00 A |  | 100% | start no earlier than 2026-02-24 09:00 | Дедов В | 2h | 2h |
| 653 | 1.305.2 | монтаж безподключения кабель RS485 по аналогии с линия 3 - только часотный привод. На складе. | 1h | 2026-02-24 09:00 A | 2026-02-24 10:00 A |  | 100% | start no earlier than 2026-02-24 09:00 | Дедов В | 1h | 1h |
| 654 | 1.305.3 | подключение розеток для блока питания в ШУ | 1h | 2026-02-25 09:00 A | 2026-02-25 10:00 A |  | 100% | start no earlier than 2026-02-25 09:00 | Некрасов А | 1h | 1h |
| 655 | 1.305.4 | монтаж пультов управления и индикации регистратор, по аналогии с линия 3 | 1h | 2026-02-25 09:00 A | 2026-02-25 10:00 A |  | 100% | start no earlier than 2026-02-25 09:00 | Некрасов А | 1h | 1h |
| 656 | 1.306 | заменить пластик втулку на металл деталь уплотнение вала прекондицинера 2 линия | 1d? | 2025-09-08 09:00 A | 2025-09-08 18:00 A |  | 100% | start no earlier than 2025-09-08 09:00 |  |  |  |

| ID | WBS | Task | Duration | Start | Finish | Predecessors | Complete | Actual finish | Total slack | Constraint | Resources | Work | Actual work |
| --- | --- | --- | --- | --- | --- | --- | --- | --- | --- | --- | --- | --- | --- |
| 657 | 1.307 | **баки жир 2 линия устноавить наконечники. От 23.05.25** | 265.25d | 2025-04-16 09:00 A | 2026-04-22 11:00 A |  | 100% |  |  |  |  | 42.5h | 42.5h |
| 658 | 1.307.1 | заявка на наконечнки | 30min | 2025-04-16 09:00 A | 2025-04-16 09:30 A |  | 100% |  |  | start no earlier than 2025-04-16 09:00 | Зорькин В | 0.5h | 0.5h |
| 659 | 1.307.2 | доставка | 5d | 2025-04-16 09:30 A | 2025-04-23 09:30 A | 658 | 100% |  |  | start no earlier than 2025-04-14 09:00 | Мультан | 40h | 40h |
| 660 | 1.307.3 | ТО каблей, клемников | 2h | 2026-04-22 09:00 A | 2026-04-22 11:00 A | 659 | 100% |  |  | start no earlier than 2026-04-22 09:00 | Труфанов А | 2h | 2h |
| 661 | 1.308 | **установить фильтры на жир** | 89.12d? | 2025-05-14 09:00 A | 2025-09-16 10:00 A |  | 100% |  |  |  |  | 50h | 50h |
| 662 | 1.308.1 | изготовить переходники токарь разместить | 1h | 2025-09-08 09:00 A | 2025-09-08 10:00 A |  | 100% |  |  | start no earlier than 2025-09-08 09:00 | Зорькин В | 1h | 1h |
| 663 | 1.308.2 | контроль доставки | 5d | 2025-09-08 10:00 A | 2025-09-15 10:00 A | 662 | 100% |  |  | start no earlier than 2025-09-08 09:00 | Зорькин В | 40h | 40h |
| 664 | 1.308.3 | замена | 1d? | 2025-09-15 10:00 A | 2025-09-16 10:00 A | 663 | 100% |  |  | start no earlier than 2025-09-08 09:00 | Тимофеев В | 8h | 8h |
| 665 | 1.308.4 | установить фильтры на жир 2шт через краны на тройник | 1h | 2025-05-14 09:00 A | 2025-05-14 10:00 A |  | 100% |  |  | start no earlier than 2025-05-14 09:00 | Тимофеев В | 1h | 1h |
| 666 | 1.309 | **палетные ворота подача навесок + подача жир** | 14d? | 2025-07-17 09:00 A | 2025-08-05 18:00 A |  | 100% |  |  |  |  | 32h | 32h |
| 667 | 1.309.1 | подготовить чертеж | 1d? | 2025-07-17 09:00 A | 2025-07-17 18:00 A |  | 100% |  |  | start no earlier than 2025-07-17 09:00 | Зорькин В | 8h | 8h |
| 668 | 1.309.2 | сборка рамы | 2d | 2025-07-25 09:00 A | 2025-07-28 18:00 A | 667 | 100% |  |  | start no earlier than 2025-07-25 09:00 | Некрасов А | 16h | 16h |
| 669 | 1.309.3 | монтаж | 1d? | 2025-08-05 09:00 A | 2025-08-05 18:00 A | 668 | 100% |  |  | start no earlier than 2025-08-05 09:00 | Некрасов А | 8h | 8h |
| 670 | 1.310 | защита подшипников паронтом + подготовка | 4h | 2025-06-18 09:00 A | 2025-06-18 13:00 A |  | 100% |  |  | start no earlier than 2025-06-18 09:00 | Тимофеев В | 4h | 4h |
| 671 | 1.311 | **квадропак ТО + составить карту смазки и ТО + составить список ЗИП** | 0.5d | 2025-04-02 09:00 A | 2025-04-02 13:00 A |  | 100% |  |  |  |  | 4h | 4h |
| 672 | 1.311.1 | оформить карту ТО | 4h | 2025-04-02 09:00 A | 2025-04-02 13:00 A |  | 100% |  |  | start no earlier than 2025-04-02 09:00 | Зорькин В | 4h | 4h |
| 673 | 1.312 | **квадропак некрасивый шов - золотинка** | 104.25d | 2025-01-13 09:00 A | 2025-06-06 11:00 |  | 100% | 2025-04-17 16:30 |  |  |  | 8h | 8h |
| 674 | 1.312.1 | **изготовление термоножа с вставкойвставкой** | 0.12d | 2025-01-13 09:00 A | 2025-01-13 10:00 A |  | 100% |  |  |  |  | 1h | 1h |
| 675 | 1.312.1.1 | чертеж | 1h | 2025-01-13 09:00 A | 2025-01-13 10:00 A |  | 100% |  |  | start no earlier than 2025-01-13 09:00 | Зорькин В | 1h | 1h |
| 676 | 1.312.2 | **установка тефлона на термонож** | 42.25d | 2025-04-17 09:00 A | 2025-06-06 11:00 |  | 100% | 2025-04-17 16:30 |  |  |  | 7h | 7h |
| 677 | 1.312.2.1 | разработать метод крепления | 30min | 2025-04-17 09:00 A | 2025-04-17 09:30 A |  | 100% |  |  | start no earlier than 2025-04-17 09:00 | Зорькин В; Шуранов Ю | 1h | 1h |
| 678 | 1.312.2.2 | чертеж | 4h | 2025-04-17 09:30 A | 2025-04-17 14:30 A | 677 | 100% |  |  | start no earlier than 2025-01-17 09:00 | Зорькин В | 4h | 4h |
| 679 | 1.312.2.3 | орг изготовление деталей | 2h | 2025-04-17 14:30 A | 2025-04-17 16:30 A | 678 | 100% |  |  | start no earlier than 2025-04-16 09:00 | Шуранов Ю | 2h | 2h |
| 680 | 1.313 | **режет кабель ЛУКАС силовой в лотке эстакада у КПП** | 444.5d | 2024-08-02 09:00 | 2026-04-16 13:00 |  |  |  | 235.09d |  |  | 4.5h |  |
| 681 | 1.313.1 | решение о переговорах ГП | 30min | 2024-08-02 09:00 | 2024-08-02 09:30 |  |  |  | 679.53d | start no earlier than 2024-08-02 09:00 | Домоводов К | 0.5h |  |
| 682 | 1.313.2 | перекладка кабель | 4h | 2026-04-16 09:00 | 2026-04-16 13:00 |  |  |  | 235.09d | start no earlier than 2026-04-16 08:00 | Олег | 4h |  |

| ID | WBS | Task | Duration | Start | Finish | Predecessors | Complete | Total slack | Constraint | Resources | Work | Actual work |
| --- | --- | --- | --- | --- | --- | --- | --- | --- | --- | --- | --- | --- |
| 683 | 1.314 | **ШР2.2 замена автомат на циклон на номинальный** | 5.06d | 2026-04-10 09:00 A | 2026-04-17 09:30 A |  | 100% |  |  |  | 41.5h | 41.5h |
| 684 | 1.314.1 | прорверить какой стоит / заявка по мощности мотора | 30min | 2026-04-10 09:00 A | 2026-04-10 09:30 A |  | 100% |  | start no earlier than 2026-04-10 09:00 | Тимофеев В | 0.5h | 0.5h |
| 685 | 1.314.2 | достьавка | 5d | 2026-04-10 09:30 A | 2026-04-17 09:30 A | 684 | 100% |  | start no earlier than 2024-03-04 09:00 | Малинина М | 40h | 40h |
| 686 | 1.314.3 | замена | 1h | 2026-04-16 09:30 A | 2026-04-16 10:30 A | 685 | 100% |  | start no earlier than 2026-04-06 09:00 | Шуранов Ю | 1h | 1h |
| 687 | 1.315 | **кронштейн фотометки ТЕКО усилить** | 10.12d | 2024-09-11 09:00 A | 2024-09-25 10:00 A |  | 100% |  |  |  | 82h | 82h |
| 688 | 1.315.1 | поиск заявка кронштейна для датчика с регулировкой в3 плоскостях | 1h | 2024-09-11 09:00 A | 2024-09-11 10:00 A |  | 100% |  | start no earlier than 2024-09-11 09:00 | Зорькин В | 1h | 1h |
| 689 | 1.315.2 | доставка | 10d | 2024-09-11 10:00 A | 2024-09-25 10:00 A | 688 | 100% |  | start no earlier than 2024-09-11 09:00 | Мультан | 80h | 80h |
| 690 | 1.315.3 | замена | 1h | 2024-09-21 10:00 A | 2024-09-23 10:00 A | 689 | 100% |  | start no earlier than 2024-09-11 09:00 | Тимофеев В | 1h | 1h |
| 691 | 1.316 | **квадропак греет пневмоцилиндр термоножа** | 14.5d | 2024-09-12 09:00 A | 2024-10-02 13:00 A |  | 100% |  |  |  | 85h | 85h |
| 692 | 1.316.1 | решение о применении теплоизоляц пластины / заявка | 1h | 2024-09-12 09:00 A | 2024-09-12 10:00 A |  | 100% |  | start no earlier than 2024-09-12 09:00 | Зорькин В | 1h | 1h |
| 693 | 1.316.2 | доставка | 10d | 2024-09-12 10:00 A | 2024-09-26 10:00 A | 692 | 100% |  | start no earlier than 2024-09-11 09:00 | Мультан | 80h | 80h |
| 694 | 1.316.3 | замена | 4h | 2024-10-02 09:00 A | 2024-10-02 13:00 A | 693 | 100% |  | start no earlier than 2024-10-02 09:00 | Тимофеев В | 4h | 4h |
| 695 | 1.317 | **ремонт комппрессора - сдать по гарантии** | 739.12d | 2023-10-31 09:00 A | 2026-08-31 10:00 A |  | 100% |  |  |  | 2h | 2h |
| 696 | 1.317.1 | контроль снабжения - отправитьт поставщику | 1h | 2023-10-31 09:00 A | 2023-10-31 10:00 A |  | 100% |  | start no earlier than 2023-10-31 09:00 | Лобанов И | 1h | 1h |
| 697 | 1.317.2 | контроль возврата | 1h | 2026-08-31 09:00 A | 2026-08-31 10:00 A | 696 | 100% |  | start no earlier than 2026-08-31 09:00 | Зорькин В | 1h | 1h |
| 698 | 1.318 | **убрать кабеля с пола на упаковке 1 цех** | 0.02d | 2026-09-01 09:00 | 2026-09-01 09:10 |  |  | 137.57d |  |  | 0.17h |  |
| 699 | 1.318.1 | проверить на актуальность | 10min | 2026-09-01 09:00 | 2026-09-01 09:10 |  |  | 137.57d | start no earlier than 2026-09-01 09:00 | Зорькин В | 0.17h |  |
| 700 | 1.319 | режет металлом изоляцию кабеля в прорходе стены в 1 цех угол комппрессора - обезвредить | 1h | 2023-12-28 09:00 A | 2023-12-28 10:00 A |  | 100% |  | start no earlier than 2023-12-28 09:00 | Бобренок В; Дедов В | 2h | 2h |
| 701 | 1.320 | **убрать кабеля с пола и заменить переноски штатными розетками - участок жира 1 цех** | 0.01d | 2026-09-01 09:00 | 2026-09-01 09:05 |  |  | 137.58d |  |  | 0.08h |  |
| 702 | 1.320.1 | проверить на актуальность | 5min | 2026-09-01 09:00 | 2026-09-01 09:05 |  |  | 137.58d | start no earlier than 2026-09-01 09:00 | Зорькин В | 0.08h |  |
| 703 | 1.321 | изготовить ключь для ТП | 2h | 2023-06-21 09:00 A | 2023-06-21 11:00 A |  | 100% |  | start no earlier than 2023-06-21 09:00 | Домоводов К | 2h | 2h |
| 704 | 1.322 | заменитьт автомат 63С кондиционер 1 цех | 1h | 2023-06-22 09:00 A | 2023-06-22 10:00 A |  | 100% |  | start no earlier than 2023-06-22 09:00 | Тимофеев В | 1h | 1h |
| 705 | 1.323 | **Барабаны 2 линия дражжировка** | 18d | 2026-04-21 09:00 A | 2026-05-14 18:00 A |  | 100% |  |  |  | 94.5h | 94.5h |
| 706 | 1.323.1 | Проработать модернизацию форсунок | 3h | 2026-04-22 09:00 A | 2026-04-22 12:00 A |  | 100% |  | start no earlier than 2026-04-22 09:00 | Зорькин В; Домоводов К | 6h | 6h |
| 707 | 1.323.2 | сделать заявку на доп форсунки, расходники | 30min | 2026-04-22 09:00 A | 2026-04-22 09:30 A |  | 100% |  | start no earlier than 2026-04-22 09:00 | Зорькин В | 0.5h | 0.5h |
| 708 | 1.323.3 | доставка | 10d | 2026-04-30 09:00 A | 2026-05-14 18:00 A |  | 100% |  | start no earlier than 2026-04-30 09:00 | Карабанов | 80h | 80h |
| 709 | 1.323.4 | Внедрение и монтаж | 2h | 2026-05-08 09:00 A | 2026-05-08 11:00 A |  | 100% |  | start no earlier than 2026-05-08 09:00 | Зорькин В; Тимофеев В | 4h | 4h |

| ID | WBS | Task | Type | Duration | Start | Finish | Predecessors | Complete | Remaining | Actual start | Actual finish | Total slack | Constraint | Resources | Work | Actual work |
| --- | --- | --- | --- | --- | --- | --- | --- | --- | --- | --- | --- | --- | --- | --- | --- | --- |
| 710 | 1.323.5 | **Парогенератор** |  | 0.25d | 2026-04-21 09:00 A | 2026-04-21 11:00 A |  | 100% |  |  |  |  |  |  | 4h | 4h |
| 711 | 1.323.5.1 | Проверить термадатчик (панельтемпературы) TC4R на корректность работы, скачет температура, по необходимости заменить |  | 2h | 2026-04-21 09:00 A | 2026-04-21 11:00 A |  | 100% |  |  |  |  | start no earlier than 2026-04-21 08:00 | Бундин В; Зорькин В | 4h | 4h |
| 712 | 1.324 | **Звонок на экструдер** |  | 14.12d | 2026-04-07 09:00 A | 2026-04-27 10:00 A |  | 100% |  |  |  |  |  |  | 6h | 6h |
| 713 | 1.324.1 | Протяжка кабеля от ворот к экструдерщикам |  | 4h | 2026-04-07 09:00 A | 2026-04-07 13:00 A |  | 100% |  |  |  |  | start no earlier than 2026-04-22 09:00 | Дедов В | 4h | 4h |
| 714 | 1.324.2 | монтаж звонка |  | 1h | 2026-04-25 09:00 A | 2026-04-27 10:00 A | 713 | 100% |  |  |  |  | start no earlier than 2026-04-25 09:00 | Дедов В | 1h | 1h |
| 715 | 1.324.3 | монтаж кнопки за воротами |  | 1h | 2026-04-25 10:00 A | 2026-04-27 10:00 A | 714 | 100% |  |  |  |  | start no earlier than 2026-04-21 08:00 | Дедов В | 1h | 1h |
| 716 | 1.325 | **Насос гидролизата** |  | 28.01d | 2026-08-04 09:00 A | 2026-09-10 09:05 |  | 80% | 5.6d |  |  | 129.58d |  |  | 0.42h | 0.33h |
| 717 | 1.325.1 | Заказать ремкомплект шнек, резинка, трубка, связаться с производителем |  | 20min | 2026-08-04 09:00 A | 2026-08-04 09:20 A |  | 100% |  |  |  |  | start no earlier than 2026-08-04 09:00 | Зорькин В | 0.33h | 0.33h |
| 718 | 1.325.2 | Доставка контроль сам насос шетсрен |  | 5min | 2026-09-10 09:00 | 2026-09-10 09:05 |  |  |  |  |  | 129.58d | start no earlier than 2026-09-10 09:00 | Зорькин В | 0.08h |  |
| 719 | 1.326 | **Дражжировка конвейер №1 после печки** |  | 103.12d | 2026-04-22 08:00 A | 2026-09-11 10:00 |  | 92% | 7.88d |  |  | 128.47d |  |  | 13.08h | 12.08h |
| 720 | 1.326.1 | Поставить резьбовые клепки на боковой кожух, где кончается лента |  | 1h | 2026-09-11 09:00 | 2026-09-11 10:00 |  |  |  |  |  | 128.47d | start no earlier than 2026-09-11 09:00 | Тимофеев В | 1h |  |
| 721 | 1.326.2 | Ремонт насоса от 2 линии 1 цех, статор взять на складе |  | 2h | 2026-09-10 09:00 A | 2026-09-10 11:00 A |  | 100% |  |  |  |  | start no earlier than 2026-09-10 09:00 | Некрасов А | 2h | 2h |
| 722 | 1.326.3 | контроль героторная пара оплата |  | 5min | 2026-08-21 09:00 A | 2026-08-21 09:05 A |  | 100% |  |  |  |  | start no earlier than 2026-08-21 09:00 | Зорькин В | 0.08h | 0.08h |
| 723 | 1.326.4 | Замена сальника на поворотном столе/проверить |  | 1h | 2026-07-23 09:00 A | 2026-07-23 10:00 A |  | 100% |  |  |  |  | start no earlier than 2026-07-23 08:00 | Бундин В | 1h | 1h |
| 724 | 1.326.5 | **дражжировка** |  | 0.62d | 2026-04-22 08:00 A | 2026-04-22 15:00 A |  | 100% |  |  |  |  |  |  | 9h | 9h |
| 725 | 1.326.5.1 | Установка рамы для фильтров |  | 3h | 2026-04-22 08:00 A | 2026-04-22 12:00 A |  | 100% |  |  |  |  | start no earlier than 2026-04-22 08:00 | Тимофеев В | 3h | 3h |
| 726 | 1.326.5.2 | установка счетчика |  | 1h | 2026-04-22 11:00 A | 2026-04-22 12:00 A | 725 | 100% |  |  |  |  | start no earlier than 2026-04-22 08:00 | Тимофеев В | 1h | 1h |
| 727 | 1.326.5.3 | кронштейн под пульт расходомера |  | 2h | 2026-04-22 12:00 A | 2026-04-22 15:00 A | 726 | 100% |  |  |  |  | start no earlier than 2026-04-22 08:00 | Тимофеев В | 2h | 2h |
| 728 | 1.326.5.4 | **Парогенератор** |  | 0.38d | 2026-04-22 09:00 A | 2026-04-22 12:00 A |  | 100% |  |  |  |  |  |  | 3h | 3h |
| 729 | 1.326.5.4.1 | чистка парогенераторов 1 и 2 линия |  | 3h | 2026-04-22 09:00 A | 2026-04-22 12:00 A |  | 100% |  |  |  |  | start no earlier than 2026-04-22 08:00 | Бундин В | 3h | 3h |
| 730 | 1.327 | **отмена** |  | 70.75d? | 2026-04-22 09:00 | 2026-07-29 16:00 A |  | 100% |  | 2026-07-08 09:00 |  |  |  |  | 12.33h | 12.33h |
| 731 | 1.327.1 | **Парогенератор** |  | 27.5d? | 2026-04-22 09:00 | 2026-05-25 13:00 |  | 100% |  | 2026-07-08 09:00 | 2026-07-29 16:00 |  |  |  | 12.33h | 12.33h |
| 732 | 1.327.1.1 | Замена говротрубы 1 линия |  | 1h | 2026-07-08 09:00 A | 2026-07-08 10:00 A |  | 100% |  |  |  |  | start no earlier than 2026-07-08 09:00 | Бобренок В | 1h | 1h |
| 733 | 1.327.1.2 | Осмотр стоек где стоит реле давления до расширительного бачка |  | 30min | 2026-07-27 09:00 A | 2026-07-27 09:30 A |  | 100% |  |  |  |  | start no earlier than 2026-07-27 09:00 | Тимофеев В | 0.5h | 0.5h |
| 734 | 1.327.1.3 | Составить список материала для ремонта и изготовления стоек |  | 30min | 2026-07-27 09:30 A | 2026-07-27 10:00 A | 733 | 100% |  |  |  |  | start no earlier than 2026-05-27 09:00 | Тимофеев В | 0.5h | 0.5h |
| 735 | 1.327.1.4 | Заказать недостающий материал |  | 20min | 2026-07-27 09:00 A | 2026-07-27 09:20 A |  | 100% |  |  |  |  | start no earlier than 2026-07-27 09:00 | Зорькин В | 0.33h | 0.33h |
| 736 | 1.327.1.5 | Изготовление стоек |  | 3h | 2026-07-29 09:00 A | 2026-07-29 12:00 A | 734 | 100% |  |  |  |  | start no earlier than 2026-07-29 09:00 | Некрасов А | 3h | 3h |
| 737 | 1.327.1.6 | Замена стойки под реле давления |  | 3h | 2026-07-29 12:00 A | 2026-07-29 16:00 A | 736 | 100% |  |  |  |  | start no earlier than 2026-05-27 09:00 | Некрасов А | 3h | 3h |
| 738 | 1.327.1.7 | Составить список материалов или заключение по 2-м частотникам из 1 цеха от теко 0,4 (поворотный стол и конвейер) |  | 1h | 2026-07-27 08:00 A | 2026-07-27 10:00 A |  | 100% |  |  |  |  | start no earlier than 2026-07-27 08:00 | Дедов В | 1h | 1h |
| 739 | 1.327.1.8 | Взять трубку в нашем кабинете и насверлить по всей длине симметрично отверстия самым маленьким сверлом которое у нас есть (по этому заданию позвонить) |  | 3h | 2026-07-28 08:00 A | 2026-07-28 12:00 A |  | 100% |  |  |  |  | start no earlier than 2026-07-28 08:00 | Макаревич А | 3h | 3h |
| 740 | 1.328 | Демонтаж разборка/сборка редукторы шлюз. Питателей циклона 1 и 2 линия | manual | 3h | 2026-04-24 09:00 A | 2026-04-24 12:00 A |  | 100% |  |  |  |  | start no earlier than 2026-04-24 09:00 | Бундин В | 3h | 3h |

| ID | WBS | Task | Type | Duration | Start | Finish | Predecessors | Complete | Remaining | Actual start | Total slack | Constraint | Resources | Work | Actual work |
| --- | --- | --- | --- | --- | --- | --- | --- | --- | --- | --- | --- | --- | --- | --- | --- |
| 741 | 1.329 | **Теко 0,4** |  | 0.38d | 2026-04-03 09:00 A | 2026-04-03 12:00 A |  | 100% |  |  |  |  |  | 3h | 3h |
| 742 | 1.329.1 | замена ковшей | manual | 3h | 2026-04-03 09:00 A | 2026-04-03 12:00 A |  | 100% |  |  |  | start no earlier than 2026-04-03 09:00 | Макаревич А | 3h | 3h |
| 743 | 2 | **2 цех** |  | 249d? | 2023-11-16 09:00 | 2024-10-29 18:00 |  | 87% | 32.36d? | 2024-01-08 09:00 |  |  |  | 2855.5h | 2483.08h |
| 744 | 2.1 | ревищия сливной шланг моечная машинка |  | 1h | 2026-09-09 09:00 | 2026-09-09 10:00 |  |  |  |  | 130.47d | start no earlier than 2026-09-09 08:00 | Бобренок В | 1h |  |
| 745 | 2.2 | Проверка системы под давлением, при необходимости заменить шланги на пневматические |  | 1h | 2026-09-09 09:00 | 2026-09-09 10:00 |  |  |  |  | 130.47d | start no earlier than 2026-09-09 08:00 | Тимофеев В | 1h |  |
| 746 | 2.3 | Установить трубку на жирах, которую сделал викторович |  | 30min | 2026-09-09 09:00 | 2026-09-09 09:30 |  |  |  |  | 130.53d | start no earlier than 2026-09-09 08:00 | Тимофеев В | 0.5h |  |
| 747 | 2.4 | **реверс теплоносителя в приточном калорифере** |  | 18.04d? | 2026-08-24 09:00 A | 2026-09-16 09:20 |  | 3% | 17.51d? |  | 125.55d |  |  | 8.5h | 0.25h |
| 748 | 2.4.1 | заявка |  | 15min | 2026-08-24 09:00 A | 2026-08-24 09:15 A |  | 100% |  |  |  | start no earlier than 2026-08-24 09:00 | Зорькин В | 0.25h | 0.25h |
| 749 | 2.4.2 | контроль доставки |  | 15min | 2026-09-16 09:05 | 2026-09-16 09:20 | 965FS+5d |  |  |  | 125.55d | start no earlier than 2026-09-09 09:00 | Зорькин В | 0.25h |  |
| 750 | 2.4.3 | монтаж |  | 1d? | 2026-09-14 11:00 | 2026-09-15 11:00 | 966FS+1d |  |  |  | 126.34d | start no earlier than 2026-09-08 08:00 | Тимофеев В | 8h |  |
| 751 | 2.5 | востановить потерю токов в печи / ревизия . Замена тенов |  | 4h | 2026-09-09 09:00 | 2026-09-09 13:00 |  |  |  |  | 130.09d | start no earlier than 2026-09-09 09:00 | Бобренок В | 4h |  |
| 752 | 2.6 | Смазка подшипников привода охладителя | manual | 1h | 2026-09-09 09:00 | 2026-09-09 10:00 |  |  |  |  |  |  | Бобренок В | 1h |  |
| 753 | 2.7 | Обрезать пенку пвх на двери в охладителе ,сделать ее ровной |  | 1h | 2026-09-07 09:00 A | 2026-09-07 10:00 A |  | 100% |  |  |  | start no earlier than 2026-09-05 09:00 | Макаревич А | 1h | 1h |
| 754 | 2.8 | Переборка парогенератора, поиск неисправности (подключили перемычку между реле времени) |  | 4h | 2026-09-02 09:00 A | 2026-09-02 13:00 A |  | 100% |  |  |  | start no earlier than 2026-09-02 09:00 | Бобренок В | 4h | 4h |
| 755 | 2.9 | **Дражжировка** |  | 6.12d | 2026-09-03 09:00 A | 2026-09-10 10:00 |  | 54% | 2.83d |  | 129.47d |  |  | 3.17h | 1.67h |
| 756 | 2.9.1 | **Подготовить электрическую часть для подключения второго насоса без частотника (продолжаем эту задачу)** |  | 1.12d | 2026-09-09 09:00 A | 2026-09-10 10:00 |  | 50% | 0.56d |  | 129.47d |  | Тимофеев В | 3h | 1.5h |
| 757 | 2.9.1.1 | установить на линию доп насос (резервный) |  | 1h | 2026-09-10 09:00 A | 2026-09-10 10:00 A |  | 100% |  |  |  | start no earlier than 2026-09-10 09:00 | Тимофеев В | 1h | 1h |
| 758 | 2.9.1.2 | монтаж |  | 1h | 2026-09-09 09:00 | 2026-09-09 10:00 |  |  |  |  | 130.47d | start no earlier than 2026-09-09 09:00 | Тимофеев В | 1h |  |
| 759 | 2.9.2 | Подумать место установки автомата |  | 10min | 2026-09-03 09:00 A | 2026-09-03 09:10 A |  | 100% |  |  |  | start no earlier than 2026-09-03 09:00 | Тимофеев В | 0.17h | 0.17h |
| 760 | 2.10 | Ремонт парогенератора, замена реле давления + отвалился контакт + замена мембраны |  | 1h | 2026-09-02 09:00 A | 2026-09-02 10:00 A |  | 100% |  |  |  | start no earlier than 2026-09-02 08:00 | Труфанов А | 1h | 1h |
| 761 | 2.11 | Замена редуктора на печи |  | 2h | 2026-09-01 09:00 A | 2026-09-01 11:00 A |  | 100% |  |  |  | start no earlier than 2026-09-01 09:00 | Бундин В | 2h | 2h |
| 762 | 2.12 | проверка котлов на приточку (замена клапана и тена на большую мощность) | manual | 2h | 2026-09-07 09:00 A | 2026-09-07 11:00 A |  | 100% |  |  |  | start no earlier than 2026-09-07 09:00 | Дедов В | 2h | 2h |
| 763 | 2.13 | проверка всех котлов на отопление по цеху | manual | 4h | 2026-08-30 09:00 A | 2026-08-30 13:00 A |  | 100% |  |  |  | start no earlier than 2026-08-30 09:00 | Дедов В | 4h | 4h |
| 764 | 2.14 | закрепить коробку двери снизу (возле ШУ приточка 2 этаж) |  | 2h | 2026-08-28 09:00 A | 2026-08-28 11:00 A |  | 100% |  |  |  | start no earlier than 2026-08-28 09:00 | Макаревич А | 2h | 2h |

| ID | WBS | Task | Type | Duration | Start | Finish | Predecessors | Complete | Remaining | Total slack | Free slack | Constraint | Resources | Work | Actual work |
| --- | --- | --- | --- | --- | --- | --- | --- | --- | --- | --- | --- | --- | --- | --- | --- |
| 765 | 2.15 | **заменить фильтры на воду в цехе (проверить мембрану на гидроаккумуляторе)** |  | 1d? | 2026-08-28 09:00 A | 2026-08-28 18:00 A |  | 100% |  |  |  |  | Бобренок В | 16h | 16h |
| 766 | 2.15.1 | заказать фильтры |  | 1d? | 2026-08-28 09:00 A | 2026-08-28 18:00 A |  | 100% |  |  |  | start no earlier than 2026-08-28 09:00 | Шуранов Ю | 8h | 8h |
| 767 | 2.16 | монтаж и подключение розетки для кондиционера в кабинет ОТК |  | 2h | 2026-08-26 08:00 A | 2026-08-26 11:00 A |  | 100% |  |  |  | start no earlier than 2026-08-26 08:00 | Бобренок В | 2h | 2h |
| 768 | 2.17 | сливной шланг от кондиционеров наш кабинет и Шелепова спрятать в кабель канал 30х25 (он на складе) |  | 2h | 2026-08-26 08:00 A | 2026-08-26 11:00 A |  | 100% |  |  |  | start no earlier than 2026-08-26 08:00 | Бобренок В | 2h | 2h |
| 769 | 2.18 | сливной шланг от кондиционеров кабинет Сапелина спрятать в кабель канал 30х25 (он на складе) с 10 до 11ч |  | 1h | 2026-08-31 09:00 A | 2026-08-31 10:00 A |  | 100% |  |  |  | start no earlier than 2026-08-31 09:00 | Тимофеев В | 1h | 1h |
| 770 | 2.19 | замерить токи на оборудование (таблица в слесарке) |  | 3h | 2026-08-27 09:00 A | 2026-08-27 12:00 A |  | 100% |  |  |  | start no earlier than 2026-08-27 09:00 | Бобренок В | 3h | 3h |
| 771 | 2.20 | **дренаж кондиционеров жир и упаковка установить отдельный насос от жиров** |  | 24.06d | 2026-08-24 09:00 A | 2026-09-24 09:30 A |  | 100% |  |  |  |  |  | 122.5h | 122.5h |
| 772 | 2.20.1 | заявка насос |  | 30min | 2026-08-24 09:00 A | 2026-08-24 09:30 A |  | 100% |  |  |  | start no earlier than 2026-08-24 09:00 | Шуранов Ю | 0.5h | 0.5h |
| 773 | 2.20.2 | контроль доставка |  | 15d | 2026-09-02 09:30 A | 2026-09-24 09:30 A | 772FS+7d | 100% |  |  |  | start no earlier than 2026-08-20 09:00 | Зорькин В | 120h | 120h |
| 774 | 2.20.3 | Разорвать контур от насоса и сделать слив в раковину | manual | 1h | 2026-09-01 09:00 A | 2026-09-01 10:00 A | 773FS+1d | 100% |  |  |  | start no earlier than 2026-09-01 09:00 | Некрасов А; Тимофеев В | 2h | 2h |
| 775 | 2.21 | **бетонирование крыльцо вход в 2ц** |  | 0.02d | 2026-08-31 09:00 | 2026-08-31 09:10 |  |  |  | 138.57d |  |  |  | 0.17h |  |
| 776 | 2.21.1 | заявка Олегу |  | 10min | 2026-08-31 09:00 | 2026-08-31 09:10 |  |  |  | 138.57d |  | start no earlier than 2026-08-31 09:00 | Шуранов Ю | 0.17h |  |
| 777 | 2.22 | течь кондиционер жиры - контроль работы слива |  | 30min | 2026-08-31 09:00 A | 2026-08-31 09:30 A |  | 100% |  |  |  | start no earlier than 2026-08-31 09:00 | Тимофеев В | 0.5h | 0.5h |
| 778 | 2.23 | контроль замена фитинги или трубки жир, устранить возможность произвольного срыва |  | 30min | 2026-09-01 09:00 A | 2026-09-01 09:30 A |  | 100% |  |  |  | start no earlier than 2026-09-03 09:00 | Некрасов А; Шуранов Ю | 1h | 1h |
| 779 | 2.24 | **разгрузка синего накопителя, в реверс шнек + окно** |  | 5.12d | 2026-08-20 09:00 A | 2026-08-27 10:00 A |  | 100% |  |  |  |  |  | 4h | 4h |
| 780 | 2.24.1 | выполнить люк в шнеке: вырезать окно, крепеж на шарнир + притвор с уплотнением + застежка | milestone | 0h | 2026-08-20 09:00 A | 2026-08-20 09:00 A |  | 100% |  |  |  | start no earlier than 2026-08-20 09:00 | Некрасов А; Тимофеев В |  |  |
| 781 | 2.24.2 | быстросъемное крепление |  | 1h | 2026-08-27 09:00 A | 2026-08-27 10:00 A |  | 100% |  |  |  | start no earlier than 2026-08-27 09:00 | Тимофеев В | 1h | 1h |
| 782 | 2.24.3 | изготовление фланца + труба для крепления гофротрубы ф250 |  | 3h | 2026-08-24 09:00 A | 2026-08-24 12:00 A |  | 100% |  |  |  | start no earlier than 2026-08-24 09:00 | Некрасов А | 3h | 3h |
| 783 | 2.25 | перенос розетка на стену инсекютер корридор у ОТК |  | 1h | 2026-08-15 09:00 A | 2026-08-17 10:00 A |  | 100% |  |  |  | start no earlier than 2026-08-15 09:00 | Бундин В | 1h | 1h |
| 784 | 2.26 | перенос инсекютер ниже на фасовке, для возможности доступа операторами |  | 1h | 2026-09-10 09:00 | 2026-09-10 10:00 |  |  |  | 129.47d |  | start no earlier than 2026-09-10 09:00 | Бундин В | 1h |  |
| 785 | 2.27 | изготовить лопатку для датчика сырья, что бы было 2-4 лопасти и ниже на 5-10см |  | 2h | 2026-08-13 09:00 A | 2026-08-13 11:00 A |  | 100% |  |  |  | start no earlier than 2026-08-13 09:00 | Макаревич А | 2h | 2h |
| 786 | 2.28 | прикрепить план увакуации на место (зона отстоя навесок, стенка мойки) |  | 30min | 2026-08-12 09:00 A | 2026-08-12 09:30 A |  | 100% |  |  |  | start no earlier than 2026-08-12 09:00 | Макаревич А | 0.5h | 0.5h |
| 787 | 2.29 | ремонт ручка в экструдер 2ц |  | 1h | 2026-08-14 09:00 A | 2026-08-14 10:00 A |  | 100% |  |  |  | start no earlier than 2026-08-14 09:00 | Труфанов А | 1h | 1h |
| 788 | 2.30 | **установить сифон ф110 в линию слива жиров** |  | 23.31d | 2026-08-12 09:00 A | 2026-09-11 11:30 |  | 29% | 16.65d | 128.28d |  |  |  | 3.5h | 1h |
| 789 | 2.30.1 | заявка на сифон, планирование монтаж |  | 1h | 2026-08-12 09:00 A | 2026-08-12 10:00 A |  | 100% |  |  |  | start no earlier than 2026-08-12 09:00 | Зорькин В | 1h | 1h |
| 790 | 2.30.2 | возможно ли убрать сифоны ф50, достаточно ли заслонки без гидрозатвора? Как сделать гидрозатвор ф100 |  | 15min | 2026-09-10 09:00 | 2026-09-10 09:15 |  |  |  | 128.28d | 0d | start no earlier than 2026-09-10 09:00 | Труфанов А | 0.25h |  |
| 791 | 2.30.3 | решение | milestone | 0d | 2026-09-11 09:15 | 2026-09-11 09:15 | 790FS+1d |  |  | 128.28d | 0d | start no earlier than 2026-09-08 08:00 | Зорькин В |  |  |
| 792 | 2.30.4 | контроль доставка |  | 15min | 2026-09-11 09:15 | 2026-09-11 09:30 | 789FS+7d, 791 |  |  | 128.28d | 0d | start no earlier than 2026-08-31 09:00 | Зорькин В | 0.25h |  |
| 793 | 2.30.5 | монтаж |  | 2h | 2026-09-11 09:30 | 2026-09-11 11:30 | 792 |  |  | 128.28d |  | start no earlier than 2026-09-07 09:00 | Бобренок В | 2h |  |

| ID | WBS | Task | Duration | Start | Finish | Predecessors | Complete | Remaining | Total slack | Free slack | Constraint | Resources | Work | Actual work |
| --- | --- | --- | --- | --- | --- | --- | --- | --- | --- | --- | --- | --- | --- | --- |
| 794 | 2.31 | **установить инсекютер дополнительный на экструдер** | 20.38d | 2026-08-21 09:00 A | 2026-09-17 12:00 |  | 7% | 18.92d | 124.22d |  |  |  | 3.5h | 0.25h |
| 795 | 2.31.1 | заявка инстекютер | 15min | 2026-08-21 09:00 A | 2026-08-21 09:15 A |  | 100% |  |  |  | start no earlier than 2026-08-21 09:00 | Зорькин В | 0.25h | 0.25h |
| 796 | 2.31.2 | контроль доставки | 15min | 2026-09-09 09:00 | 2026-09-09 09:15 | 795FS+7d |  |  | 129.19d | 4.97d | start no earlier than 2026-09-09 09:00 | Зорькин В | 0.25h |  |
| 797 | 2.31.3 | монтаж розетка / кабель | 3h | 2026-09-17 09:00 | 2026-09-17 12:00 | 796FS+1d |  |  | 124.22d |  | start no earlier than 2026-09-17 09:00 | Тимофеев В | 3h |  |
| 798 | 2.32 | маркировка канистры гидролизата - передать на время гровер нач цеха 2 | 20min | 2026-08-11 09:00 A | 2026-08-11 09:20 A |  | 100% |  |  |  | start no earlier than 2026-08-11 09:00 | Бобренок В | 0.33h | 0.33h |
| 799 | 2.33 | **ограждение мусорного контейнера у 2ц** | 14.34d | 2026-08-31 09:00 A | 2026-09-17 11:45 |  | 8% | 13.2d | 124.25d |  |  |  | 34.75h | 1.5h |
| 800 | 2.33.1 | схема размещения | 1h | 2026-08-31 09:00 A | 2026-08-31 10:00 A |  | 100% |  |  |  | start no earlier than 2026-08-31 09:00 | Зорькин В | 1h | 1h |
| 801 | 2.33.2 | контроль остатков материала - каркас + обшивка стен | 30min | 2026-08-31 10:00 A | 2026-08-31 10:30 A | 800 | 100% |  |  |  | start no earlier than 2026-08-14 09:00 | Зорькин В | 0.5h | 0.5h |
| 802 | 2.33.3 | заявка материал / лист | 1h | 2026-09-01 10:30 | 2026-09-01 11:30 | 801FS+1d |  |  | 124.25d | 0d | start no earlier than 2026-08-10 08:00 | Зорькин В | 1h |  |
| 803 | 2.33.4 | контроль поставка | 15min | 2026-09-14 11:30 | 2026-09-14 11:45 | 802FS+10d |  |  | 124.25d | 0d | start no earlier than 2026-08-10 08:00 | Зорькин В | 0.25h |  |
| 804 | 2.33.5 | монтаж каркас + обшивка | 2d | 2026-09-15 11:45 | 2026-09-17 11:45 | 803FS+1d |  |  | 124.25d |  | start no earlier than 2026-08-10 08:00 | Некрасов А; Тимофеев В | 32h |  |
| 805 | 2.34 | **установить кондиционер контролерам ОТК в 2ц** | 7.38d | 2026-08-19 09:00 A | 2026-08-28 12:00 A |  | 100% |  |  |  |  |  | 7.5h | 7.5h |
| 806 | 2.34.1 | оапата счет контроль | 15min | 2026-08-19 09:00 A | 2026-08-19 09:15 A |  | 100% |  |  |  | start no earlier than 2026-08-19 09:00 | Домоводов К | 0.25h | 0.25h |
| 807 | 2.34.2 | длоставка контроль | 15min | 2026-08-24 09:15 A | 2026-08-24 09:30 A | 806FS+4d | 100% |  |  |  | start no earlier than 2026-08-17 09:00 | Домоводов К | 0.25h | 0.25h |
| 808 | 2.34.3 | монтаж | 4h | 2026-08-24 09:30 A | 2026-08-24 14:30 A | 807 | 100% |  |  |  | start no earlier than 2026-08-10 08:00 | оплот | 4h | 4h |
| 809 | 2.34.4 | монтаж крозетка | 3h | 2026-08-28 09:00 A | 2026-08-28 12:00 A | 808FS-1d | 100% |  |  |  | start no earlier than 2026-08-28 09:00 | Бобренок В | 3h | 3h |
| 810 | 2.35 | **усиление подогрев приточной вентиляции** | 34.53d? | 2026-08-17 09:00 A | 2026-10-01 14:15 |  | 25% | 26.03d? | 114.06d |  |  |  | 16.25h | 4h |
| 811 | 2.35.1 | планирование мощности для приточная вент до 200 квт + тепл завесы | 4h | 2026-08-17 09:00 A | 2026-08-17 13:00 A |  | 100% |  |  |  | start no earlier than 2026-08-17 09:00 | Домоводов К | 4h | 4h |
| 812 | 2.35.2 | заявка доп котлы + автоматика | 4h | 2026-09-16 09:00 | 2026-09-16 13:00 | 811FS+1d |  |  | 114.06d | 0d | start no earlier than 2026-09-16 09:00 | Домоводов К | 4h |  |
| 813 | 2.35.3 | контроль поствки | 15min | 2026-09-30 14:00 | 2026-09-30 14:15 | 812FS+10d |  |  | 114.06d | 0d | start no earlier than 2026-08-10 08:00 | Зорькин В | 0.25h |  |
| 814 | 2.35.4 | монтаж | 1d? | 2026-09-30 14:15 | 2026-10-01 14:15 | 813 |  |  | 114.06d |  | start no earlier than 2026-08-10 08:00 | Некрасов А | 8h |  |
| 815 | 2.36 | собрать 4 стула и тумбочку. Находятся у мастера | 4h | 2026-08-10 08:00 A | 2026-08-10 13:00 A |  | 100% |  |  |  | start no earlier than 2026-08-10 08:00 | Бобренок В | 4h | 4h |
| 816 | 2.37 | кабель к вентилятору печи примыкание гофры к трубе выполнить без пустот фото Фадеевой | 1h | 2026-08-11 09:00 A | 2026-08-11 10:00 A |  | 100% |  |  |  | start no earlier than 2026-08-11 09:00 | Бобренок В | 1h | 1h |
| 817 | 2.38 | закрыить все эл щщитки на ключь | 1h | 2026-08-10 08:00 A | 2026-08-10 10:00 A |  | 100% |  |  |  | start no earlier than 2026-08-10 08:00 | Бобренок В | 1h | 1h |
| 818 | 2.39 | установить отбойник склад навесок, стена мойки | 1h | 2026-08-10 08:00 A | 2026-08-10 10:00 A |  | 100% |  |  |  | start no earlier than 2026-08-10 08:00 | Бобренок В | 1h | 1h |

| ID | WBS | Task | Type | Duration | Start | Finish | Predecessors | Complete | Remaining | Total slack | Free slack | Constraint | Resources | Work | Actual work |
| --- | --- | --- | --- | --- | --- | --- | --- | --- | --- | --- | --- | --- | --- | --- | --- |
| 819 | 2.40 | **обеспечить не менее +15 зимой в зоне хранения навесок** |  | 55.34d? | 2026-08-04 09:00 A | 2026-10-19 11:45 |  | 19% | 44.85d? | 102.25d |  |  |  | 38.25h | 7.25h |
| 820 | 2.40.1 | **утепление стены** |  | 14.16d? | 2026-09-01 09:00 A | 2026-09-18 10:15 |  |  | 14.16d? | 123.44d |  |  |  | 9.25h |  |
| 821 | 2.40.1.1 | расчет количство утеплителя + профлист/саморезы. Заявка |  | 1h | 2026-09-09 09:00 | 2026-09-09 10:00 |  |  |  | 123.44d | 0d | start no earlier than 2026-09-09 09:00 | Зорькин В | 1h |  |
| 822 | 2.40.1.2 | получить цену / решение о тепловой завесе | milestone | 0d | 2026-09-01 09:00 A | 2026-09-01 09:00 A |  | 100% |  |  |  | start no earlier than 2026-09-01 09:00 | Домоводов К |  |  |
| 823 | 2.40.1.3 | контроль даты доставки |  | 15min | 2026-09-16 10:00 | 2026-09-16 10:15 | 821FS+5d |  |  | 123.44d | 0d | start no earlier than 2026-08-27 08:00 | Зорькин В | 0.25h |  |
| 824 | 2.40.1.4 | монтаж |  | 1d? | 2026-09-17 10:15 | 2026-09-18 10:15 | 823FS+1d |  |  | 123.44d |  | start no earlier than 2026-08-27 08:00 | Некрасов А | 8h |  |
| 825 | 2.40.1.5 | решение об утеплении стены сравнить с затратами на тепловые завесы | milestone | 0h | 2026-09-01 09:00 | 2026-09-01 09:00 | 822, 841 |  |  | 116.25d | 14d | start no earlier than 2026-08-24 09:00 | Домоводов К |  |  |
| 826 | 2.40.2 | **кап ремонт стен зона хранения навесок. Промерзают** |  | 5.12d | 2026-08-04 09:00 A | 2026-08-11 10:00 A |  | 100% |  |  |  |  |  | 5h | 5h |
| 827 | 2.40.2.1 | установить листы на место склад навесо стена с эл щитком |  | 1h | 2026-08-11 09:00 A | 2026-08-11 10:00 A |  | 100% |  |  |  | start no earlier than 2026-08-11 09:00 | Тимофеев В | 1h | 1h |
| 828 | 2.40.2.2 | вскрытие стен дя составления плана работ. Демонтировать несколько листов в зоне промерзания (гдещиток) |  | 4h | 2026-08-04 09:00 A | 2026-08-04 13:00 A |  | 100% |  |  |  | start no earlier than 2026-08-04 09:00 | Тимофеев В | 4h | 4h |
| 829 | 2.40.3 | **тепловые завесы в 2ц зона подачи навесок** |  | 46.34d? | 2026-08-17 09:00 A | 2026-10-19 11:45 |  | 8% | 42.44d? | 102.25d |  |  |  | 23.75h | 2h |
| 830 | 2.40.3.1 | **монтаж теплокалориферов** |  | 20.34d? | 2026-09-21 09:00 | 2026-10-19 11:45 |  |  |  | 102.25d |  |  |  | 10.75h |  |
| 831 | 2.40.3.1.1 | заявка |  | 2h | 2026-09-21 09:00 | 2026-09-21 11:00 | 825FS+1d |  |  | 102.25d | 0d | start no earlier than 2026-09-21 09:00 | Домоводов К | 2h |  |
| 832 | 2.40.3.1.2 | контроль оплаты\ |  | 15min | 2026-09-23 11:00 | 2026-09-23 11:15 | 831FS+2d |  |  | 102.25d | 0d | start no earlier than 2026-09-07 09:00 | Зорькин В | 0.25h |  |
| 833 | 2.40.3.1.3 | контроль доставки |  | 15min | 2026-10-14 11:15 | 2026-10-14 11:30 | 832FS+15d |  |  | 102.25d | 0d | start no earlier than 2026-08-10 08:00 | Зорькин В | 0.25h |  |
| 834 | 2.40.3.1.4 | приемка |  | 15min | 2026-10-15 11:30 | 2026-10-15 11:45 | 833FS+1d |  |  | 102.25d | 0d | start no earlier than 2026-08-10 08:00 | Зорькин В | 0.25h |  |
| 835 | 2.40.3.1.5 | монтаж калориферов |  | 1d? | 2026-10-16 11:45 | 2026-10-19 11:45 | 834FS+1d |  |  | 102.25d |  | start no earlier than 2026-08-10 08:00 | Некрасов А | 8h |  |
| 836 | 2.40.3.2 | **монтаж кабель** |  | 29.38d? | 2026-08-17 09:00 A | 2026-09-24 12:00 |  | 15% | 24.86d? | 119.22d |  |  |  | 13h | 2h |
| 837 | 2.40.3.2.1 | планирование мощности |  | 2h | 2026-08-17 09:00 A | 2026-08-17 11:00 A |  | 100% |  |  |  | start no earlier than 2026-08-17 09:00 | Домоводов К | 2h | 2h |
| 838 | 2.40.3.2.2 | заявка кабель /щиток |  | 2h | 2026-09-15 09:00 | 2026-09-15 11:00 | 837 |  |  | 119.22d | 0d | start no earlier than 2026-09-15 09:00 | Домоводов К | 2h |  |
| 839 | 2.40.3.2.3 | контроль доставка |  | 1h | 2026-09-22 11:00 | 2026-09-22 12:00 | 838FS+5d |  |  | 119.22d | 0d | start no earlier than 2026-08-10 08:00 | Зорькин В | 1h |  |
| 840 | 2.40.3.2.4 | монтаж |  | 1d? | 2026-09-23 12:00 | 2026-09-24 12:00 | 839FS+1d |  |  | 119.22d |  | start no earlier than 2026-08-10 08:00 | Некрасов А | 8h |  |
| 841 | 2.40.4 | контроль достаточности если не крепить верхние саморезы |  | 15min | 2026-08-13 09:00 A | 2026-08-13 09:15 A |  | 100% |  |  |  | start no earlier than 2026-08-13 09:00 | Домоводов К | 0.25h | 0.25h |
| 842 | 2.41 | **дверь в мойку сделать герметичный притвор** |  | 1.25d | 2026-08-14 09:00 A | 2026-08-17 11:00 A |  | 100% |  |  |  |  |  | 2.33h | 2.33h |
| 843 | 2.41.1 | подбор уплотнителя / заказать |  | 20min | 2026-08-14 09:00 A | 2026-08-14 09:20 A |  | 100% |  |  |  | start no earlier than 2026-08-14 09:00 | Домоводов К | 0.33h | 0.33h |
| 844 | 2.41.2 | монтаж резинки на клей |  | 2h | 2026-08-16 09:00 A | 2026-08-17 11:00 A |  | 100% |  |  |  | start no earlier than 2026-08-16 09:00 | Бобренок В | 2h | 2h |

| ID | WBS | Task | Type | Duration | Start | Finish | Predecessors | Complete | Remaining | Total slack | Free slack | Constraint | Resources | Work | Actual work |
| --- | --- | --- | --- | --- | --- | --- | --- | --- | --- | --- | --- | --- | --- | --- | --- |
| 845 | 2.42 | **на дверь в мойку установить мощный доводчик** |  | 16.12d | 2026-08-21 09:00 A | 2026-09-11 10:00 |  | 30% | 11.27d | 128.47d |  |  |  | 6.08h | 1.83h |
| 846 | 2.42.1 | закрыть отверстие от ручки (заварить) |  | 30min | 2026-09-03 09:00 A | 2026-09-03 09:30 A |  | 100% |  |  |  | start no earlier than 2026-09-03 09:00 | Некрасов А | 0.5h | 0.5h |
| 847 | 2.42.2 | установить щетку для герметизации низа двери |  | 1h | 2026-08-28 09:00 A | 2026-08-28 10:00 A |  | 100% |  |  |  | start no earlier than 2026-08-28 09:00 | Макаревич А | 1h | 1h |
| 848 | 2.42.3 | заявка доводчик |  | 20min | 2026-08-21 09:00 A | 2026-08-21 09:20 A |  | 100% |  |  |  | start no earlier than 2026-08-21 09:00 | Зорькин В | 0.33h | 0.33h |
| 849 | 2.42.4 | контроль поставки |  | 15min | 2026-09-09 09:00 | 2026-09-09 09:15 | 848FS+5d |  |  | 129.31d | 0d | start no earlier than 2026-09-09 09:00 | Зорькин В | 0.25h |  |
| 850 | 2.42.5 | монтаж |  | 2h | 2026-09-10 09:15 | 2026-09-10 11:15 | 849FS+1d |  |  | 129.31d |  | start no earlier than 2026-09-07 09:00 | Бобренок В | 2h |  |
| 851 | 2.42.6 | установить ручку с защелкой -язычком |  | 1h | 2026-09-10 09:00 | 2026-09-10 10:00 |  |  |  | 129.47d |  | start no earlier than 2026-09-10 09:00 | Бундин В | 1h |  |
| 852 | 2.42.7 | Установить доводчик на дверь в мойку зона экструдера |  | 1h | 2026-09-11 09:00 | 2026-09-11 10:00 |  |  |  | 128.47d |  | start no earlier than 2026-09-11 09:00 | Бобренок В | 1h |  |
| 853 | 2.43 | **пролистыватель с апликтором заказ** |  | 34.03d? | 2026-08-10 09:00 A | 2026-09-24 09:15 |  | 12% | 29.82d? | 119.56d |  |  |  | 9.42h | 1.17h |
| 854 | 2.43.1 | получить договор + счет |  | 1h | 2026-08-10 09:00 A | 2026-08-10 10:00 A |  | 100% |  |  |  | start no earlier than 2026-08-10 08:00 | Зорькин В | 1h | 1h |
| 855 | 2.43.2 | **согласвоание договор** |  | 3.02d | 2026-08-12 09:00 A | 2026-08-17 09:10 A |  | 100% |  |  |  |  |  | 0.17h | 0.17h |
| 856 | 2.43.2.1 | подать договор |  | 5min | 2026-08-12 09:00 A | 2026-08-12 09:05 A |  | 100% |  |  |  | start no earlier than 2026-08-12 09:00 | Домоводов К | 0.08h | 0.08h |
| 857 | 2.43.2.2 | контроль |  | 5min | 2026-08-17 09:05 A | 2026-08-17 09:10 A | 856FS+5d | 100% |  |  |  | start no earlier than 2026-08-12 09:00 | Домоводов К | 0.08h | 0.08h |
| 858 | 2.43.3 | оплата подать счет | milestone | 0d | 2026-08-12 09:00 A | 2026-08-12 09:00 A |  | 100% |  |  |  | start no earlier than 2026-08-12 09:00 | Домоводов К |  |  |
| 859 | 2.43.4 | доставка конетроль |  | 15min | 2026-09-22 09:00 | 2026-09-22 09:15 | 858FS+30d |  |  | 119.56d | 0d | start no earlier than 2026-08-10 08:00 | Зорькин В | 0.25h |  |
| 860 | 2.43.5 | монтаж |  | 1d? | 2026-09-23 09:15 | 2026-09-24 09:15 | 859FS+1d |  |  | 119.56d |  | start no earlier than 2026-08-10 08:00 | Тимофеев В | 8h |  |
| 861 | 2.44 | **вентиляция мойка приточно-вытяжная 1ц 2 линия** |  | 9.19d | 2026-08-13 09:00 A | 2026-08-26 10:30 A |  | 100% |  |  |  |  |  | 20h | 20h |
| 862 | 2.44.1 | монтаж вытяжной трубы в колектор. После переноса вентиляторов отключен |  | 4h | 2026-08-17 09:00 A | 2026-08-17 13:00 A |  | 100% |  |  |  | start no earlier than 2026-08-16 09:00 | Бобренок В | 4h | 4h |
| 863 | 2.44.2 | составить проект |  | 4h | 2026-08-13 09:00 A | 2026-08-13 13:00 A |  | 100% |  |  |  | start no earlier than 2026-08-13 09:00 | Домоводов К | 4h | 4h |
| 864 | 2.44.3 | заявка материалы |  | 1h | 2026-08-24 09:00 A | 2026-08-24 10:00 A | 863FS+7d | 100% |  |  |  | start no earlier than 2026-08-24 09:00 | Зорькин В | 1h | 1h |
| 865 | 2.44.4 | контроль поставки |  | 30min | 2026-08-25 10:00 A | 2026-08-25 10:30 A | 864FS+1d | 100% |  |  |  | start no earlier than 2026-08-10 08:00 | Зорькин В | 0.5h | 0.5h |
| 866 | 2.44.5 | монтаж |  | 1d | 2026-08-25 10:30 A | 2026-08-26 10:30 A | 865 | 100% |  |  |  | start no earlier than 2026-08-10 08:00 | Некрасов А; Тимофеев В | 10.5h | 10.5h |
| 867 | 2.45 | **выполнить обрамление двери в охладитель, что бы скрыть поверхность** |  | 25.25d | 2026-08-14 09:00 A | 2026-09-17 11:00 |  | 50% | 12.62d | 124.34d |  |  |  | 4.5h | 2.25h |
| 868 | 2.45.1 | заказ декоративный уголок |  | 15min | 2026-08-14 09:00 A | 2026-08-14 09:15 A |  | 100% |  |  |  | start no earlier than 2026-08-14 09:00 | Домоводов К | 0.25h | 0.25h |
| 869 | 2.45.2 | контроль доставки |  | 15min | 2026-09-09 09:00 | 2026-09-09 09:15 | 868FS+5d |  |  | 130.56d |  | start no earlier than 2026-09-09 09:00 | Зорькин В | 0.25h |  |
| 870 | 2.45.3 | обить дверь в охладитель профлистом оцнк |  | 2h | 2026-09-17 09:00 | 2026-09-17 11:00 |  |  |  | 124.34d |  | start no earlier than 2026-09-17 09:00 | Некрасов А | 2h |  |
| 871 | 2.45.4 | монтаж |  | 2h | 2026-09-03 09:00 A | 2026-09-03 11:00 A | 869FS+1d | 100% |  |  |  | start no earlier than 2026-09-03 09:00 | Труфанов А | 2h | 2h |

| ID | WBS | Task | Type | Duration | Start | Finish | Predecessors | Complete | Remaining | Total slack | Constraint | Resources | Work | Actual work |
| --- | --- | --- | --- | --- | --- | --- | --- | --- | --- | --- | --- | --- | --- | --- |
| 872 | 2.46 | **ремонт осушителя компрессора 2ц** |  | 25.12d | 2026-08-09 09:00 A | 2026-09-11 10:00 |  | 90% | 2.56d | 128.47d |  |  | 11.08h | 9.08h |
| 873 | 2.46.1 | проверка давления фреона |  | 1h | 2026-09-11 09:00 | 2026-09-11 10:00 |  |  |  | 128.47d | start no earlier than 2026-09-11 09:00 | Труфанов А; Некрасов А | 2h |  |
| 874 | 2.46.2 | фото шильдик для поиск в продаже |  | 10min | 2026-08-11 09:00 A | 2026-08-11 09:10 A |  | 100% |  |  | start no earlier than 2026-08-11 09:00 | Некрасов А | 0.17h | 0.17h |
| 875 | 2.46.3 | связь с сервисным отделом получить дату |  | 1h | 2026-08-12 09:00 A | 2026-08-12 10:00 A |  | 100% |  |  | start no earlier than 2026-08-12 09:00 | Зорькин В | 1h | 1h |
| 876 | 2.46.4 | фото шильдик для поиск в продаже |  | 1h | 2026-08-12 09:00 A | 2026-08-12 10:00 A |  | 100% |  |  | start no earlier than 2026-08-12 09:00 | Зорькин В | 1h | 1h |
| 877 | 2.46.5 | слить конденсат с компрессора, чистка фильтров | manual | 3h | 2026-08-09 09:00 A | 2026-08-09 12:00 A |  | 100% |  |  | start no earlier than 2026-08-09 09:00 | Бобренок В | 3h | 3h |
| 878 | 2.46.6 | попробовать смазать подшипники вентилятора осушителя |  | 15min | 2026-08-18 09:00 A | 2026-08-18 09:15 A |  | 100% |  |  | start no earlier than 2026-08-18 09:00 | Некрасов А | 0.25h | 0.25h |
| 879 | 2.46.7 | замер размеров вентилятора |  | 15min | 2026-08-18 09:00 A | 2026-08-18 09:15 A |  | 100% |  |  | start no earlier than 2026-08-18 09:00 | Зорькин В; Некрасов А | 0.5h | 0.5h |
| 880 | 2.46.8 | подбор аналога вентилятора погабариту |  | 1h | 2026-08-18 09:15 A | 2026-08-18 10:15 A | 879 | 100% |  |  | start no earlier than 2026-08-14 09:00 | Зорькин В | 1h | 1h |
| 881 | 2.46.9 | заменить вентилятор на осушителе (от охладителя, лежит на компрессоре). В 6 утра остановка |  | 2h | 2026-08-19 09:00 A | 2026-08-19 11:00 A |  | 100% |  |  | start no earlier than 2026-08-19 09:00 | Бобренок В | 2h | 2h |
| 882 | 2.46.10 | Заявка в сервис не работает осушитель |  | 10min | 2026-08-31 09:00 A | 2026-08-31 09:10 A |  | 100% |  |  | start no earlier than 2026-08-31 09:00 | Зорькин В | 0.17h | 0.17h |
| 883 | 2.47 | установить защитные крышки на клемник вентиляторов охладителя. От 3д печать | manual | 4h | 2026-09-16 09:00 | 2026-09-16 13:00 |  |  |  |  | start no earlier than 2026-09-16 09:00 | Бобренок В | 4h |  |
| 884 | 2.48 | заменить резинки на красном баке (выдать, если будет остановка, поменять) | manual | 1h | 2026-08-31 09:00 A | 2026-08-31 10:00 A |  | 100% |  |  | start no earlier than 2026-08-31 09:00 | Бобренок В | 1h | 1h |
| 885 | 2.49 | на приемной горловине красного смесителя закрутить второй ленточный хомут, чтобы не выпадала мука |  | 1h | 2026-08-06 09:00 A | 2026-08-06 10:00 A |  | 100% |  |  | start no earlier than 2026-08-06 08:00 | Труфанов А | 1h | 1h |
| 886 | 2.50 | **закрутить болты на петлях двери печи** |  | 0.12d | 2026-09-02 09:00 A | 2026-09-02 10:00 A |  | 100% |  |  |  |  | 1h | 1h |
| 887 | 2.50.1 | попробовать закрутить на винтовые заклепки |  | 1h | 2026-09-02 09:00 A | 2026-09-02 10:00 A |  | 100% |  |  | start no earlier than 2026-09-04 09:00 | Некрасов А | 1h | 1h |
| 888 | 2.51 | установка фильтров на подачу жира (осн. + резерв) |  | 2h | 2026-08-06 08:00 A | 2026-08-06 11:00 A |  | 100% |  |  | start no earlier than 2026-08-06 08:00 | Тимофеев В | 2h | 2h |
| 889 | 2.52 | эксперимент с лейкой подача жиров |  | 1h | 2026-08-06 08:00 A | 2026-08-06 10:00 A |  | 100% |  |  | start no earlier than 2026-08-06 08:00 | Тимофеев В | 1h | 1h |
| 890 | 2.53 | **по аналогии второй линии насверлить сверлом 1 мм отверстия в трубке для жиров** |  | 0.12d | 2026-08-06 09:00 A | 2026-08-06 10:00 A |  | 100% |  |  |  | Макаревич А | 2h | 2h |
| 891 | 2.53.1 | установка трубки на жиры |  | 1h | 2026-08-06 09:00 A | 2026-08-06 10:00 A |  | 100% |  |  | start no earlier than 2026-08-06 09:00 | Тимофеев В | 1h | 1h |
| 892 | 2.54 | поломоечная машинка вырезать из силикона шторку захвата воды |  | 2h | 2026-08-03 08:00 A | 2026-08-03 11:00 A |  | 100% |  |  | start no earlier than 2026-08-03 08:00 | Бобренок В | 2h | 2h |
| 893 | 2.55 | **втулка фторопласт заказать 26х44х5** |  | 1d? | 2026-08-04 09:00 A | 2026-08-04 18:00 A |  | 100% |  |  |  | Шуранов Ю | 8h | 8h |
| 894 | 2.55.1 | счет доставка |  | 1d? | 2026-08-04 09:00 A | 2026-08-04 18:00 A |  | 100% |  |  | start no earlier than 2026-08-04 08:00 |  |  |  |
| 895 | 2.56 | **посмотреть вентилятор Сапелина у нас в кабинете (не работает)** |  | 1d? | 2026-08-04 09:00 A | 2026-08-04 18:00 A |  | 100% |  |  |  | Бобренок В | 8h | 8h |
| 896 | 2.56.1 | сгорел двигатель |  | 1d? | 2026-08-04 09:00 A | 2026-08-04 18:00 A |  | 100% |  |  | start no earlier than 2026-08-04 08:00 |  |  |  |
| 897 | 2.57 | слить конденсат с компрессора |  | 0.5h | 2026-08-02 09:00 A | 2026-08-03 09:30 A |  | 100% |  |  | start no earlier than 2026-08-02 09:00 | Бобренок В | 0.5h | 0.5h |

| ID | WBS | Task | Type | Duration | Start | Finish | Predecessors | Complete | Actual start | Actual finish | Constraint | Resources | Work | Actual work |
| --- | --- | --- | --- | --- | --- | --- | --- | --- | --- | --- | --- | --- | --- | --- |
| 898 | 2.58 | **продолжить изготовление приемной горловины по аналогии 3 ц.** |  | 4h? | 2026-08-10 09:00 | 2026-08-10 13:00 |  | 100% | 2026-07-29 09:00 | 2026-09-04 11:00 |  |  | 14.08h | 14.08h |
| 899 | 2.58.1 | заказать прут нерж. |  | 1d? | 2026-07-29 09:00 A | 2026-07-29 18:00 A |  | 100% |  |  | start no earlier than 2026-07-29 09:00 | Зорькин В | 8h | 8h |
| 900 | 2.58.2 | контроль доставка |  | 5min | 2026-08-18 09:00 A | 2026-08-18 09:05 A |  | 100% |  |  | start no earlier than 2026-08-18 09:00 | Зорькин В | 0.08h | 0.08h |
| 901 | 2.58.3 | изготовление / установка |  | 4h | 2026-08-20 09:00 A | 2026-08-20 13:00 A | 900 | 100% |  |  | start no earlier than 2026-08-20 09:00 | Макаревич А | 4h | 4h |
| 902 | 2.58.4 | Корректировка горловины, сделать более плотные зазоры, посмотреть по месту |  | 2h | 2026-09-04 09:00 A | 2026-09-04 11:00 A |  | 100% |  |  | start no earlier than 2026-09-04 09:00 | Макаревич А | 2h | 2h |
| 903 | 2.59 | прикрутить лотки охладителя, чтобы не задевали сетку (лишние отверстия заварить) | manual | 2h | 2026-08-03 09:00 A | 2026-08-03 11:00 A |  | 100% |  |  | start no earlier than 2026-08-03 09:00 | Бобренок В | 2h | 2h |
| 904 | 2.60 | чистка фильтров кондиционеров | manual | 1h | 2026-08-01 09:00 A | 2026-08-01 10:00 A |  | 100% |  |  | start no earlier than 2026-08-01 09:00 | Бундин В | 1h | 1h |
| 905 | 2.61 | слить конденсат с компрессора |  | 1h | 2026-07-30 08:00 A | 2026-07-30 10:00 A |  | 100% |  |  | start no earlier than 2026-07-30 08:00 | Дедов В | 1h | 1h |
| 906 | 2.62 | слив конденсата с кондиционеров прочистить трубу | manual | 2h | 2026-08-01 09:00 A | 2026-08-01 11:00 A |  | 100% |  |  | start no earlier than 2026-08-01 09:00 | Бундин В | 2h | 2h |
| 907 | 2.63 | Настройка частотника питателя (созвон с Валентином) |  | 1h | 2026-07-31 09:00 A | 2026-07-31 10:00 A |  | 100% |  |  | start no earlier than 2026-07-31 09:00 | Бундин В | 1h | 1h |
| 908 | 2.64 | дверь металлическая зона выдачи ГП ревизия, плоход закрывается |  | 1h | 2026-07-15 09:00 A | 2026-07-15 10:00 A |  | 100% |  |  | start no earlier than 2026-07-15 09:00 | Бундин В | 1h | 1h |
| 909 | 2.65 | крепление доводчик дверь входная |  | 1h | 2026-07-15 09:00 A | 2026-07-15 10:00 A |  | 100% |  |  | start no earlier than 2026-07-15 09:00 | Бундин В | 1h | 1h |
| 910 | 2.66 | снять меющийся, установить новый прайсчекер (лежит у мастеров) |  | 1h | 2026-07-15 09:00 A | 2026-07-15 10:00 A |  | 100% |  |  | start no earlier than 2026-07-15 09:00 | Бундин В | 1h | 1h |
| 911 | 2.67 | ремонт кронштейна датчик давления |  | 30min | 2026-07-10 09:00 A | 2026-07-10 09:30 A |  | 100% |  |  | start no earlier than 2026-07-10 09:00 | Бобренок В | 0.5h | 0.5h |
| 912 | 2.68 | замерить демонтированные шнеки, заполнить ьабличку Зорькина |  | 1h | 2026-07-11 09:00 A | 2026-07-13 10:00 A |  | 100% |  |  | start no earlier than 2026-07-11 09:00 | Макаревич А | 1h | 1h |
| 913 | 2.69 | обшить входной проем п-образным профилем (на складе лежит) | manual | 3h | 2026-07-08 09:00 A | 2026-07-08 12:00 A |  | 100% |  |  | start no earlier than 2026-07-08 09:00 | Некрасов А; Тимофеев В | 6h | 6h |
| 914 | 2.70 | чистка воздушных клапанов на септике |  | 1d? | 2026-07-02 09:00 A | 2026-07-02 18:00 A |  | 100% |  |  | start no earlier than 2026-07-02 09:00 | Олег | 8h | 8h |
| 915 | 2.71 | закрепить щиток транспортера у стены на фасовке, малый дозатор) | manual | 1h | 2026-07-04 09:00 A | 2026-07-04 10:00 A |  | 100% |  |  | start no earlier than 2026-07-04 09:00 | Дедов В | 1h | 1h |
| 916 | 2.72 | **под экструдером масло- ревизия откуда** |  | 0.12d | 2026-07-03 09:00 A | 2026-07-03 10:00 A |  | 100% |  |  |  |  | 1h | 1h |
| 917 | 2.72.1 | заменить шланг 20мм (лежит черный на стеллаже справа, где кабель) при остановке- согласовать с мастером |  | 1h | 2026-07-03 09:00 A | 2026-07-03 10:00 A |  | 100% |  |  | start no earlier than 2026-07-03 09:00 | Макаревич А | 1h | 1h |
| 918 | 2.73 | чистка труб сброса конденсата с кондиционеров |  | 2h | 2026-06-30 09:00 A | 2026-06-30 11:00 A |  | 100% |  |  | start no earlier than 2026-06-30 09:00 | Некрасов А; Тимофеев В | 2h | 2h |
| 919 | 2.74 | чистка всех фильтров на кондиционеры, разобраться с питанием внутреннего блока |  | 1d? | 2026-06-29 09:00 A | 2026-06-29 18:00 A |  | 100% |  |  | start no earlier than 2026-06-29 09:00 |  |  |  |
| 920 | 2.75 | ТО бестром |  | 2h | 2026-06-30 09:00 A | 2026-06-30 11:00 A |  | 100% |  |  | start no earlier than 2026-06-30 09:00 | Бундин В | 2h | 2h |
| 921 | 2.76 | промыть внешние блоки кондиционеров |  | 3h | 2026-06-26 09:00 A | 2026-06-26 12:00 A |  | 100% |  |  | start no earlier than 2026-06-26 09:00 | Тимофеев В; Дедов В | 6h | 6h |
| 922 | 2.77 | вернуть кожух защиты на прекондиционер (подогнать в размер) на остановке линии |  | 2h | 2026-06-24 09:00 A | 2026-06-24 11:00 A |  | 100% |  |  | start no earlier than 2026-06-24 09:00 | Труфанов А | 2h | 2h |
| 923 | 2.78 | подключение тепловой защиты на приточке и вытяжке |  | 2h | 2026-06-23 08:00 A | 2026-06-23 11:00 A |  | 100% |  |  | start no earlier than 2026-06-23 08:00 | Тимофеев В; Макаревич А | 4h | 4h |
| 924 | 2.79 | заменить фильтр приточка 2 этаж и указать кол-во остатка на складе |  | 1h | 2026-06-20 09:00 A | 2026-06-22 10:00 A |  | 100% |  |  | start no earlier than 2026-06-20 09:00 | Дедов В | 1h | 1h |
| 925 | 2.80 | сделать защиту жировика от холода (изготовить из сенгвич панели на навесках 2ц.) жировик расскажет | manual | 2h | 2026-06-21 09:00 A | 2026-06-21 11:00 A |  | 100% |  |  | start no earlier than 2026-06-21 09:00 | Бундин В | 2h | 2h |
| 926 | 2.81 | проверка теко 0,4 -пакет запаенный |  | 1h | 2026-06-18 08:00 A | 2026-06-18 10:00 A |  | 100% |  |  | start no earlier than 2026-06-18 08:00 | Дедов В | 1h | 1h |
| 927 | 2.82 | подключение датчика давления через гидрошланг |  | 1h | 2026-07-09 09:00 A | 2026-07-09 10:00 A |  | 100% |  |  | start no earlier than 2026-07-09 09:00 | Бундин В | 1h | 1h |
| 928 | 2.83 | чистка парогенератора |  | 2h | 2026-06-18 08:00 A | 2026-06-18 11:00 A |  | 100% |  |  | start no earlier than 2026-06-18 08:00 | Тимофеев В | 2h | 2h |
| 929 | 2.84 | слив конденсата с компрессора и продуть радиаторы и фильтры |  | 1h | 2026-06-20 09:00 A | 2026-06-22 10:00 A |  | 100% |  |  | start no earlier than 2026-06-20 09:00 | Бобренок В | 1h | 1h |
| 930 | 2.85 | проверить, есть ли давление во всех гидроаккумуляторах на отоплении по цеху, зафиксировать с порванными мембранами |  | 2h | 2026-06-11 09:00 A | 2026-06-11 11:00 A |  | 100% |  |  | start no earlier than 2026-06-11 09:00 | Дедов В | 2h | 2h |
| 931 | 2.86 | дверь охладителя и угол - прикрутить наружний уголок 20х50 и 50х50, чтобы не резали руки (уголок на входе напротив ворот в синем складе) |  | 3h | 2026-06-12 09:00 A | 2026-06-12 12:00 A |  | 100% |  |  | start no earlier than 2026-06-12 09:00 | Дедов В | 3h | 3h |
| 932 | 2.87 | взять на складе специальный п-образный профиль и обшить дверной проем вход в охладитель | manual | 2h | 2026-07-05 09:00 A | 2026-07-05 11:00 A |  | 100% |  |  | start no earlier than 2026-07-05 09:00 |  |  |  |
| 933 | 2.88 | проверка гидроаккумулятора на водоподготовке |  | 0.5h | 2026-06-11 09:00 A | 2026-06-11 09:30 A |  | 100% |  |  | start no earlier than 2026-06-11 09:00 | Дедов В | 0.5h | 0.5h |
| 934 | 2.89 | чистка парогенератора |  | 2h | 2026-06-11 09:00 A | 2026-06-11 11:00 A |  | 100% |  |  | start no earlier than 2026-06-11 09:00 | Тимофеев В | 2h | 2h |

| ID | WBS | Task | Duration | Start | Finish | Predecessors | Complete | Remaining | Actual start | Actual finish | Total slack | Constraint | Resources | Work | Actual work |
| --- | --- | --- | --- | --- | --- | --- | --- | --- | --- | --- | --- | --- | --- | --- | --- |
| 935 | 2.90 | **посмотреть на желтом складе шибер, если найдем устанавливаем на аквариум зона экструдера** | 0.12d | 2026-06-12 09:00 A | 2026-06-12 10:00 A |  | 100% |  |  |  |  |  |  | 1h | 1h |
| 936 | 2.90.1 | монтаж воздуховод под углом на шибер- настройка с операторами направление обдува | 1h | 2026-06-12 09:00 A | 2026-06-12 10:00 A |  | 100% |  |  |  |  | start no earlier than 2026-06-12 09:00 | Бундин В | 1h | 1h |
| 937 | 2.91 | **ворота выход готовой продукции (прикрутить ролик, ролик у нас в кабинете)** | 1d? | 2026-06-11 09:00 A | 2026-06-11 18:00 |  | 99% | 0d? |  |  | 0d |  | Труфанов А | 16h | 15h |
| 938 | 2.91.1 | выкл. Ручной режим | 1d? | 2026-06-11 09:00 A | 2026-06-11 18:00 A |  | 100% |  |  |  |  | start no earlier than 2026-06-11 09:00 | Дедов В | 8h | 8h |
| 939 | 2.92 | промерить шнеки / гильзы износ. Маркировать | 1h | 2026-07-08 09:00 A | 2026-07-08 10:00 A |  | 100% |  |  |  |  | start no earlier than 2026-07-08 09:00 | Зорькин В | 1h | 1h |
| 940 | 2.93 | сверлить сетку от фильеры, сверлом на станке, все отверстия. | 4h | 2026-06-06 09:00 A | 2026-06-08 13:00 A |  | 100% |  |  |  |  | start no earlier than 2026-06-06 09:00 | Бобренок В | 4h | 4h |
| 941 | 2.94 | **заменаить сальник редуктора транспортер №3** | 0.12d | 2026-06-18 09:00 A | 2026-06-18 10:00 A |  | 100% |  |  |  |  |  |  | 2h | 2h |
| 942 | 2.94.1 | заменаить редутор из зип | 1h | 2026-06-18 09:00 A | 2026-06-18 10:00 A |  | 100% |  |  |  |  | start no earlier than 2026-06-18 09:00 | Тимофеев В | 1h | 1h |
| 943 | 2.94.2 | замена сальник на снятом | 1h | 2026-06-18 09:00 A | 2026-06-18 10:00 A |  | 100% |  |  |  |  | start no earlier than 2026-06-19 09:00 | Тимофеев В | 1h | 1h |
| 944 | 2.95 | законтрогаить шпильки-ножки запайщиков | 1h | 2026-06-06 09:00 A | 2026-06-08 10:00 A |  | 100% |  |  |  |  | start no earlier than 2026-06-06 09:00 | Бобренок В | 1h | 1h |
| 945 | 2.96 | **нория квадропак -устранить просыпание** | 1d? | 2026-06-04 09:00 A | 2026-06-04 18:00 A |  | 100% |  |  |  |  |  | Тимофеев В | 16h | 16h |
| 946 | 2.96.1 | добавить частоту частотника до 70 на норию | 1d? | 2026-06-04 09:00 A | 2026-06-04 18:00 A |  | 100% |  |  |  |  | start no earlier than 2026-06-04 09:00 | Дедов В | 8h | 8h |
| 947 | 2.97 | Замена шнеков (усиленные) - по уровню | 4h | 2026-06-04 09:00 A | 2026-06-04 13:00 A |  | 100% |  |  |  |  | start no earlier than 2026-06-04 09:00 | Тимофеев В | 4h | 4h |
| 948 | 2.98 | монтаж воздуховод приточный в площадку загрузки смесителя | 3h | 2026-06-05 09:00 A | 2026-06-05 12:00 A |  | 100% |  |  |  |  | start no earlier than 2026-06-05 09:00 | Некрасов А | 3h | 3h |
| 949 | 2.99 | очистка вентилятора окно экструдер | 40min | 2026-06-04 09:00 A | 2026-06-04 09:40 A |  | 100% |  |  |  |  | start no earlier than 2026-06-04 09:00 | Некрасов А; Бундин В | 1.33h | 1.33h |
| 950 | 2.100 | **доп освещение зона охладитель** | 4.75d? | 2026-06-09 09:00 | 2026-06-15 16:00 |  | 100% |  | 2026-06-10 09:00 | 2026-08-06 11:00 |  |  |  | 12.67h | 12.67h |
| 951 | 2.100.1 | спланировать монтаж / проверить наличие матералов | 20min | 2026-06-25 09:00 A | 2026-06-25 09:20 A |  | 100% |  |  |  |  | start no earlier than 2026-06-25 09:00 | Шуранов Ю; Дедов В | 0.67h | 0.67h |
| 952 | 2.100.2 | заказать | 1d? | 2026-06-10 09:00 A | 2026-06-10 18:00 A |  | 100% |  |  |  |  | start no earlier than 2026-06-10 09:00 | Шуранов Ю | 8h | 8h |
| 953 | 2.100.3 | монтаж | 2h | 2026-08-06 09:00 A | 2026-08-06 11:00 A | 951 | 100% |  |  |  |  | start no earlier than 2026-08-06 09:00 | Тимофеев В; Бундин В | 4h | 4h |
| 954 | 2.101 | отключить двигатель зиплока бестром | 1h | 2026-06-12 09:00 A | 2026-06-12 10:00 A |  | 100% |  |  |  |  | start no earlier than 2026-06-12 09:00 | Бундин В | 1h | 1h |
| 955 | 2.102 | ж гардероб душ кабина осмотр гидрозатвор - сильный запах | 2h | 2026-05-30 09:00 A | 2026-06-01 11:00 A |  | 100% |  |  |  |  | start no earlier than 2026-05-30 09:00 | Бобренок В | 2h | 2h |
| 956 | 2.103 | ремонт кресло , паук находится на складе у Веры | 1h | 2026-06-13 09:00 A | 2026-06-15 10:00 A |  | 100% |  |  |  |  | start no earlier than 2026-06-13 09:00 | Бобренок В | 1h | 1h |
| 957 | 2.104 | ревизия нихром запайщик | 1h | 2026-05-29 09:00 A | 2026-05-29 10:00 A |  | 100% |  |  |  |  | start no earlier than 2026-05-29 08:00 | Бундин В | 1h | 1h |
| 958 | 2.105 | штабелер 2ц ревизия колес | 1h | 2026-06-01 09:00 A | 2026-06-01 10:00 A |  | 100% |  |  |  |  | start no earlier than 2026-06-01 09:00 | Макаревич А | 1h | 1h |

| ID | WBS | Task | Type | Duration | Start | Finish | Complete | Remaining | Actual finish | Total slack | Free slack | Constraint | Resources | Work | Actual work |
| --- | --- | --- | --- | --- | --- | --- | --- | --- | --- | --- | --- | --- | --- | --- | --- |
| 959 | 2.106 | **ремонт эл котел №3 охладитель** |  | 71.25d? | 2026-06-05 09:00 A | 2026-09-11 11:00 | 91% | 6.61d? |  | 128.34d |  |  |  | 24.25h | 22h |
| 960 | 2.106.1 | заказать плату |  | 1d? | 2026-07-15 09:00 A | 2026-07-15 18:00 A | 100% |  |  |  |  | start no earlier than 2026-07-15 09:00 | Зорькин В | 8h | 8h |
| 961 | 2.106.2 | замена силовой платы зота в районе мойки экструдера (плата на складе) -проверка | manual | 2h | 2026-08-09 09:00 A | 2026-08-09 11:00 A | 100% |  |  |  |  | start no earlier than 2026-08-09 09:00 | Бобренок В | 2h | 2h |
| 962 | 2.106.3 | котел №3 проверка платы силовой управления тенами (после откл управления перегрелся пошел дым) на складе есть платы 2 шт. для ЗОТА. Слава плату заменил грешит на д температуры |  | 2h | 2026-09-01 09:00 A | 2026-09-01 11:00 A | 100% |  |  |  |  | start no earlier than 2026-09-01 09:00 | Дедов В | 2h | 2h |
| 963 | 2.106.4 | Замена силовой платы, где сгорела 1 ТТР |  | 2h | 2026-08-31 08:00 A | 2026-08-31 11:00 A | 100% |  |  |  |  | start no earlier than 2026-08-31 08:00 | Дедов В | 2h | 2h |
| 964 | 2.106.5 | Не работает блок тенов, заказать |  | 10min | 2026-09-01 09:00 | 2026-09-01 09:10 |  |  |  | 137.57d |  | start no earlier than 2026-09-01 08:00 | Зорькин В | 0.17h |  |
| 965 | 2.106.6 | Контроль доставки |  | 5min | 2026-09-09 09:00 | 2026-09-09 09:05 |  |  |  | 125.55d | 0d | start no earlier than 2026-09-09 09:00 | Зорькин В | 0.08h |  |
| 966 | 2.106.7 | замена |  | 2h | 2026-09-11 09:00 | 2026-09-11 11:00 |  |  |  | 122.31d | 0d | start no earlier than 2026-09-11 09:00 | Дедов В | 2h |  |
| 967 | 2.106.8 | заказать плату управления |  | 1d? | 2026-06-05 09:00 A | 2026-06-05 18:00 A | 100% |  |  |  |  | start no earlier than 2026-06-05 09:00 | Зорькин В | 8h | 8h |
| 968 | 2.107 | замена задних подшипников на прекондиционере (посмотреть итальянские на складе) |  | 6h | 2026-05-26 09:00 A | 2026-05-26 16:00 A | 100% |  |  |  |  | start no earlier than 2026-05-26 09:00 | Тимофеев В; Некрасов А | 12h | 12h |
| 969 | 2.108 | перемотать трубы скотчем серым и по низу стык улиток "загерметизировать" |  | 2h | 2026-05-25 08:00 A | 2026-05-25 11:00 A | 100% |  |  |  |  | start no earlier than 2026-05-25 08:00 | Макаревич А | 2h | 2h |
| 970 | 2.109 | **изготовить мойка малая из нерж** |  | 0.5d | 2026-06-01 08:00 A | 2026-06-01 13:00 A | 100% |  |  |  |  |  | Макаревич А | 8h | 8h |
| 971 | 2.109.1 | подключить мойку на месте (по телефону обсудим) |  | 4h | 2026-06-01 08:00 A | 2026-06-01 13:00 A | 100% |  |  |  |  | start no earlier than 2026-06-01 08:00 | Макаревич А | 4h | 4h |
| 972 | 2.110 | **дополнительное освещение в зоне жиров** |  | 6.5d | 2026-05-26 09:00 A | 2026-06-01 13:00 | 100% |  | 2026-06-04 09:30 |  |  |  |  | 5h | 5h |
| 973 | 2.110.1 | заказ светильников |  | 1h | 2026-05-26 09:00 A | 2026-05-26 10:00 A | 100% |  |  |  |  | start no earlier than 2026-05-26 09:00 | Шуранов Ю | 1h | 1h |
| 974 | 2.110.2 | монтаж |  | 4h | 2026-06-01 09:00 A | 2026-06-01 13:00 A | 100% |  |  |  |  | start no earlier than 2026-06-01 09:00 | Макаревич А | 4h | 4h |
| 975 | 2.110.3 | подключить к автомату на мойке |  | 0.5h | 2026-06-04 09:00 A | 2026-06-04 09:30 A | 100% |  |  |  |  | start no earlier than 2026-06-04 09:00 |  |  |  |
| 976 | 2.111 | подключить пк мастеров через ИБП (согласовать с мастером 1 цеха) |  | 1h | 2026-05-25 09:00 A | 2026-05-25 10:00 A | 100% |  |  |  |  | start no earlier than 2026-05-25 08:00 | Шуранов Ю | 1h | 1h |
| 977 | 2.112 | заменить помпу на термопоте в кухне |  | 1h | 2026-05-27 09:00 A | 2026-05-27 10:00 A | 100% |  |  |  |  | start no earlier than 2026-05-27 09:00 | Дедов В | 1h | 1h |
| 978 | 2.113 | лопнул шланг от насосной станции до редуктора- заменить |  | 1h | 2026-05-25 08:00 A | 2026-05-25 10:00 A | 100% |  |  |  |  | start no earlier than 2026-05-25 08:00 | Макаревич А | 1h | 1h |
| 979 | 2.114 | установить влагоотделитель на квадропак |  | 1h | 2026-05-25 08:00 A | 2026-05-25 10:00 A | 100% |  |  |  |  | start no earlier than 2026-05-25 08:00 | Дедов В | 1h | 1h |
| 980 | 2.115 | закрепить монтажную коробку в коридоре до жировика слева, от кондиционера |  | 1h | 2026-05-22 09:00 A | 2026-05-22 10:00 A | 100% |  |  |  |  | start no earlier than 2026-05-22 09:00 | Бобренок В | 1h | 1h |
| 981 | 2.116 | закрепить на доп. Клипсы трубу-воздух к стене за бестромом |  | 1h | 2026-05-23 09:00 A | 2026-05-25 10:00 A | 100% |  |  |  |  | start no earlier than 2026-05-23 09:00 | Бобренок В | 1h | 1h |
| 982 | 2.117 | заменить сетку печки (находиться в слесарке) | manual | 3h | 2026-05-24 09:00 A | 2026-05-24 12:00 A | 100% |  |  |  |  | start no earlier than 2026-05-24 09:00 | Макаревич А | 3h | 3h |
| 983 | 2.118 | уложить красиво и закрепить гофру от нории до красного смесителя | manual | 2h | 2026-05-24 09:00 A | 2026-05-24 11:00 A | 100% |  |  |  |  | start no earlier than 2026-05-24 09:00 | Макаревич А | 2h | 2h |
| 984 | 2.119 | взять ножевой узел с желтого склада и фильеры, подготовить и передать во второй цех на экструдер |  | 1h | 2026-05-21 09:00 A | 2026-05-21 10:00 A | 100% |  |  |  |  | start no earlier than 2026-05-21 08:00 | Бундин В | 1h | 1h |
| 985 | 2.120 | проверить все лотки на охладителе, чтобы не задевали сетку- если нужно поднять. |  | 1h | 2026-05-21 09:00 A | 2026-05-21 10:00 A | 100% |  |  |  |  | start no earlier than 2026-05-21 08:00 | Бундин В | 1h | 1h |
| 986 | 2.121 | чистка парогенератора, если нужно замена электродов |  | 2h | 2026-05-21 08:00 A | 2026-05-21 11:00 A | 100% |  |  |  |  | start no earlier than 2026-05-21 08:00 | Тимофеев В | 2h | 2h |
| 987 | 2.122 | чистка фильтра редуктора экструдера, проверка уровня масла |  | 1h | 2026-05-21 08:00 A | 2026-05-21 10:00 A | 100% |  |  |  |  | start no earlier than 2026-05-21 08:00 | Тимофеев В | 1h | 1h |
| 988 | 2.123 | проверить пневмоцилиндры на встряхивателях квадропака |  | 1h | 2026-05-21 08:00 A | 2026-05-21 10:00 A | 100% |  |  |  |  | start no earlier than 2026-05-21 08:00 | Бобренок В | 1h | 1h |
| 989 | 2.124 | проверка токов на печи, если просадка проверяем перемычки, тены |  | 1h | 2026-05-21 09:00 A | 2026-05-21 10:00 A | 100% |  |  |  |  | start no earlier than 2026-05-21 08:00 | Некрасов А | 1h | 1h |
| 990 | 2.125 | коротит на баке жиров все проверить |  | 1h | 2026-05-21 09:00 A | 2026-05-21 10:00 A | 100% |  |  |  |  | start no earlier than 2026-05-21 08:00 |  |  |  |
| 991 | 2.126 | в зоне фасовки сделать конструкцию, чтобы не выпадала макулатура |  | 6h | 2026-08-31 09:00 A | 2026-08-31 16:00 A | 100% |  |  |  |  | start no earlier than 2026-08-31 09:00 | Макаревич А | 6h | 6h |
| 992 | 2.127 | закрепить доводчик на входной двери |  | 1h | 2026-05-23 09:00 A | 2026-05-25 10:00 A | 100% |  |  |  |  | start no earlier than 2026-05-23 09:00 | Бундин В | 1h | 1h |
| 993 | 2.128 | установить розетку для палетооботчика на его колону |  | 2h | 2026-05-18 09:00 A | 2026-05-18 11:00 A | 100% |  |  |  |  | start no earlier than 2026-05-18 09:00 | Дедов В | 2h | 2h |

| ID | WBS | Task | Type | Duration | Start | Finish | Predecessors | Complete | Constraint | Resources | Work | Actual work |
| --- | --- | --- | --- | --- | --- | --- | --- | --- | --- | --- | --- | --- |
| 994 | 2.129 | **ИБП установить на принтер SAVEMA** |  | 5.25d | 2026-05-19 09:00 A | 2026-05-26 11:00 A |  | 100% |  |  | 3.25h | 3.25h |
| 995 | 2.129.1 | подбор и заявка ИБП |  | 1h | 2026-05-19 09:00 A | 2026-05-19 10:00 A |  | 100% | start no earlier than 2026-05-19 09:00 | Шуранов Ю | 1h | 1h |
| 996 | 2.129.2 | контроль поставки |  | 15min | 2026-05-26 09:00 A | 2026-05-26 09:15 A |  | 100% | start no earlier than 2026-05-26 09:00 | Шуранов Ю | 0.25h | 0.25h |
| 997 | 2.129.3 | монтаж и подключение в шкафу | manual | 2h | 2026-05-26 09:00 A | 2026-05-26 11:00 A | 996 | 100% | start no earlier than 2026-05-26 09:00 | Дедов В | 2h | 2h |
| 998 | 2.130 | **переместить на склад ЗИП палет сетка, зарядка АКБ штабелера** |  | 0.12d | 2026-06-01 09:00 A | 2026-06-01 10:00 A |  | 100% |  |  | 1h | 1h |
| 999 | 2.130.1 | зарядку АКБ переместить в контейнер, она находится в мойке зона экструдера | manual | 1h | 2026-06-01 09:00 A | 2026-06-01 10:00 A |  | 100% | start no earlier than 2026-06-01 09:00 | Макаревич А | 1h | 1h |
| 1000 | 2.131 | **бестром замена линейный подшипник прижима красных ремней** |  | 24.5d | 2026-05-15 09:00 A | 2026-06-18 13:00 A |  | 100% |  |  | 5.25h | 5.25h |
| 1001 | 2.131.1 | заявка |  | 1h | 2026-05-15 09:00 A | 2026-05-15 10:00 A |  | 100% | start no earlier than 2026-05-15 09:00 | Зорькин В | 1h | 1h |
| 1002 | 2.131.2 | доставка контроль |  | 15min | 2026-05-27 10:00 A | 2026-05-27 10:15 A | 1001FS+10d | 100% | start no earlier than 2026-05-14 08:00 | Зорькин В | 0.25h | 0.25h |
| 1003 | 2.131.3 | замена |  | 4h | 2026-06-18 09:00 A | 2026-06-18 13:00 A | 1002 | 100% | start no earlier than 2026-06-18 09:00 | Тимофеев В | 4h | 4h |
| 1004 | 2.132 | осмотр цепи муфты редуктора экструдера |  | 1h | 2026-05-14 09:00 A | 2026-05-14 10:00 A |  | 100% | start no earlier than 2026-05-14 09:00 | Тимофеев В | 1h | 1h |
| 1005 | 2.133 | Линия 3 на жирах нужно поменять колеса на транспортёре, который идет на охладитель |  | 1h | 2026-05-14 09:00 A | 2026-05-14 10:00 A |  | 100% | start no earlier than 2026-05-14 09:00 | Макаревич А | 1h | 1h |
| 1006 | 2.134 | осмотр прекондиционер "звон" |  | 30min | 2026-05-14 09:00 A | 2026-05-14 09:30 A |  | 100% | start no earlier than 2026-05-14 09:00 | Тимофеев В | 0.5h | 0.5h |
| 1007 | 2.135 | **заменить гофра унитаз правый отсек** |  | 16.12d | 2026-05-13 09:00 A | 2026-06-04 10:00 A |  | 100% |  |  | 41.25h | 41.25h |
| 1008 | 2.135.1 | заявка гофра |  | 15min | 2026-05-13 09:00 A | 2026-05-13 09:15 A |  | 100% | start no earlier than 2026-05-13 09:00 | Зорькин В | 0.25h | 0.25h |
| 1009 | 2.135.2 | доставка |  | 5d | 2026-05-13 09:15 A | 2026-05-20 09:15 A | 1008 | 100% | start no earlier than 2026-05-12 08:00 | Карабанов | 40h | 40h |
| 1010 | 2.135.3 | замена |  | 1h | 2026-06-04 09:00 A | 2026-06-04 10:00 A | 1009 | 100% | start no earlier than 2026-06-04 09:00 | Бобренок В | 1h | 1h |
| 1011 | 2.136 | замена смазка шприц на экструдере |  | 30min | 2026-05-13 09:00 A | 2026-05-13 09:30 A |  | 100% | start no earlier than 2026-05-13 09:00 | Некрасов А | 0.5h | 0.5h |
| 1012 | 2.137 | замена передний подшипник + набивка прекондиционер |  | 1h | 2026-05-14 09:00 A | 2026-05-14 10:00 A |  | 100% | start no earlier than 2026-05-14 09:00 | Тимофеев В | 1h | 1h |
| 1013 | 2.138 | прикрутить лоток выше на 1 ярусе, задевает сетку со сторону редуктора |  | 1h | 2026-05-08 08:00 A | 2026-05-08 10:00 A |  | 100% | start no earlier than 2026-05-08 08:00 | Макаревич А | 1h | 1h |
| 1014 | 2.139 | взять шайбу у нас в кабинете и шлифануть одну сторону |  | 1h | 2026-05-08 09:00 A | 2026-05-08 10:00 A |  | 100% | start no earlier than 2026-05-08 09:00 | Макаревич А | 1h | 1h |
| 1015 | 2.140 | смотровое окно на загрузке прекондиционера установить |  | 4h | 2026-08-25 09:00 A | 2026-08-25 13:00 A |  | 100% | start no earlier than 2026-08-31 09:00 | Тимофеев В | 4h | 4h |
| 1016 | 2.141 | добавить воду в систему отопления зота охладитель |  | 1h | 2026-05-09 09:00 A | 2026-05-11 10:00 A |  | 100% | start no earlier than 2026-05-09 09:00 | Макаревич А | 1h | 1h |
| 1017 | 2.142 | монтаж сетки на палетообмотчике | manual | 4h | 2026-05-14 09:00 A | 2026-05-14 13:00 A |  | 100% | start no earlier than 2026-05-14 09:00 | Некрасов А; Труфанов А | 8h | 8h |
| 1018 | 2.143 | Собрать стул, находится в кабинете мастеров 2 цех |  | 1h | 2026-05-13 09:00 A | 2026-05-13 10:00 A |  | 100% | start no earlier than 2026-05-13 09:00 | Бундин В | 1h | 1h |

| ID | WBS | Task | Type | Duration | Start | Finish | Complete | Actual start | Actual finish | Constraint | Resources | Work | Actual work |
| --- | --- | --- | --- | --- | --- | --- | --- | --- | --- | --- | --- | --- | --- |
| 1019 | 2.144 | **взять у нас на складе инсектицидные светильники и повесить их во 2 цехе, где нет** |  | 1.12d | 2026-05-12 09:00 A | 2026-05-13 10:00 A | 100% |  |  |  |  | 3h | 3h |
| 1020 | 2.144.1 | ремонт |  | 2h | 2026-05-12 09:00 A | 2026-05-12 11:00 A | 100% |  |  | start no earlier than 2026-05-12 09:00 | Бундин В | 2h | 2h |
| 1021 | 2.144.2 | монтаж ламп / заполнить в журнал мастера |  | 1h | 2026-05-13 09:00 A | 2026-05-13 10:00 A | 100% |  |  | start no earlier than 2026-05-13 09:00 | Бундин В | 1h | 1h |
| 1022 | 2.145 | герметиком замазать гофру на унитазах (запах) | manual | 1h | 2026-05-07 08:00 A | 2026-05-07 09:00 A | 100% |  |  | start no earlier than 2026-05-07 08:00 | Бобренок В | 1h | 1h |
| 1023 | 2.146 | заменить фильтр на приточку 2 этаж |  | 1h | 2026-05-07 08:00 A | 2026-05-07 10:00 A | 100% |  |  | start no earlier than 2026-05-07 08:00 | Тимофеев В | 1h | 1h |
| 1024 | 2.147 | ревизия перемычек, тен на печи - замена |  | 4h | 2026-05-07 09:00 A | 2026-05-07 13:00 A | 100% |  |  | start no earlier than 2026-05-07 08:00 | Труфанов А | 4h | 4h |
| 1025 | 2.148 | **повесить на места светильники инсектицидные (замена ламп)** |  | 1d? | 2026-05-11 09:00 | 2026-05-11 18:00 | 100% | 2026-05-12 09:00 | 2026-05-12 11:00 |  |  | 2h | 2h |
| 1026 | 2.148.1 | **заказать досели** |  | 0.25d | 2026-05-12 09:00 A | 2026-05-12 11:00 A | 100% |  |  |  |  | 2h | 2h |
| 1027 | 2.148.1.1 | ремонт не рабочих светильников |  | 2h | 2026-05-12 09:00 A | 2026-05-12 11:00 A | 100% |  |  | start no earlier than 2026-05-12 09:00 | Бундин В | 2h | 2h |
| 1028 | 2.149 | уложить кабель в гофре вдоль экструдера в лоток |  | 2h | 2026-05-04 09:00 A | 2026-05-04 11:00 A | 100% |  |  | start no earlier than 2026-05-04 08:00 | Бундин В | 2h | 2h |
| 1029 | 2.150 | **подготовить ТРМ для парогенератора цех 2** |  | 0d | 2026-05-16 09:00 A | 2026-05-16 10:00 A | 100% |  |  |  | Дедов В | 1h | 1h |
| 1030 | 2.150.1 | установить на остановке ТРМ (который сняли отдать Дедову для восстановления) восстановить кнопку | manual | 1h | 2026-05-16 09:00 A | 2026-05-16 10:00 A | 100% |  |  | start no earlier than 2026-05-16 09:00 | Дедов В | 1h | 1h |
| 1031 | 2.151 | повесить светильники 3шт. |  | 1h | 2026-05-04 09:00 A | 2026-05-04 10:00 A | 100% |  |  | start no earlier than 2026-05-04 08:00 | Труфанов А | 1h | 1h |
| 1032 | 2.152 | монтаж свет на фасовке |  | 8h | 2026-05-05 09:00 A | 2026-05-05 18:00 A | 100% |  |  | start no earlier than 2026-05-05 09:00 | Тимофеев В; Труфанов А | 15h | 15h |
| 1033 | 2.153 | заменить кулер в ШУ на жирах |  | 1h | 2026-04-29 08:00 A | 2026-04-29 10:00 A | 100% |  |  | start no earlier than 2026-04-29 08:00 | Дедов В | 1h | 1h |
| 1034 | 2.154 | заменить 3х ходовой кран и фитинги с гайкой на жирах |  | 1h | 2026-04-29 09:00 A | 2026-04-29 10:00 A | 100% |  |  | start no earlier than 2026-04-30 09:00 | Дедов В | 1h | 1h |
| 1035 | 2.155 | закрепить на подножке резинку на штабелере зона экструдера (можно на саморез/клепки) |  | 1h | 2026-04-29 08:00 A | 2026-04-29 10:00 A | 100% |  |  | start no earlier than 2026-04-29 08:00 | Дедов В | 1h | 1h |
| 1036 | 2.156 | **заменить сетку для печи из зип** |  | 0.38d | 2026-05-05 09:00 A | 2026-05-05 12:00 A | 100% |  |  |  |  | 5h | 5h |
| 1037 | 2.156.1 | **заменить сетку , которую сняли с печи** |  | 3h | 2026-05-05 09:00 A | 2026-05-05 12:00 A | 100% |  |  |  | Бундин В | 5h | 5h |
| 1038 | 2.156.1.1 | ремонт сетки |  | 2h | 2026-05-05 09:00 A | 2026-05-05 11:00 A | 100% |  |  | start no earlier than 2026-05-05 09:00 | Бобренок В | 2h | 2h |
| 1039 | 2.157 | под норией сыпит сырье устранить |  | 4h | 2026-04-30 09:00 A | 2026-04-30 13:00 A | 100% |  |  | start no earlier than 2026-04-30 09:00 | Труфанов А; Некрасов А | 8h | 8h |
| 1040 | 2.158 | устранить течь, сброс пара под прекондиционером |  | 1h | 2026-05-01 09:00 A | 2026-05-01 10:00 A | 100% |  |  | start no earlier than 2026-05-01 09:00 | Дедов В | 1h | 1h |
| 1041 | 2.159 | устранить течь редуктор прекондиционера |  | 5h | 2026-04-29 09:00 A | 2026-04-29 15:00 A | 100% |  |  | start no earlier than 2026-04-29 08:00 | Некрасов А; Труфанов А | 10h | 10h |
| 1042 | 2.160 | почистить фильтр на поломоечной машинке |  | 1h | 2026-04-29 09:00 A | 2026-04-29 10:00 A | 100% |  |  | start no earlier than 2026-04-29 09:00 | Тимофеев В | 1h | 1h |
| 1043 | 2.161 | Полное ТО квадропак (чистка тен, смазка штоков пневмоцилиндров, шприцевание подшипников) |  | 3h | 2026-04-28 09:00 A | 2026-04-28 12:00 A | 100% |  |  | start no earlier than 2026-04-28 09:00 | Тимофеев В | 3h | 3h |
| 1044 | 2.162 | Полное ТО бестром (чистка тен, смазка штоков пневмоцилиндров, шприцевание подшипников) |  | 2h | 2026-04-28 09:00 A | 2026-04-28 11:00 A | 100% |  |  | start no earlier than 2026-04-28 09:00 | Тимофеев В | 2h | 2h |
| 1045 | 2.163 | демонтаж инсектютерной ламп на очистку / продуть |  | 1h | 2026-04-27 08:00 A | 2026-04-27 10:00 A | 100% |  |  | start no earlier than 2026-04-27 08:00 | Тимофеев В | 1h | 1h |
| 1046 | 2.164 | ремонт инсектецидных ламп взять у Мастера в каб. (проверить контакты соединения самих лам, дросели). 3 исправно/1 сломан дросель |  | 1h | 2026-04-29 09:00 A | 2026-04-29 10:00 A | 100% |  |  | start no earlier than 2026-04-29 09:00 | Дедов В | 1h | 1h |

| ID | WBS | Task | Type | Duration | Start | Finish | Predecessors | Complete | Remaining | Actual start | Total slack | Constraint | Resources | Work | Actual work |
| --- | --- | --- | --- | --- | --- | --- | --- | --- | --- | --- | --- | --- | --- | --- | --- |
| 1047 | 2.165 | **замена дроселя инсекцидной лампы** |  | 17.38d | 2026-04-30 09:00 A | 2026-05-25 12:00 A |  | 100% |  |  |  |  |  | 84.25h | 84.25h |
| 1048 | 2.165.1 | заявка |  | 15min | 2026-04-30 09:00 A | 2026-04-30 09:15 A |  | 100% |  |  |  | start no earlier than 2026-04-30 08:00 | Шуранов Ю | 0.25h | 0.25h |
| 1049 | 2.165.2 | замена |  | 3h | 2026-05-25 08:00 A | 2026-05-25 12:00 A |  | 100% |  |  |  | start no earlier than 2026-05-25 08:00 | Дедов В | 3h | 3h |
| 1050 | 2.165.3 | доставка |  | 10d | 2026-05-04 09:00 A | 2026-05-18 18:00 A | 1048 | 100% |  |  |  | start no earlier than 2026-05-04 09:00 | Карабанов | 80h | 80h |
| 1051 | 2.165.4 | замена |  | 1h | 2026-05-12 09:00 A | 2026-05-12 10:00 A |  | 100% |  |  |  | start no earlier than 2026-05-12 09:00 | Бундин В | 1h | 1h |
| 1052 | 2.166 | поликарбанат в зоне седла жировика оторвался, ремонт |  | 1h | 2026-04-30 09:00 A | 2026-04-30 10:00 A |  | 100% |  |  |  | start no earlier than 2026-04-30 09:00 | Бундин В | 1h | 1h |
| 1053 | 2.167 | зачистить и покрасить решетку на входе в 2 ц. |  | 4h | 2026-04-28 09:00 A | 2026-04-28 13:00 A |  | 100% |  |  |  | start no earlier than 2026-04-28 09:00 | Дворник | 4h | 4h |
| 1054 | 2.168 | поднять лотки на 10 мм на охладителе со стороны фасовки (видео вышлю) |  | 1h | 2026-04-24 09:00 A | 2026-04-24 10:00 A |  | 100% |  |  |  | start no earlier than 2026-04-24 08:00 | Бундин В | 1h | 1h |
| 1055 | 2.169 | добавить в систему отопления котла в мойке и в охладителе воды | manual | 2h | 2026-04-24 09:00 A | 2026-04-24 11:00 A |  | 100% |  |  |  | start no earlier than 2026-04-24 09:00 | Бундин В | 2h | 2h |
| 1056 | 2.170 | на углы установить отбойники выход с зоны экструдера |  | 2h | 2026-04-23 09:00 A | 2026-04-23 11:00 A |  | 100% |  |  |  | start no earlier than 2026-04-23 08:00 | Бундин В | 2h | 2h |
| 1057 | 2.171 | сделать ТО Бестром (чистка тен и т.д.) |  | 2h | 2026-04-22 08:00 A | 2026-04-22 11:00 A |  | 100% |  |  |  | start no earlier than 2026-04-22 08:00 | Дедов В | 2h | 2h |
| 1058 | 2.172 | собрать кабинку в мужской раздевалке, она там стоит в коробке |  | 1h | 2026-04-23 09:00 A | 2026-04-23 10:00 A |  | 100% |  |  |  | start no earlier than 2026-04-23 09:00 | Дедов В | 1h | 1h |
| 1059 | 2.173 | заменить датчик переполнения на загрузке с синего бункера, на складе взять |  | 1h | 2026-04-29 09:00 A | 2026-04-29 10:00 A |  | 100% |  |  |  | start no earlier than 2026-04-29 09:00 | Дедов В | 1h | 1h |
| 1060 | 2.174 | **включить все исектицидные светильники по цеху, проверить есть ли напряжение в розетках** |  | 0.12d | 2026-04-23 09:00 A | 2026-04-23 10:00 A |  | 100% |  |  |  |  | Дедов В | 2h | 2h |
| 1061 | 2.174.1 | проверить напряжение в розетке светильника на фасовке |  | 1h | 2026-04-23 09:00 A | 2026-04-23 10:00 A |  | 100% |  |  |  | start no earlier than 2026-04-23 08:00 | Бундин В | 1h | 1h |
| 1062 | 2.175 | **установить кольцо "вентури" в фильеру** |  | 2.38d? | 2026-05-04 09:00 | 2026-05-06 12:00 |  | 78% | 0.53d? | 2026-04-27 09:00 |  |  |  | 4.5h | 3.5h |
| 1063 | 2.175.1 | определить диаметр отверстия кольца |  | 1h | 2026-04-27 09:00 A | 2026-04-27 10:00 A |  | 100% |  |  |  | start no earlier than 2026-04-27 09:00 | Зорькин В | 1h | 1h |
| 1064 | 2.175.2 | заявка на изготовление |  | 1h | 2026-04-28 10:00 A | 2026-04-28 11:00 A | 1063FS+1d | 100% |  |  |  | start no earlier than 2026-04-20 08:00 | Зорькин В | 1h | 1h |
| 1065 | 2.175.3 | контроль |  | 1h | 2026-05-04 09:00 A | 2026-05-04 10:00 A | 1064FS+1d | 100% |  |  |  | start no earlier than 2026-05-04 09:00 | Зорькин В | 1h | 1h |
| 1066 | 2.175.4 | заявка на выжечь проставку лдя кольца |  | 30min | 2026-07-15 09:00 A | 2026-07-15 09:30 A |  | 100% |  |  |  | start no earlier than 2026-07-15 09:00 | Зорькин В | 0.5h | 0.5h |
| 1067 | 2.175.5 | контроль доставки | milestone | 0d | 2026-07-22 09:30 A | 2026-07-22 09:30 A | 1066FS+5d | 100% |  |  |  | start no earlier than 2026-07-15 09:00 | Зорькин В |  |  |
| 1068 | 2.175.6 | провести тест |  | 1h | 2026-09-10 09:00 | 2026-09-10 10:00 |  |  |  |  | 129.47d | start no earlier than 2026-09-10 09:00 | Зорькин В | 1h |  |
| 1069 | 2.176 | замена фильтр вода подача в накопитель |  | 1h | 2026-04-21 09:00 A | 2026-04-21 10:00 A |  | 100% |  |  |  | start no earlier than 2026-04-21 09:00 | Тимофеев В | 1h | 1h |
| 1070 | 2.177 | замена потускневших ламп в инсекютере. Мастеру сообщить кол-во. б/у складывать в коробку |  | 2h | 2026-05-04 09:00 A | 2026-05-04 11:00 A |  | 100% |  |  |  | start no earlier than 2026-05-04 09:00 | Макаревич А | 2h | 2h |

| ID | WBS | Task | Type | Duration | Start | Finish | Predecessors | Complete | Remaining | Actual start | Total slack | Constraint | Resources | Work | Actual work |
| --- | --- | --- | --- | --- | --- | --- | --- | --- | --- | --- | --- | --- | --- | --- | --- |
| 1071 | 2.178 | **ограждение палетообмотчика** |  | 19.25d | 2026-04-17 08:00 A | 2026-05-14 11:00 A |  | 100% |  |  |  |  |  | 190.5h | 190.5h |
| 1072 | 2.178.1 | **подготовка и монтаж рамы** |  | 6.75d | 2026-04-17 08:00 A | 2026-04-27 16:00 A |  | 100% |  |  |  |  |  | 24h | 24h |
| 1073 | 2.178.1.1 | изготовить ограждения для палетообмотчика (размеры обговорим) |  | 10h | 2026-04-17 08:00 A | 2026-04-20 11:00 A |  | 100% |  |  |  | start no earlier than 2026-04-17 08:00 | Макаревич А | 10h | 10h |
| 1074 | 2.178.1.2 | очистка, покраска рам ограждения. Быстросохн грунт-эмаль по ржавчине 3в1. |  | 4h | 2026-04-20 08:00 A | 2026-04-20 13:00 A |  | 100% |  |  |  | start no earlier than 2026-04-20 08:00 | Макаревич А | 4h | 4h |
| 1075 | 2.178.1.3 | монтаж рамы ограждения |  | 4h | 2026-04-27 09:00 A | 2026-04-27 13:00 A | 1074 | 100% |  |  |  | start no earlier than 2026-04-27 09:00 | Тимофеев В | 4h | 4h |
| 1076 | 2.178.1.4 | приварить пластины под стойки ограждения и закрепить к полу, чтобы оператор был вне зоны опасности) |  | 6h | 2026-04-25 09:00 A | 2026-04-27 16:00 A |  | 100% |  |  |  | start no earlier than 2026-04-25 09:00 | Макаревич А | 6h | 6h |
| 1077 | 2.178.2 | **обклеить рамы лентой** |  | 17.25d | 2026-04-21 09:00 A | 2026-05-14 11:00 A |  | 100% |  |  |  |  |  | 82.25h | 82.25h |
| 1078 | 2.178.2.1 | заявка клейка лента сигнальная черно-желтая / негабарит |  | 15min | 2026-04-21 09:00 A | 2026-04-21 09:15 A |  | 100% |  |  |  | start no earlier than 2026-04-21 09:00 | Зорькин В | 0.25h | 0.25h |
| 1079 | 2.178.2.2 | доставка |  | 10d | 2026-04-21 09:15 A | 2026-05-05 09:15 A | 1078 | 100% |  |  |  | start no earlier than 2026-04-20 08:00 | Карабанов | 80h | 80h |
| 1080 | 2.178.2.3 | монтаж ленты черно-желтой |  | 2h | 2026-05-14 09:00 A | 2026-05-14 11:00 A | 1079 | 100% |  |  |  | start no earlier than 2026-05-14 09:00 | Бобренок В | 2h | 2h |
| 1081 | 2.178.3 | **монтаж сетки на раму** |  | 10.03d | 2026-04-21 09:00 A | 2026-05-05 09:15 A |  | 100% |  |  |  |  |  | 84.25h | 84.25h |
| 1082 | 2.178.3.1 | заявка сетка для ограждения |  | 15min | 2026-04-21 09:00 A | 2026-04-21 09:15 A |  | 100% |  |  |  | start no earlier than 2026-04-21 09:00 | Зорькин В | 0.25h | 0.25h |
| 1083 | 2.178.3.2 | доставка сетка |  | 10d | 2026-04-21 09:15 A | 2026-05-05 09:15 A | 1082 | 100% |  |  |  | start no earlier than 2026-04-20 08:00 | Карабанов | 80h | 80h |
| 1084 | 2.178.3.3 | монтаж сетка |  | 4h | 2026-05-04 09:15 A | 2026-05-04 14:15 A | 1083 | 100% |  |  |  | start no earlier than 2026-04-20 08:00 | Некрасов А | 4h | 4h |
| 1085 | 2.179 | воздухозабоник циклона отпилить и вернуть как было раньше |  | 1h | 2026-04-28 09:00 A | 2026-04-28 10:00 A |  | 100% |  |  |  | start no earlier than 2026-04-28 09:00 | Тимофеев В | 1h | 1h |
| 1086 | 2.180 | проверка всех гидроаккумуляторов парогенератор, в вент комнате и отопительные |  | 2h | 2026-04-17 09:00 A | 2026-04-17 11:00 A |  | 100% |  |  |  | start no earlier than 2026-04-17 08:00 |  |  |  |
| 1087 | 2.181 | сборка полетообмотчика на фасовке |  | 1h | 2026-04-16 09:00 A | 2026-04-16 10:00 A |  | 100% |  |  |  | start no earlier than 2026-04-16 09:00 | Бобренок В | 1h | 1h |
| 1088 | 2.182 | заменить ремень на охладителе |  | 1h | 2026-04-15 09:00 A | 2026-04-15 10:00 A |  | 100% |  |  |  | start no earlier than 2026-04-15 08:00 | Некрасов А | 1h | 1h |
| 1089 | 2.183 | оторвался контроллер мониторинга на ШУ экструдера |  | 1h | 2026-04-15 09:00 A | 2026-04-15 10:00 A |  | 100% |  |  |  | start no earlier than 2026-04-15 08:00 | Некрасов А | 1h | 1h |
| 1090 | 2.184 | **сделать горловину на быстросъемах прекондиционер** |  | 3.88d? | 2026-04-16 09:00 | 2026-04-21 17:00 |  | 47% | 2.05d? | 2026-08-20 09:00 |  |  |  | 17h | 8h |
| 1091 | 2.184.1 | заказать защелки |  | 1d? | 2026-08-31 09:00 | 2026-08-31 18:00 |  |  |  |  | 137.59d | start no earlier than 2026-08-31 09:00 | Шуранов Ю | 8h |  |
| 1092 | 2.184.2 | тест |  | 1h | 2026-09-09 09:00 | 2026-09-09 10:00 |  |  |  |  | 130.47d | start no earlier than 2026-09-09 08:00 | Бобренок В | 1h |  |
| 1093 | 2.184.3 | установка |  | 1d? | 2026-08-20 09:00 A | 2026-08-20 18:00 A |  | 100% |  |  |  | start no earlier than 2026-09-02 09:00 | Тимофеев В | 8h | 8h |
| 1094 | 2.185 | перенести светильник квадропака (на край мезонина) |  | 2h | 2026-04-13 09:00 A | 2026-04-13 11:00 A |  | 100% |  |  |  | start no earlier than 2026-04-13 09:00 | Труфанов А | 2h | 2h |
| 1095 | 2.186 | сделать или мусоросборник на лотке выхода экструдера, или обратный лоток в сторону охдадителя (обсудим по телефону) |  | 4h | 2026-08-31 09:00 A | 2026-08-31 13:00 A |  | 100% |  |  |  | start no earlier than 2026-08-31 09:00 | Макаревич А | 4h | 4h |
| 1096 | 2.187 | слить конденсат с компрессора, продуть радиаторы, чистка фильтров | manual | 2h | 2026-04-12 09:00 A | 2026-04-12 11:00 A |  | 100% |  |  |  | start no earlier than 2026-04-12 09:00 | Труфанов А | 2h | 2h |
| 1097 | 2.188 | добавить в систему отопления воды (зона экструдера, вход в мойку) | manual | 2h | 2026-04-12 09:00 A | 2026-04-12 11:00 A |  | 100% |  |  |  | start no earlier than 2026-04-12 09:00 | Труфанов А | 2h | 2h |
| 1098 | 2.189 | починить стул Шелепову (выстучать середину и посадить на хомут) |  | 1h | 2026-04-11 09:00 A | 2026-04-13 10:00 A |  | 100% |  |  |  | start no earlier than 2026-04-11 09:00 | Труфанов А | 1h | 1h |
| 1099 | 2.190 | не работает вентилятор третий справа, плохой контакт- прикрутить |  | 1h | 2026-04-10 08:00 A | 2026-04-10 10:00 A |  | 100% |  |  |  | start no earlier than 2026-04-10 08:00 | Бобренок В | 1h | 1h |
| 1100 | 2.191 | взять канистру со склада и сделать подачу снизу, взять сгон с канистры 2 линии (канистру я видел в гидрализатной 1 ц.) |  | 1h | 2026-04-26 09:00 A | 2026-04-27 10:00 A |  | 100% |  |  |  | start no earlier than 2026-04-26 09:00 | Макаревич А | 1h | 1h |
| 1101 | 2.192 | сделать лоток под канистру рыбий жир - подача в прекондиционер |  | 3h | 2026-04-11 09:00 A | 2026-04-13 12:00 A |  | 100% |  |  |  | start no earlier than 2026-04-11 09:00 | Макаревич А | 3h | 3h |
| 1102 | 2.193 | перескочила цепь на 2ом ярусе охладителя -поправить |  | 1h | 2026-04-10 08:00 A | 2026-04-10 10:00 A |  | 100% |  |  |  | start no earlier than 2026-04-10 08:00 | Макаревич А | 1h | 1h |

| ID | WBS | Task | Type | Duration | Start | Finish | Predecessors | Complete | Remaining | Total slack | Constraint | Resources | Work | Actual work |
| --- | --- | --- | --- | --- | --- | --- | --- | --- | --- | --- | --- | --- | --- | --- |
| 1103 | 2.194 | **установка фосунок - подача жира 2 линия** |  | 5d | 2026-04-24 09:00 A | 2026-04-30 18:00 A |  | 100% |  |  |  |  | 8.42h | 8.42h |
| 1104 | 2.194.1 | заявка краны 1/2 |  | 15min | 2026-04-24 09:00 A | 2026-04-24 09:15 A |  | 100% |  |  | start no earlier than 2026-04-24 08:00 | Зорькин В | 0.25h | 0.25h |
| 1105 | 2.194.2 | доставка контроль |  | 10min | 2026-04-30 09:15 A | 2026-04-30 09:25 A | 1104FS+5d | 100% |  |  | start no earlier than 2026-04-24 08:00 | Зорькин В | 0.17h | 0.17h |
| 1106 | 2.194.3 | сборка кронштейн для фильтров + счетчик |  | 4h | 2026-04-30 09:25 A | 2026-04-30 14:25 A | 1105 | 100% |  |  | start no earlier than 2026-04-24 08:00 | Тимофеев В | 4h | 4h |
| 1107 | 2.194.4 | монтаж на линию фильтры + кронштейн + форсунка |  | 4h | 2026-04-30 13:25 A | 2026-04-30 18:00 A | 1106 | 100% |  |  | start no earlier than 2026-04-24 08:00 | Тимофеев В | 4h | 4h |
| 1108 | 2.195 | вывести на синий склад старые цепи от печи зона навесок |  | 2h | 2026-05-22 09:00 A | 2026-05-22 11:00 A |  | 100% |  |  | start no earlier than 2026-04-09 08:00 | Тимофеев В | 2h | 2h |
| 1109 | 2.196 | прикрутить уголок снизу выхода охладителя, забивается кормом (фото скину) |  | 1h | 2026-04-08 09:00 A | 2026-04-08 10:00 A |  | 100% |  |  | start no earlier than 2026-04-08 08:00 | Бундин В | 1h | 1h |
| 1110 | 2.197 | закрыть шибер кондиционера над жировиком |  | 1h | 2026-04-09 09:00 A | 2026-04-09 10:00 A |  | 100% |  |  | start no earlier than 2026-04-09 09:00 | Бобренок В | 1h | 1h |
| 1111 | 2.198 | прикрутить оргстекло в аквариуме где забрасывают навески в смеситель |  | 1h | 2026-04-08 09:00 A | 2026-04-08 10:00 A |  | 100% |  |  | start no earlier than 2026-04-08 09:00 | Бундин В | 1h | 1h |
| 1112 | 2.199 | ревизия двигатель, контакты ножевого узла |  | 1h | 2026-04-09 09:00 A | 2026-04-09 10:00 A |  | 100% |  |  | start no earlier than 2026-04-09 09:00 | Тимофеев В | 1h | 1h |
| 1113 | 2.200 | земена сеток печи |  | 2h | 2026-05-04 09:00 A | 2026-05-04 11:00 A |  | 100% |  |  | start no earlier than 2026-05-04 09:00 | Макаревич А; Некрасов А; Тимофеев В | 4h | 4h |
| 1114 | 2.201 | получить метал-лоток 100х50, закрепить слева от двери выхода с зоны экструдера и уложить все провода | manual | 2h | 2026-04-11 09:00 A | 2026-04-11 11:00 A |  | 100% |  |  |  | Труфанов А | 2h | 2h |
| 1115 | 2.202 | получить аллюминевый скотч- замотать стыки циклона, улитки печек, место рычага шибера улитки | manual | 2h | 2026-04-05 09:00 A | 2026-04-05 11:00 A |  | 100% |  |  | start no earlier than 2026-04-05 09:00 | Труфанов А | 2h | 2h |
| 1116 | 2.203 | **установить водоподготовку на парогенератор** |  | 118d? | 2026-04-08 09:00 A | 2026-09-17 18:00 |  | 3% | 114.81d? | 123.59d |  |  | 17.25h | 0.25h |
| 1117 | 2.203.1 | планирование монтажа |  | 1h | 2026-08-31 09:00 | 2026-08-31 10:00 |  |  |  | 138.47d | start no earlier than 2026-08-31 09:00 | Домоводов К | 1h |  |
| 1118 | 2.203.2 | запрос КП | milestone | 0min | 2026-04-08 09:00 A | 2026-04-08 09:00 A |  | 100% |  |  | start no earlier than 2026-04-08 09:00 | Зорькин В |  |  |
| 1119 | 2.203.3 | решение о покупке | milestone | 0d | 2026-04-08 18:00 A | 2026-04-08 18:00 A | 1118FS+1d | 100% |  |  | start no earlier than 2026-04-03 08:00 | Домоводов К |  |  |
| 1120 | 2.203.4 | контроль поставки |  | 15min | 2026-04-27 09:00 A | 2026-04-27 09:15 A |  | 100% |  |  | start no earlier than 2026-04-27 09:00 | Зорькин В | 0.25h | 0.25h |
| 1121 | 2.203.5 | монтаж (установка) |  | 1d? | 2026-09-17 09:00 | 2026-09-17 18:00 |  |  |  | 123.59d | start no earlier than 2026-09-17 09:00 | Тимофеев В; Некрасов А | 16h |  |
| 1122 | 2.204 | **изготовить сетку перед фильерой экструдера от костей** |  | 11d | 2026-04-17 09:00 A | 2026-05-01 18:00 A |  | 100% |  |  |  |  | 83.25h | 83.25h |
| 1123 | 2.204.1 | составить чертеж |  | 2h | 2026-04-17 09:00 A | 2026-04-17 11:00 A |  | 100% |  |  | start no earlier than 2026-04-17 09:00 | Зорькин В | 2h | 2h |
| 1124 | 2.204.2 | разместить заказ |  | 1h | 2026-04-18 11:00 A | 2026-04-20 10:00 A | 1123FS+1d | 100% |  |  | start no earlier than 2026-04-03 08:00 | Зорькин В | 1h | 1h |
| 1125 | 2.204.3 | изготовление |  | 10d | 2026-04-18 12:00 A | 2026-05-01 18:00 A | 1124 | 100% |  |  | start no earlier than 2026-04-03 08:00 | Подрядчик | 80h | 80h |
| 1126 | 2.204.4 | контроль | milestone | 0d | 2026-04-30 12:00 A | 2026-04-30 12:00 A | 1125 | 100% |  |  | start no earlier than 2026-04-03 08:00 | Зорькин В |  |  |
| 1127 | 2.204.5 | орг забрать |  | 15min | 2026-05-01 12:00 A | 2026-05-01 12:15 A | 1126FS+1d | 100% |  |  | start no earlier than 2026-04-03 08:00 | Зорькин В | 0.25h | 0.25h |

| ID | WBS | Task | Type | Duration | Start | Finish | Predecessors | Complete | Actual start | Actual finish | Constraint | Resources | Work | Actual work |
| --- | --- | --- | --- | --- | --- | --- | --- | --- | --- | --- | --- | --- | --- | --- |
| 1128 | 2.205 | **вешалка для дамских сумочек в тамбур при надевании бахил** |  | 13.25d | 2026-05-04 09:00 | 2026-05-18 11:00 |  | 100% | 2026-04-17 09:00 | 2026-06-15 10:00 |  |  | 82h | 82h |
| 1129 | 2.205.1 | заявка |  | 1h | 2026-04-17 09:00 A | 2026-04-17 10:00 A |  | 100% |  |  | start no earlier than 2026-04-17 09:00 | Зорькин В | 1h | 1h |
| 1130 | 2.205.2 | доставка |  | 10d | 2026-04-17 10:00 A | 2026-05-01 10:00 A | 1129 | 100% |  |  | start no earlier than 2026-04-02 08:00 | Карабанов | 80h | 80h |
| 1131 | 2.205.3 | монтаж |  | 1h | 2026-06-13 09:00 A | 2026-06-15 10:00 A | 1130 | 100% |  |  | start no earlier than 2026-06-13 09:00 | Бобренок В | 1h | 1h |
| 1132 | 2.206 | Врезка фитинга 1/2х12мм в дверку прекондиционера 2 цех (созвон с Зорькиным) |  | 30min | 2026-04-09 09:00 A | 2026-04-09 09:30 A |  | 100% |  |  | start no earlier than 2026-04-09 09:00 | Тимофеев В | 0.5h | 0.5h |
| 1133 | 2.207 | проверить контур управления насосом ПГ |  | 1h | 2026-04-02 09:00 A | 2026-04-02 10:00 A |  | 100% |  |  | start no earlier than 2026-04-02 09:00 | Тимофеев В | 1h | 1h |
| 1134 | 2.208 | замена электродной группы или чистка до металла электродов |  | 1h | 2026-04-16 09:00 A | 2026-04-16 10:00 A |  | 100% |  |  | start no earlier than 2026-04-16 09:00 | Макаревич А | 1h | 1h |
| 1135 | 2.209 | закрепить шкаф управления приточной вентиляцией |  | 30min | 2026-04-01 08:00 A | 2026-04-01 09:30 A |  | 100% |  |  | start no earlier than 2026-04-01 08:00 | Бобренок В | 0.5h | 0.5h |
| 1136 | 2.210 | установить пневмо пистолеты на охладители с длинным носиком (у мастеров) |  | 1h | 2026-04-01 08:00 A | 2026-04-01 10:00 A |  | 100% |  |  | start no earlier than 2026-04-01 08:00 | Бобренок В | 1h | 1h |
| 1137 | 2.211 | утечка группа безопасности котел склад навесок устранить |  | 30min | 2026-03-31 08:00 A | 2026-03-31 09:30 A |  | 100% |  |  | start no earlier than 2026-03-31 08:00 | Бобренок В | 0.5h | 0.5h |
| 1138 | 2.212 | закрепить две трубы подачи воздуха в охладителе, пневмо шланг подачи в улитку крепим к стене |  | 2h | 2026-03-27 09:00 A | 2026-03-27 11:00 A |  | 100% |  |  | start no earlier than 2026-03-27 08:00 | Труфанов А | 2h | 2h |
| 1139 | 2.213 | изготовить 2 лотка 700х400х50 мм из нерж под транспортерную ленту транспортер №1 и №2 |  | 6h | 2026-04-04 09:00 A | 2026-04-06 16:00 A |  | 100% |  |  | start no earlier than 2026-04-04 09:00 | Макаревич А | 6h | 6h |
| 1140 | 2.214 | открутить вилку-розетку возле насоса подачи жиров в экструдер |  | 1h | 2026-04-01 09:00 A | 2026-04-01 10:00 A |  | 100% |  |  | start no earlier than 2026-04-01 09:00 | Бобренок В | 1h | 1h |
| 1141 | 2.215 | прикруть кусок металлопрофиля ,чтобы заделать отверстие куда проходит труба отопления (зона где привозят навески) фото скину | manual | 1h | 2026-03-29 09:00 A | 2026-03-29 10:00 A |  | 100% |  |  | start no earlier than 2026-03-29 09:00 | Бундин В | 1h | 1h |
| 1142 | 2.216 | **замена ленты нория** |  | 4.5d | 2026-03-27 08:00 A | 2026-04-02 13:00 A |  | 100% |  |  |  |  | 39.5h | 39.5h |
| 1143 | 2.216.1 | получить материал весь | manual | 30min | 2026-03-29 09:00 A | 2026-03-29 09:30 A |  | 100% |  |  | start no earlier than 2026-03-29 09:00 | Тимофеев В | 0.5h | 0.5h |
| 1144 | 2.216.2 | подготовка кондуктора |  | 2h | 2026-03-27 08:00 A | 2026-03-27 11:00 A |  | 100% |  |  | start no earlier than 2026-03-27 08:00 | Некрасов А; Тимофеев В | 4h | 4h |
| 1145 | 2.216.3 | подготовить к установке норийную ленту, ковши, болты |  | 15h | 2026-03-28 09:00 A | 2026-03-31 17:00 A |  | 100% |  |  | start no earlier than 2026-03-28 09:00 | Дедов В | 15h | 15h |
| 1146 | 2.216.4 | подготовка крепления лебедки для затягивания ленты |  | 4h | 2026-03-31 09:00 A | 2026-03-31 13:00 A |  | 100% |  |  | start no earlier than 2026-03-31 09:00 | Труфанов А; Некрасов А | 8h | 8h |
| 1147 | 2.216.5 | замена ленты |  | 4h | 2026-04-02 09:00 A | 2026-04-02 13:00 A |  | 100% |  |  | start no earlier than 2026-04-02 09:00 | Некрасов А; Макаревич А; Тимофеев В | 12h | 12h |
| 1148 | 2.217 | закрепить гофру на трос -рефрежераторы на территории |  | 1h | 2026-03-27 09:00 A | 2026-03-27 10:00 A |  | 100% |  |  | start no earlier than 2026-03-27 09:00 | Некрасов А | 1h | 1h |
| 1149 | 2.218 | монтаж розетки до канистры с жиром для подачи в экструдер (подключение весов) |  | 2h | 2026-03-26 09:00 A | 2026-03-26 11:00 A |  | 100% |  |  | start no earlier than 2026-03-26 09:00 | Дедов В | 2h | 2h |
| 1150 | 2.219 | заделать щели / маршпуты крыс . Зона хранения навесок (закрутить профлист и запенить отверстие под трубу) |  | 1h | 2026-03-26 09:00 A | 2026-03-26 10:00 A |  | 100% |  |  | start no earlier than 2026-03-26 09:00 | Некрасов А | 1h | 1h |
| 1151 | 2.220 | оперативная замена шнеков |  | 6h | 2026-03-23 09:00 A | 2026-03-23 16:00 A |  | 100% |  |  | start no earlier than 2026-03-23 09:00 | Бобренок В; Бундин В | 12h | 12h |
| 1152 | 2.221 | выдать шланг для продувки бестрома |  | 1h | 2026-03-23 09:00 A | 2026-03-23 10:00 A |  | 100% |  |  | start no earlier than 2026-03-23 09:00 | Бундин В | 1h | 1h |
| 1153 | 2.222 | приварить уголок на лотке в охладитель (фото скину) |  | 2h | 2026-03-24 09:00 A | 2026-03-24 11:00 A |  | 100% |  |  | start no earlier than 2026-03-24 09:00 | Бобренок В | 2h | 2h |
| 1154 | 2.223 | на транспортере с охладителя отрезать концы саморезов на оргстекле (зарапают руки) |  | 1h | 2026-03-23 09:00 A | 2026-03-23 10:00 A |  | 100% |  |  | start no earlier than 2026-03-23 08:00 | Бундин В | 1h | 1h |
| 1155 | 2.224 | насосная станция включить и проверить на кз (выбивало автомат) |  | 2h | 2026-03-31 09:00 A | 2026-03-31 11:00 A |  | 100% |  |  | start no earlier than 2026-03-31 09:00 | Тимофеев В | 2h | 2h |
| 1156 | 2.225 | закрепить трубу РР к стене в районе хранения кубов гидролизат |  | 1h | 2026-03-26 09:00 A | 2026-03-26 10:00 A |  | 100% |  |  | start no earlier than 2026-03-26 09:00 | Тимофеев В | 1h | 1h |
| 1157 | 2.226 | настройка продувка ПГ ч/з 30 мин |  | 30min | 2026-04-02 09:00 A | 2026-04-02 09:30 A |  | 100% |  |  | start no earlier than 2026-04-02 09:00 | Шуранов Ю | 0.5h | 0.5h |
| 1158 | 2.227 | на красном смесителе закусывает ручку шибера - разобраться |  | 2h | 2026-03-26 09:00 A | 2026-03-26 11:00 A |  | 100% |  |  | start no earlier than 2026-03-26 09:00 | Тимофеев В | 2h | 2h |
| 1159 | 2.228 | посмотреть эл. магнит на двери вход ц.2 |  | 1h | 2026-03-27 09:00 A | 2026-03-27 10:00 A |  | 100% |  |  | start no earlier than 2026-03-27 09:00 | Тимофеев В | 1h | 1h |
| 1160 | 2.229 | ящик возле нашего кабинета- прибить или прикрутить дно |  | 1h | 2026-03-22 09:00 A | 2026-03-23 10:00 A |  | 100% |  |  | start no earlier than 2026-03-22 09:00 | Бобренок В | 1h | 1h |
| 1161 | 2.230 | слить конденсат, почистить фильтры и продуть радиаторы |  | 1h | 2026-03-21 09:00 A | 2026-03-23 10:00 A |  | 100% |  |  | start no earlier than 2026-03-21 09:00 | Дедов В | 1h | 1h |
| 1162 | 2.231 | забрать кресло Сапелина на ремонт в слесарку с каб. Шелепова |  | 2h | 2026-03-23 09:00 A | 2026-03-23 11:00 A |  | 100% |  |  | start no earlier than 2026-03-23 09:00 | Тимофеев В | 2h | 2h |
| 1163 | 2.232 | закрепить кабель в гофре на клипсы от розетки слева от ворот жировика |  | 1h | 2026-03-26 09:00 A | 2026-03-26 10:00 A |  | 100% |  |  | start no earlier than 2026-03-26 09:00 | Труфанов А | 1h | 1h |
| 1164 | 2.233 | уложить выше подиума и красиво закрепить на клипсы кабель в гофре от ворот справа (фото вышлю) |  | 1h | 2026-04-16 09:00 A | 2026-04-16 10:00 A |  | 100% |  |  | start no earlier than 2026-04-10 09:00 | Тимофеев В | 1h | 1h |
| 1165 | 2.234 | монтаж отбойников по периметру |  | 4h | 2026-03-25 09:00 A | 2026-03-25 13:00 A |  | 100% |  |  | start no earlier than 2026-03-25 09:00 | Бундин В | 4h | 4h |
| 1166 | 2.235 | перенос отбойник ГП с стороны эл щита, что бы не входл палет |  | 2h | 2026-03-19 08:00 A | 2026-03-19 11:00 A |  | 100% |  |  | start no earlier than 2026-03-19 08:00 | Бобренок В | 2h | 2h |
| 1167 | 2.236 | установить лист сендвич панель на стену жир/экструдер с стороны мойки |  | 3h | 2026-04-07 09:00 A | 2026-04-07 12:00 A |  | 100% |  |  | start no earlier than 2026-04-07 09:00 | Некрасов А; Труфанов А | 6h | 6h |
| 1168 | 2.237 | подлючить пневмоулитку к воздуху в охладителе |  | 1h | 2026-03-31 09:00 A | 2026-03-31 10:00 A |  | 100% |  |  | start no earlier than 2026-03-31 09:00 | Бобренок В | 1h | 1h |
| 1169 | 2.238 | выдать уплотнение на крышки прекондиционера |  | 30min | 2026-03-19 08:00 A | 2026-03-19 09:30 A |  | 100% |  |  | start no earlier than 2026-03-19 08:00 | Бобренок В | 0.5h | 0.5h |

| ID | WBS | Task | Type | Duration | Start | Finish | Predecessors | Complete | Actual start | Actual finish | Total slack | Free slack | Constraint | Resources | Work | Actual work |
| --- | --- | --- | --- | --- | --- | --- | --- | --- | --- | --- | --- | --- | --- | --- | --- | --- |
| 1170 | 2.239 | **ворота фасовка** |  | 0.12d | 2026-03-26 09:00 A | 2026-03-26 10:00 A |  | 100% |  |  |  |  |  |  | 1h | 1h |
| 1171 | 2.239.1 | закрепить гофру до розетки слева от ворот и закрыть монтажную коробку |  | 1h | 2026-03-26 09:00 A | 2026-03-26 10:00 A |  | 100% |  |  |  |  | start no earlier than 2026-03-26 09:00 | Некрасов А | 1h | 1h |
| 1172 | 2.240 | **забивает лоток прекондиционер/экструдер, передалать** |  | 1.62d | 2026-08-31 09:00 | 2026-09-01 15:00 |  |  |  |  | 136.97d |  |  |  | 5h |  |
| 1173 | 2.240.1 | изготовить чертежи лекалы для воронки |  | 1h | 2026-08-31 09:00 | 2026-08-31 10:00 |  |  |  |  | 136.97d | 0d | start no earlier than 2026-08-31 09:00 | Шуранов Ю | 1h |  |
| 1174 | 2.240.2 | изготовление воронки |  | 4h | 2026-09-01 10:00 | 2026-09-01 15:00 | 1173FS+1d |  |  |  | 136.97d |  | start no earlier than 2026-09-01 09:00 | Макаревич А | 4h |  |
| 1175 | 2.241 | уложить в лоток пучек управления заслонками, отвязать от батареи |  | 1h | 2026-03-17 08:00 A | 2026-03-17 10:00 A |  | 100% |  |  |  |  | start no earlier than 2026-03-17 08:00 | Бобренок В | 1h | 1h |
| 1176 | 2.242 | распред коробка подкл вентилятора которого уже нет (кондиционер №3 жиры) - облогородить |  | 30min | 2026-03-17 08:00 A | 2026-03-17 09:30 A |  | 100% |  |  |  |  | start no earlier than 2026-03-17 08:00 | Бобренок В | 0.5h | 0.5h |
| 1177 | 2.243 | удалить лотаки с барана |  | 2h | 2026-03-19 09:00 A | 2026-03-19 11:00 A |  | 100% |  |  |  |  | start no earlier than 2026-03-19 08:00 | Труфанов А; Некрасов А | 4h | 4h |
| 1178 | 2.244 | упорядочить проводку регистратора данных - стянуть в пучек |  | 1h | 2026-03-20 09:00 A | 2026-03-20 10:00 A |  | 100% |  |  |  |  | start no earlier than 2026-03-20 09:00 | Дедов В | 1h | 1h |
| 1179 | 2.245 | **открыть люк у бестрома / ревизяия / закрыть на герметик** |  | 0.12d | 2026-03-19 09:00 A | 2026-03-19 10:00 A |  | 100% |  |  |  |  |  | Труфанов А | 2h | 2h |
| 1180 | 2.245.1 | хим. Лаборатория устранить течь с оборудования |  | 1h | 2026-03-19 09:00 A | 2026-03-19 10:00 A |  | 100% |  |  |  |  | start no earlier than 2026-03-19 08:00 | Труфанов А | 1h | 1h |
| 1181 | 2.246 | **изготовить 2 лотка из нерж. в зоне жиров по аналогии с первым цехом под транспортером тип 1 и тип 2** |  | 0.25d | 2026-03-16 09:00 A | 2026-03-16 11:00 A |  | 100% |  |  |  |  |  | Макаревич А | 4h | 4h |
| 1182 | 2.246.1 | установить отбойник в зону ХХХ, брать в 5А |  | 2h | 2026-03-16 09:00 A | 2026-03-16 11:00 A |  | 100% |  |  |  |  | start no earlier than 2026-03-16 09:00 | Бобренок В | 2h | 2h |
| 1183 | 2.247 | **сточить острый край лотка загрузки в охладитель** |  | 0.12d | 2026-03-15 09:00 A | 2026-03-16 10:00 A |  | 100% |  |  |  |  |  | Некрасов А | 3h | 3h |
| 1184 | 2.247.1 | вывезти люльку, вывезти бойлер, провода на жирах спрятать в коробку |  | 1h | 2026-03-15 09:00 A | 2026-03-16 10:00 A |  | 100% |  |  |  |  | start no earlier than 2026-03-15 09:00 | Бобренок В | 1h | 1h |
| 1185 | 2.247.2 | бойлер в душе - установить трубку на клапан сброса и смонтировать её по стене до канализ трубы |  | 1h | 2026-03-16 09:00 A | 2026-03-16 10:00 A |  | 100% |  |  |  |  | start no earlier than 2026-03-16 09:00 | Макаревич А | 1h | 1h |
| 1186 | 2.248 | облогородить кабельный пучек, сделать аккуратно/закрыить крышкой. Слева от двери экструдер/тамбур под лестницей |  | 6h | 2026-04-09 09:00 A | 2026-04-09 16:00 A |  | 100% |  |  |  |  | start no earlier than 2026-04-11 09:00 | Труфанов А | 6h | 6h |
| 1187 | 2.249 | **изготовить сетку после барабана по аналогии с сущ 10мм** |  | 2.5d | 2026-03-12 09:00 A | 2026-03-16 13:00 A |  | 100% |  |  |  |  |  | Макаревич А | 25.5h | 25.5h |
| 1188 | 2.249.1 | на лоток загрузки в охладитель - установить доп борт с левой стороны, такой же как с правой (съемный) |  | 4h | 2026-03-15 09:00 A | 2026-03-16 13:00 A |  | 100% |  |  |  |  | start no earlier than 2026-03-15 09:00 | Бобренок В | 4h | 4h |
| 1189 | 2.249.2 | квадропак стол подачи пакетов устновить кайки с барашком/приварить. + зафиксировать от бокового смещения |  | 1h | 2026-03-16 09:00 A | 2026-03-16 10:00 A |  | 100% |  |  |  |  | start no earlier than 2026-03-16 09:00 | Тимофеев В | 1h | 1h |
| 1190 | 2.249.3 | изменить время разгон/торожение привод барабана |  | 30min | 2026-03-12 09:00 A | 2026-03-12 09:30 A |  | 100% |  |  |  |  | start no earlier than 2026-03-13 09:00 | Дедов В | 0.5h | 0.5h |
| 1191 | 2.250 | изготовить кожух на шестерни прекондиционера |  | 6h | 2026-04-03 09:00 A | 2026-04-03 16:00 A |  | 100% |  |  |  |  | start no earlier than 2026-04-03 09:00 | Макаревич А | 6h | 6h |
| 1192 | 2.251 | **ремонт датчик давления линия 3** |  | 30.25d | 2026-03-26 09:00 | 2026-04-30 11:00 |  | 100% | 2026-05-14 09:00 | 2026-06-11 12:00 |  |  |  |  | 124.75h | 124.75h |
| 1193 | 2.251.1 | заявка переходник G1/4 /M20*1.5 токарю |  | 15min | 2026-05-14 09:00 A | 2026-05-14 09:15 A |  | 100% |  |  |  |  | start no earlier than 2026-05-14 09:00 | Зорькин В | 0.25h | 0.25h |
| 1194 | 2.251.2 | контроль изг/орг доставка | milestone | 0d | 2026-05-14 09:15 A | 2026-05-14 09:15 A | 1193 | 100% |  |  |  |  | start no earlier than 2026-03-20 08:00 |  |  |  |
| 1195 | 2.251.3 | заказ замена + в ЗИП |  | 15min | 2026-05-14 09:15 A | 2026-05-14 09:30 A | 1194 | 100% |  |  |  |  | start no earlier than 2026-03-13 09:00 | Зорькин В | 0.25h | 0.25h |
| 1196 | 2.251.4 | заявка на РВД удлинитель |  | 15min | 2026-05-14 09:30 A | 2026-05-14 09:45 A | 1195 | 100% |  |  |  |  | start no earlier than 2026-03-12 08:00 | Зорькин В | 0.25h | 0.25h |
| 1197 | 2.251.5 | доставка |  | 15d | 2026-05-14 09:45 A | 2026-06-04 09:45 A | 1196 | 100% |  |  |  |  | start no earlier than 2026-03-12 08:00 | Карабанов | 120h | 120h |
| 1198 | 2.251.6 | монтаж |  | 1h | 2026-06-04 09:00 A | 2026-06-04 10:00 A |  | 100% |  |  |  |  | start no earlier than 2026-06-04 09:00 | Тимофеев В | 1h | 1h |
| 1199 | 2.251.7 | датчик давления экструдера проверка подключения |  | 3h | 2026-06-11 09:00 A | 2026-06-11 12:00 A |  | 100% |  |  |  |  | start no earlier than 2026-06-11 09:00 | Дедов В | 3h | 3h |

| ID | WBS | Task | Duration | Start | Finish | Predecessors | Complete | Constraint | Resources | Work | Actual work |
| --- | --- | --- | --- | --- | --- | --- | --- | --- | --- | --- | --- |
| 1200 | 2.252 | **установить сирену при отключении автомата ПГ** | 28.12d | 2026-03-13 09:00 A | 2026-04-22 10:00 A |  | 100% |  |  | 81.5h | 81.5h |
| 1201 | 2.252.1 | заявка на реле / сирена | 30min | 2026-03-13 09:00 A | 2026-03-13 09:30 A |  | 100% | start no earlier than 2026-03-13 09:00 | Шуранов Ю | 0.5h | 0.5h |
| 1202 | 2.252.2 | доставка | 10d | 2026-03-13 09:30 A | 2026-03-27 09:30 A | 1201 | 100% | start no earlier than 2026-03-12 08:00 | Карабанов | 80h | 80h |
| 1203 | 2.252.3 | монтаж в схему (проверить почему не срабатывает) | 1h | 2026-04-22 09:00 A | 2026-04-22 10:00 A | 1202 | 100% | start no earlier than 2026-04-22 09:00 | Дедов В | 1h | 1h |
| 1204 | 2.253 | **установить сирену на отключение автоматов в печи** | 16d | 2026-03-11 09:00 A | 2026-04-01 18:00 A |  | 100% |  |  | 44.25h | 44.25h |
| 1205 | 2.253.1 | заявка сирена | 15min | 2026-03-13 09:30 A | 2026-03-13 09:45 A | 1201 | 100% | start no earlier than 2026-03-12 08:00 | Шуранов Ю | 0.25h | 0.25h |
| 1206 | 2.253.2 | доставка | 5d | 2026-03-13 09:45 A | 2026-03-20 09:45 A | 1205 | 100% | start no earlier than 2026-03-12 08:00 | Карабанов | 40h | 40h |
| 1207 | 2.253.3 | монтаж | 2h | 2026-03-19 09:00 A | 2026-03-19 11:00 A | 1206 | 100% | start no earlier than 2026-03-19 09:00 | Дедов В | 2h | 2h |
| 1208 | 2.253.4 | доставка сирены | 10d | 2026-03-19 09:00 A | 2026-04-01 18:00 A |  | 100% | start no earlier than 2026-03-19 08:00 |  |  |  |
| 1209 | 2.253.5 | монтаж сирены | 1h | 2026-03-31 09:00 A | 2026-03-31 10:00 A | 1208 | 100% | start no earlier than 2026-03-31 09:00 | Дедов В | 1h | 1h |
| 1210 | 2.253.6 | настройка доводчика дверь вход в зону экструдера | 1h | 2026-03-11 09:00 A | 2026-03-11 10:00 A |  | 100% | start no earlier than 2026-03-11 09:00 | Макаревич А | 1h | 1h |
| 1211 | 2.254 | **выпадает фильера с матрицы - делать стпор** | 0.5d | 2026-04-27 09:00 A | 2026-04-27 13:00 A |  | 100% |  |  | 4.5h | 4.5h |
| 1212 | 2.254.1 | подготовка сверла / метчика | 30min | 2026-04-27 09:00 A | 2026-04-27 09:30 A |  | 100% | start no earlier than 2026-04-27 09:00 | Шуранов Ю | 0.5h | 0.5h |
| 1213 | 2.254.2 | сверлить и резать резьбу для фикс болта | 4h | 2026-04-27 09:00 A | 2026-04-27 13:00 A |  | 100% | start no earlier than 2026-04-27 09:00 | Подрядчик | 4h | 4h |
| 1214 | 2.255 | **замена поликарбанат на перегородках металопрофилем** | 68.75d | 2026-03-11 09:00 A | 2026-06-15 16:00 A |  | 100% |  |  | 114h | 114h |
| 1215 | 2.255.1 | расчет материал стена охладитель | 1h | 2026-03-19 09:00 A | 2026-03-19 10:00 A |  | 100% | start no earlier than 2026-03-19 09:00 | Шуранов Ю | 1h | 1h |
| 1216 | 2.255.2 | заявка | 1h | 2026-03-19 10:00 A | 2026-03-19 11:00 A | 1215 | 100% | start no earlier than 2026-03-12 08:00 | Шуранов Ю | 1h | 1h |
| 1217 | 2.255.3 | доставка | 10d | 2026-03-19 11:00 A | 2026-04-02 11:00 A | 1216 | 100% | start no earlier than 2026-03-12 08:00 | Карабанов | 80h | 80h |
| 1218 | 2.255.4 | из металлопрофиля 3м. Обшиваем охладитель внутри и снаружи + утеплитель | 5h | 2026-05-29 09:00 A | 2026-05-29 15:00 A |  | 100% | start no earlier than 2026-05-29 09:00 | Некрасов А; Бобренок В | 10h | 10h |
| 1219 | 2.255.5 | продолжить монтаж (со стороны охладителя и со стороны жиров) | 6h | 2026-06-15 09:00 A | 2026-06-15 16:00 A | 1217 | 100% | start no earlier than 2026-06-15 09:00 | Некрасов А; Бундин В | 12h | 12h |
| 1220 | 2.255.6 | замена шланг реле давление и настройка. фильтр приточная офис | 1h | 2026-03-12 09:00 A | 2026-03-12 10:00 A |  | 100% | start no earlier than 2026-03-13 09:00 | Дедов В | 1h | 1h |
| 1221 | 2.255.7 | замена насос гидролизата | 1h | 2026-03-12 08:00 A | 2026-03-12 10:00 A |  | 100% | start no earlier than 2026-03-12 08:00 | Бундин В; Тимофеев В | 2h | 2h |
| 1222 | 2.255.8 | замена подшипник прекондиционер | 1h | 2026-03-12 09:00 A | 2026-03-12 10:00 A |  | 100% | start no earlier than 2026-03-12 08:00 | Бундин В | 1h | 1h |
| 1223 | 2.255.9 | ремонт вал охладитель | 4h | 2026-03-12 09:00 A | 2026-03-12 13:00 A |  | 100% | start no earlier than 2026-03-19 09:00 | Тимофеев В | 4h | 4h |
| 1224 | 2.255.10 | плохо закр дверь на фасовку. заменить личинку двери / выравнить напильником в коробке. | 1h | 2026-03-11 09:00 A | 2026-03-11 10:00 A |  | 100% | start no earlier than 2026-03-11 09:00 | Макаревич А | 1h | 1h |
| 1225 | 2.255.11 | крепить поликарбанат стена печь/жир длинная часть | 1h | 2026-03-11 09:00 A | 2026-03-11 10:00 A |  | 100% | start no earlier than 2026-03-11 09:00 | Макаревич А | 1h | 1h |
| 1226 | 2.256 | сетку на выходе барабана жир закрепить. Устр вспомогактельные крепжи операторам | 1h | 2026-03-19 09:00 A | 2026-03-19 10:00 A |  | 100% | start no earlier than 2026-03-19 09:00 | Тимофеев В | 1h | 1h |

| ID | WBS | Task | Duration | Start | Finish | Predecessors | Complete | Constraint | Resources | Work | Actual work |
| --- | --- | --- | --- | --- | --- | --- | --- | --- | --- | --- | --- |
| 1227 | 2.257 | **установить / снять трубу от ПГ для чистки сетки** | 0.25d | 2026-03-12 09:00 A | 2026-03-12 11:00 A |  | 100% |  | Тимофеев В | 7h | 7h |
| 1228 | 2.257.1 | чистка циклон снаружи от копоти. Средство для чистки выдаст Шелепов К | 2h | 2026-03-12 09:00 A | 2026-03-12 11:00 A |  | 100% | start no earlier than 2026-03-12 09:00 | Тимофеев В; Бундин В | 4h | 4h |
| 1229 | 2.257.2 | замена датчик расхода пара | 1h | 2026-03-12 09:00 A | 2026-03-12 10:00 A |  | 100% | start no earlier than 2026-03-12 09:00 | Некрасов А | 1h | 1h |
| 1230 | 2.258 | **замениь фитинги на жир** | 0.25d | 2026-03-10 09:00 A | 2026-03-10 11:00 A | 614 | 100% |  | Некрасов А | 4h | 4h |
| 1231 | 2.258.1 | замена бойлер в мойке экструдера на бойлер который весит за экструдером | 2h | 2026-03-10 09:00 A | 2026-03-10 11:00 A |  | 100% | start no earlier than 2026-03-10 09:00 | Дедов В | 2h | 2h |
| 1232 | 2.259 | **переключить освещение на автолномный выключатель, запитанный от системы освещения, а не от оборудования.** | 15.38d | 2026-03-05 09:00 A | 2026-03-26 12:00 A |  | 100% |  |  | 13h | 13h |
| 1233 | 2.259.1 | ножевой узел | 1.5h | 2026-03-26 09:00 A | 2026-03-26 10:30 A |  | 100% | start no earlier than 2026-03-26 09:00 | Дедов В; Некрасов А | 3h | 3h |
| 1234 | 2.259.2 | бестром | 1.5h | 2026-03-26 09:00 A | 2026-03-26 10:30 A |  | 100% | start no earlier than 2026-03-26 09:00 | Некрасов А; Дедов В | 3h | 3h |
| 1235 | 2.259.3 | выход с охладителя | 1.5h | 2026-03-26 10:30 A | 2026-03-26 12:00 A | 1233 | 100% | start no earlier than 2026-03-26 09:00 | Дедов В; Некрасов А | 3h | 3h |
| 1236 | 2.259.4 | переключить норию квадропака стационрно, без розетки | 2h | 2026-03-05 09:00 A | 2026-03-05 11:00 A |  | 100% | start no earlier than 2026-03-05 09:00 | Дедов В | 2h | 2h |
| 1237 | 2.259.5 | перемонтаж провода заземления нории квадропак эстетично и удобно для прохода и уборщицы | 2h | 2026-03-05 09:00 A | 2026-03-05 11:00 A |  | 100% | start no earlier than 2026-03-05 09:00 | Дедов В | 2h | 2h |
| 1238 | 2.260 | **сетки на дно печи в зип изготовить** | 10.5d | 2026-03-10 09:00 A | 2026-03-24 13:00 A |  | 100% |  |  | 85h | 85h |
| 1239 | 2.260.1 | заявка сетка уголки | 1h | 2026-03-10 09:00 A | 2026-03-10 10:00 A |  | 100% | start no earlier than 2026-03-10 09:00 | Шуранов Ю | 1h | 1h |
| 1240 | 2.260.2 | доставка | 10d | 2026-03-10 10:00 A | 2026-03-24 10:00 A | 1239 | 100% | start no earlier than 2026-03-06 08:00 | Карабанов | 80h | 80h |
| 1241 | 2.260.3 | изготовление | 4h | 2026-03-24 09:00 A | 2026-03-24 13:00 A | 1240 | 100% | start no earlier than 2026-03-24 09:00 | Тимофеев В | 4h | 4h |
| 1242 | 2.261 | закрепить лоток для совка с спиртом. Изготовить усилит косынку | 2h | 2026-03-07 09:00 A | 2026-03-09 11:00 A |  | 100% | start no earlier than 2026-03-07 09:00 | Бундин В | 2h | 2h |
| 1243 | 2.262 | **установить монтажную коробку квадропак. Инструктаж Шуранов по тлф** | 0.12d | 2026-03-06 08:00 A | 2026-03-06 10:00 A |  | 100% |  | Бундин В | 2h | 2h |
| 1244 | 2.262.1 | Не уходит вода в душевой кабине, посмотреть, устранить. | 1h | 2026-03-06 08:00 A | 2026-03-06 10:00 A |  | 100% | start no earlier than 2026-03-06 08:00 | Бобренок В | 1h | 1h |
| 1245 | 2.263 | ревизия вентиляторов охладителя, не закрываются крышки | 30min | 2026-03-05 09:00 A | 2026-03-05 09:30 A |  | 100% | start no earlier than 2026-03-05 09:00 | Тимофеев В | 0.5h | 0.5h |
| 1246 | 2.264 | **Квадропак** | 0.38d | 2026-03-05 09:00 A | 2026-03-05 12:00 A |  | 100% |  |  | 3h | 3h |
| 1247 | 2.264.1 | Уложить красиво провода на лестнице квадропака цех 2 (созвон с Шурановым) | 3h | 2026-03-05 09:00 A | 2026-03-05 12:00 A |  | 100% | start no earlier than 2026-03-05 09:00 | Дедов В | 3h | 3h |
| 1248 | 2.265 | **Сброс ошибо Н4 и Е9 на кондиционерах** | 0.08d | 2026-03-04 09:00 A | 2026-03-04 09:40 A |  | 100% |  |  | 0.67h | 0.67h |
| 1249 | 2.265.1 | Договориться с оплотом по решению | 30min | 2026-03-04 09:00 A | 2026-03-04 09:30 A |  | 100% | start no earlier than 2026-03-04 09:00 | Зорькин В | 0.5h | 0.5h |
| 1250 | 2.265.2 | устранить ошибки | 10min | 2026-03-04 09:30 A | 2026-03-04 09:40 A | 1249 | 100% | start no earlier than 2026-03-03 08:00 | Зорькин В | 0.17h | 0.17h |
| 1251 | 2.266 | закреить поликарбанат по периметру | 4h | 2026-03-08 09:00 A | 2026-03-09 13:00 A |  | 100% | start no earlier than 2026-03-08 09:00 | Макаревич А | 4h | 4h |
| 1252 | 2.267 | смазать ручки и шарниры дверей | 1h | 2026-03-08 09:00 A | 2026-03-09 10:00 A |  | 100% | start no earlier than 2026-03-08 09:00 | Макаревич А | 1h | 1h |

| ID | WBS | Task | Duration | Start | Finish | Predecessors | Complete | Constraint | Resources | Work | Actual work |
| --- | --- | --- | --- | --- | --- | --- | --- | --- | --- | --- | --- |
| 1253 | 2.268 | **сделать ровным порог вход в мойку экструдера** | 23.5d | 2026-03-03 09:00 A | 2026-04-03 13:00 A |  | 100% |  |  | 86.25h | 86.25h |
| 1254 | 2.268.1 | Показать Олегу порог | 30min | 2026-03-03 09:00 A | 2026-03-03 09:30 A |  | 100% | start no earlier than 2026-03-03 08:00 | Зорькин В; Олег лукас | 1h | 1h |
| 1255 | 2.268.2 | составить план ремонта | 15min | 2026-03-03 09:00 A | 2026-03-03 09:15 A |  | 100% | start no earlier than 2026-03-03 09:00 | Зорькин В; Некрасов А; Труфанов А | 0.75h | 0.75h |
| 1256 | 2.268.3 | составить заявку на материал | 30min | 2026-03-04 09:00 A | 2026-03-04 09:30 A | 1255 | 100% | start no earlier than 2026-03-04 09:00 | Зорькин В | 0.5h | 0.5h |
| 1257 | 2.268.4 | доставка | 10d | 2026-03-04 09:30 A | 2026-03-18 09:30 A | 1256 | 100% | start no earlier than 2026-03-03 08:00 | Карабанов | 80h | 80h |
| 1258 | 2.268.5 | реализация | 4h | 2026-04-03 09:00 A | 2026-04-03 13:00 A | 1257 | 100% | start no earlier than 2026-04-03 09:00 | Олег | 4h | 4h |
| 1259 | 2.269 | востановить профлист. Проход навески экструдер. Обрезками с 3ц, цвет любой | 5h | 2026-03-08 09:00 A | 2026-03-09 15:00 A |  | 100% | start no earlier than 2026-03-08 09:00 | Макаревич А | 5h | 5h |
| 1260 | 2.270 | установить отбойники в проход и углы проезд навесок. Барть с 5а | 4h | 2026-03-09 09:00 A | 2026-03-09 13:00 A |  | 100% | start no earlier than 2026-03-09 09:00 | Макаревич А | 4h | 4h |
| 1261 | 2.271 | **установить отбойники в углы проезд навесок** | 24.25d | 2026-03-13 09:00 A | 2026-04-16 11:00 A |  | 100% |  |  | 82.17h | 82.17h |
| 1262 | 2.271.1 | заявка 2 отбойника | 10min | 2026-03-13 09:00 A | 2026-03-13 09:10 A |  | 100% | start no earlier than 2026-03-13 09:00 | Зорькин В | 0.17h | 0.17h |
| 1263 | 2.271.2 | доставка | 10d | 2026-03-13 09:10 A | 2026-03-27 09:10 A | 1262 | 100% | start no earlier than 2026-03-12 08:00 | Карабанов | 80h | 80h |
| 1264 | 2.271.3 | монтаж | 2h | 2026-04-16 09:00 A | 2026-04-16 11:00 A | 1263 | 100% | start no earlier than 2026-04-16 09:00 | Бундин В | 2h | 2h |
| 1265 | 2.272 | **наростить ножки на бестроме бункер, вместо деревянной** | 3.38d | 2026-03-05 09:00 A | 2026-03-10 12:00 A |  | 100% |  | Макаревич А | 39h | 39h |
| 1266 | 2.272.1 | **мойка** | 0.38d | 2026-03-05 09:00 A | 2026-03-05 12:00 A |  | 100% |  |  | 6h | 6h |
| 1267 | 2.272.1.1 | ревизия вытяжка принудительная из печи (нерж вентилятор), очистка | 3h | 2026-03-05 09:00 A | 2026-03-05 12:00 A |  | 100% | start no earlier than 2026-03-05 09:00 | Некрасов А; Труфанов А | 6h | 6h |
| 1268 | 2.272.2 | ремонт колесо штабелер/замена подшипник | 3h | 2026-03-10 09:00 A | 2026-03-10 12:00 A |  | 100% | start no earlier than 2026-03-10 09:00 | Тимофеев В; Дедов В | 6h | 6h |
| 1269 | 2.273 | **увеличить освещение в зоне квадропака** | 41.88d | 2026-03-02 09:00 A | 2026-04-28 17:00 A |  | 100% |  |  | 101h | 101h |
| 1270 | 2.273.1 | составить список мматериал для монтажа | 30min | 2026-03-02 09:00 A | 2026-03-02 09:30 A |  | 100% | start no earlier than 2026-03-02 09:00 | Труфанов А; Некрасов А; Зорькин В | 1.5h | 1.5h |
| 1271 | 2.273.2 | заявка светильники | 30min | 2026-03-02 09:30 A | 2026-03-02 10:00 A | 1270 | 100% | start no earlier than 2026-02-27 08:00 | Зорькин В | 0.5h | 0.5h |
| 1272 | 2.273.3 | доставка | 10d | 2026-03-02 10:00 A | 2026-03-16 10:00 A | 1271 | 100% | start no earlier than 2026-02-27 08:00 | Карабанов | 80h | 80h |
| 1273 | 2.273.4 | монтаж светильников зона фасовки 8 светильников, операторы помогут | 15h | 2026-04-25 09:00 A | 2026-04-28 17:00 A |  | 100% | start no earlier than 2026-04-25 09:00 | Бобренок В | 15h | 15h |
| 1274 | 2.273.5 | монтаж светильников зона квадропак 1шт - перевесить светильник | 1h | 2026-04-16 09:00 A | 2026-04-16 10:00 A |  | 100% | start no earlier than 2026-04-16 09:00 | Тимофеев В | 1h | 1h |
| 1275 | 2.273.6 | монтаж | 2h | 2026-03-06 09:00 A | 2026-03-06 11:00 A |  | 100% | start no earlier than 2026-03-06 09:00 | Бобренок В | 2h | 2h |
| 1276 | 2.273.7 | **замена сетка печи на мелкую** | 0.12d | 2026-03-02 09:00 A | 2026-03-02 10:00 A |  | 100% |  |  | 1h | 1h |
| 1277 | 2.273.7.1 | согласовать спецификацию / оплата счет | 1h | 2026-03-02 09:00 A | 2026-03-02 10:00 A |  | 100% | start no earlier than 2026-03-02 09:00 | Домоводов К | 1h | 1h |

| ID | WBS | Task | Duration | Start | Finish | Predecessors | Complete | Remaining | Total slack | Free slack | Constraint | Resources | Work | Actual work |
| --- | --- | --- | --- | --- | --- | --- | --- | --- | --- | --- | --- | --- | --- | --- |
| 1278 | 2.274 | **монтаж дозации жира в экструдер** | 34.25d? | 2026-02-27 09:00 A | 2026-04-16 11:00 |  | 38% | 21.26d? | 235.34d |  |  |  | 25h | 15h |
| 1279 | 2.274.1 | монтаж частотного привода | 2h | 2026-02-27 09:00 A | 2026-02-27 11:00 A |  | 100% |  |  |  | start no earlier than 2026-02-27 09:00 | Тимофеев В | 2h | 2h |
| 1280 | 2.274.2 | монтаж трассы гидравлической | 2h | 2026-03-02 09:00 A | 2026-03-02 11:00 A | 1279 | 100% |  |  |  | start no earlier than 2026-03-02 09:00 | Тимофеев В | 2h | 2h |
| 1281 | 2.274.3 | сборка канистры с фитингом | 1h | 2026-03-02 11:00 A | 2026-03-02 12:00 A | 1280 | 100% |  |  |  | start no earlier than 2026-02-26 08:00 | Тимофеев В | 1h | 1h |
| 1282 | 2.274.4 | калибровка на нужный расход | 1h | 2026-03-03 09:00 A | 2026-03-03 10:00 A |  | 100% |  |  |  | start no earlier than 2026-03-03 09:00 | Зорькин В; Тимофеев В | 2h | 2h |
| 1283 | 2.274.5 | испытание | 1h | 2026-03-04 09:00 A | 2026-03-04 10:00 A |  | 100% |  |  |  | start no earlier than 2026-03-04 09:00 | Зорькин В | 1h | 1h |
| 1284 | 2.274.6 | подключить управление насосом синхронно с запуском ножей экструдера. Проложить кабель, изучить параметары, передать по смене что подключать | 4h | 2026-03-04 09:00 | 2026-03-04 13:00 |  |  |  | 266.09d |  | start no earlier than 2026-03-04 09:00 | Дедов В | 4h |  |
| 1285 | 2.274.7 | подключить кабель/ неастроить параметры, что передаст Дедов | 1h | 2026-03-05 09:00 | 2026-03-05 10:00 |  |  |  | 265.47d |  | start no earlier than 2026-03-05 09:00 | Труфанов А | 1h |  |
| 1286 | 2.274.8 | поставка контрллра | 1d? | 2026-03-11 09:00 | 2026-03-11 18:00 |  |  |  | 260.34d | 25d | start no earlier than 2026-03-11 09:00 |  |  |  |
| 1287 | 2.274.9 | подключить контрллера расходомер | 2h | 2026-04-16 09:00 | 2026-04-16 11:00 | 1286 |  |  | 235.34d |  | start no earlier than 2026-04-16 09:00 | Тимофеев В | 2h |  |
| 1288 | 2.274.10 | Прокинуть интерфейсный кабель от черной коробочки до нового частотника на синем бункере (проложить так чтоб ни где ничего не торчало) | 3h | 2026-03-05 09:00 | 2026-03-05 12:00 |  |  |  | 265.22d |  | start no earlier than 2026-03-05 08:00 | Дедов В | 3h |  |
| 1289 | 2.274.11 | сделать регулировку угла наклона приемная воронка конв в охладитель после жира | 3h | 2026-03-05 09:00 A | 2026-03-05 12:00 A |  | 100% |  |  |  | start no earlier than 2026-03-05 09:00 | Некрасов А; Труфанов А | 6h | 6h |
| 1290 | 2.274.12 | сборка и монтаж полка для дез раствора на охладитель | 1h | 2026-03-02 09:00 A | 2026-03-02 10:00 A |  | 100% |  |  |  | start no earlier than 2026-03-02 09:00 | Тимофеев В | 1h | 1h |
| 1291 | 2.275 | **настройка блокировок отключения котла, если отключена приточка** | 130.25d | 2026-03-03 09:00 A | 2026-09-01 11:00 |  | 7% | 120.93d | 137.34d |  |  |  | 86.17h | 6.17h |
| 1292 | 2.275.1 | внести в схему котла блокировку либо от трм 33 либо от частотника | 4h | 2026-03-03 09:00 A | 2026-03-03 13:00 A |  | 100% |  |  |  | start no earlier than 2026-03-03 09:00 | Дедов В | 4h | 4h |
| 1293 | 2.275.2 | Заявка на реле протока воды | 10min | 2026-03-10 09:00 A | 2026-03-10 09:10 A |  | 100% |  |  |  | start no earlier than 2026-03-10 09:00 | Зорькин В | 0.17h | 0.17h |
| 1294 | 2.275.3 | Доставка | 10d | 2026-03-10 09:10 | 2026-03-24 09:10 | 1293 |  |  | 252.57d |  | start no earlier than 2026-03-02 09:00 | Карабанов | 80h |  |
| 1295 | 2.275.4 | Замена | 2h | 2026-09-01 09:00 A | 2026-09-01 11:00 A | 1294 | 100% |  |  |  | start no earlier than 2026-09-01 09:00 | Дедов В | 2h | 2h |
| 1296 | 2.276 | Запрет работы вентилятора если низкая температура калорифера | 2h | 2026-03-12 09:00 A | 2026-03-12 11:00 A |  | 100% |  |  |  | start no earlier than 2026-03-12 09:00 | Дедов В | 2h | 2h |
| 1297 | 2.277 | **установить на охладитель ролики + скольжение трубы** | 10d? | 2026-09-01 09:00 | 2026-09-11 18:00 |  |  |  | 127.59d |  |  |  | 10h |  |
| 1298 | 2.277.1 | печать кронштейнов | 2h | 2026-09-01 09:00 | 2026-09-01 11:00 |  |  |  | 137.34d |  | start no earlier than 2026-09-01 09:00 | Домоводов К | 2h |  |
| 1299 | 2.277.2 | установить держатели труб | 1d? | 2026-09-11 09:00 | 2026-09-11 18:00 |  |  |  | 127.59d |  | start no earlier than 2026-09-11 09:00 | Тимофеев В | 8h |  |
| 1300 | 2.278 | **установить паровопровод для очистки сетки печи на мойке парогенератором** | 8.75d | 2026-03-02 09:00 A | 2026-03-12 16:00 A |  | 100% |  |  |  |  |  | 18.5h | 18.5h |
| 1301 | 2.278.1 | проверка фитингов | 30min | 2026-03-02 09:00 A | 2026-03-02 09:30 A |  | 100% |  |  |  | start no earlier than 2026-03-02 09:00 | Зорькин В | 0.5h | 0.5h |
| 1302 | 2.278.2 | монтаж | 2h | 2026-03-05 09:00 A | 2026-03-05 11:00 A | 1301 | 100% |  |  |  | start no earlier than 2026-03-05 09:00 | Тимофеев В | 2h | 2h |

| ID | WBS | Task | Type | Duration | Start | Finish | Predecessors | Complete | Total slack | Free slack | Constraint | Resources | Work | Actual work |
| --- | --- | --- | --- | --- | --- | --- | --- | --- | --- | --- | --- | --- | --- | --- |
| 1303 | 2.278.3 | **лоток с транспортера в барабан. Большой** |  | 2.75d | 2026-03-10 09:00 A | 2026-03-12 16:00 A |  | 100% |  |  |  |  | 16h | 16h |
| 1304 | 2.278.3.1 | изготовить из листа лоток. Заготовку 612*965 с пропилами для сгиба по чертежу |  | 4h | 2026-03-10 09:00 A | 2026-03-10 13:00 A |  | 100% |  |  | start no earlier than 2026-03-10 09:00 | Макаревич А | 4h | 4h |
| 1305 | 2.278.3.2 | подготовить раму крепежа |  | 4h | 2026-03-12 09:00 A | 2026-03-12 13:00 A | 1304 | 100% |  |  | start no earlier than 2026-03-12 09:00 | Некрасов А; Труфанов А | 8h | 8h |
| 1306 | 2.278.3.3 | монтаж |  | 2h | 2026-03-12 14:00 A | 2026-03-12 16:00 A | 1305 | 100% |  |  | start no earlier than 2026-02-27 08:00 | Некрасов А; Труфанов А | 4h | 4h |
| 1307 | 2.279 | **установка ворот шлюз в проходе вент камеры** |  | 119d? | 2026-02-24 09:00 A | 2026-08-09 13:00 A |  | 100% |  |  |  |  | 163.5h | 163.5h |
| 1308 | 2.279.1 | изготовить и установить шпингалеты |  | 4h | 2026-02-27 09:00 A | 2026-02-27 13:00 A |  | 100% |  |  | start no earlier than 2026-02-27 09:00 | Некрасов А; Бобренок В | 8h | 8h |
| 1309 | 2.279.2 | установка петель, транспортировка, монтаж |  | 1d? | 2026-02-24 09:00 A | 2026-02-24 18:00 A |  | 100% |  |  | start no earlier than 2026-02-24 09:00 | Труфанов А; Некрасов А | 16h | 16h |
| 1310 | 2.279.3 | установить полосу притвора |  | 3h | 2026-02-27 09:00 A | 2026-02-27 12:00 A |  | 100% |  |  | start no earlier than 2026-02-28 09:00 | Бобренок В | 3h | 3h |
| 1311 | 2.279.4 | установить силиконовые уплотнители на пол |  | 2h | 2026-02-26 09:00 A | 2026-02-26 11:00 A |  | 100% |  |  | start no earlier than 2026-02-26 08:00 | Некрасов А | 2h | 2h |
| 1312 | 2.279.5 | заявка доводчики, шпингалеты |  | 30min | 2026-03-02 09:00 A | 2026-03-02 09:30 A |  | 100% |  |  | start no earlier than 2026-03-02 09:00 | Зорькин В | 0.5h | 0.5h |
| 1313 | 2.279.6 | доставка |  | 10d | 2026-03-02 09:30 A | 2026-03-16 09:30 A | 1312 | 100% |  |  | start no earlier than 2026-02-27 08:00 | Карабанов | 80h | 80h |
| 1314 | 2.279.7 | монтаж шпингалетов |  | 2h | 2026-03-25 09:00 A | 2026-03-25 11:00 A | 1313 | 100% |  |  | start no earlier than 2026-03-25 09:00 | Бобренок В | 2h | 2h |
| 1315 | 2.279.8 | **установить концевики блокировки открывания роль ворот, если не закрыты шлюз** |  | 109d | 2026-03-10 09:00 A | 2026-08-09 13:00 A |  | 100% |  |  |  |  | 52h | 52h |
| 1316 | 2.279.8.1 | **установить доводчики на ворота в зоне навесок** |  | 0.25d | 2026-06-14 09:00 A | 2026-06-15 11:00 A |  | 100% |  |  |  |  | 2h | 2h |
| 1317 | 2.279.8.1.1 | пробурить для задвижек ворот в полу отверстия -фиксация для проезда штабелера |  | 2h | 2026-06-14 09:00 A | 2026-06-15 11:00 A |  | 100% |  |  | start no earlier than 2026-06-14 09:00 | Бобренок В | 2h | 2h |
| 1318 | 2.279.8.2 | составить список материалов |  | 30min | 2026-03-10 09:00 A | 2026-03-10 09:30 A |  | 100% |  |  | start no earlier than 2026-03-10 09:00 | Дедов В | 0.5h | 0.5h |
| 1319 | 2.279.8.3 | заявка |  | 30min | 2026-03-10 09:30 A | 2026-03-10 10:00 A | 1318 | 100% |  |  | start no earlier than 2026-03-03 09:00 | Зорькин В | 0.5h | 0.5h |
| 1320 | 2.279.8.4 | доставка |  | 5d | 2026-03-10 10:00 A | 2026-03-17 10:00 A | 1319 | 100% |  |  | start no earlier than 2026-02-27 08:00 | Карабанов | 40h | 40h |
| 1321 | 2.279.8.5 | монтаж датчиков на двери / доводчиков. | manual | 4h | 2026-08-09 09:00 A | 2026-08-09 13:00 A | 1320 | 100% |  |  | start no earlier than 2026-08-09 09:00 | Бундин В | 4h | 4h |
| 1322 | 2.279.8.6 | монтаж кабеля от датчиков до блока рольворот, не подключать | manual | 4h | 2026-08-09 09:00 A | 2026-08-09 13:00 A | 1321 | 100% |  |  | start no earlier than 2026-08-09 09:00 | Бундин В | 4h | 4h |
| 1323 | 2.279.8.7 | установить концевики на ворота - установить закладные под них | manual | 1h | 2026-08-08 09:00 A | 2026-08-08 10:00 A |  | 100% |  |  | start no earlier than 2026-08-08 09:00 | Бундин В | 1h | 1h |
| 1324 | 2.280 | **схема блокировки роль ворот при открытым шлюзе + авт закрытие + датчик препятствия** |  | 6.5d | 2026-09-09 09:00 | 2026-09-17 13:00 |  |  | 124.09d |  |  |  | 8h |  |
| 1325 | 2.280.1 | разработка схемы |  | 4h | 2026-09-09 09:00 | 2026-09-09 13:00 |  |  | 128.59d | 4.5d | start no earlier than 2026-09-09 09:00 | Домоводов К | 4h |  |
| 1326 | 2.280.2 | монтаж |  | 4h | 2026-09-17 09:00 | 2026-09-17 13:00 | 1325FS+1d |  | 124.09d |  | start no earlier than 2026-09-17 09:00 | Труфанов А | 4h |  |
| 1327 | 2.281 | ремонт нижних сеток печи просева гранулы |  | 4h | 2025-01-23 09:00 A | 2025-01-23 13:00 A |  | 100% |  |  | start no earlier than 2025-01-23 09:00 | Черепанов И | 4h | 4h |

| ID | WBS | Task | Type | Duration | Start | Finish | Predecessors | Complete | Remaining | Total slack | Free slack | Constraint | Resources | Work | Actual work |
| --- | --- | --- | --- | --- | --- | --- | --- | --- | --- | --- | --- | --- | --- | --- | --- |
| 1328 | 2.282 | **замена реле безопасности бойлер ж** |  | 91.12d | 2024-10-16 09:00 A | 2025-02-20 10:00 A |  | 100% |  |  |  |  |  | 82h | 82h |
| 1329 | 2.282.1 | заЯВка |  | 1h | 2024-10-16 09:00 A | 2024-10-16 10:00 A |  | 100% |  |  |  | start no earlier than 2024-10-16 09:00 | Зорькин В | 1h | 1h |
| 1330 | 2.282.2 | доставка |  | 10d | 2024-10-16 10:00 A | 2024-10-30 10:00 A | 1329 | 100% |  |  |  | start no earlier than 2024-10-16 09:00 | Мультан | 80h | 80h |
| 1331 | 2.282.3 | замена |  | 1h | 2025-02-20 09:00 A | 2025-02-20 10:00 A | 1330 | 100% |  |  |  | start no earlier than 2025-02-20 09:00 | Некрасов А | 1h | 1h |
| 1332 | 2.283 | **установить пульты на регулировку шибиров вентиляции** |  | 11.25d? | 2026-08-31 09:00 | 2026-09-14 11:00 |  |  |  | 127.34d |  |  |  | 90h |  |
| 1333 | 2.283.1 | заявка на блок питания, шкаф управления, кабель |  | 2h | 2026-08-31 09:00 | 2026-08-31 11:00 |  |  |  | 127.34d | 0d | start no earlier than 2026-08-31 09:00 | Домоводов К | 2h |  |
| 1334 | 2.283.2 | доставка |  | 10d | 2026-08-31 11:00 | 2026-09-11 11:00 | 1333 |  |  | 127.34d | 0d | start no earlier than 2024-05-08 08:00 | Мультан | 80h |  |
| 1335 | 2.283.3 | монтаж |  | 1d? | 2026-09-11 11:00 | 2026-09-14 11:00 | 1334 |  |  | 127.34d |  | start no earlier than 2024-05-08 08:00 | Некрасов А | 8h |  |
| 1336 | 2.284 | заменить местами 2 зеркала маленький и большой бункер |  | 4h | 2024-10-03 09:00 | 2024-10-03 13:00 |  |  |  | 635.09d |  | start no earlier than 2024-10-03 09:00 | Черепанов И | 4h |  |
| 1337 | 2.285 | установить провод заземления на дверь шкафа упр сушки |  | 1h | 2024-01-08 09:00 | 2024-01-08 10:00 |  |  |  | 828.47d |  | start no earlier than 2024-01-06 09:00 | Тимофеев В | 1h |  |
| 1338 | 2.286 | **Палетообмотчик** |  | 50.06d | 2026-05-19 09:00 A | 2026-07-28 09:30 A |  | 100% |  |  |  |  |  | 80.67h | 80.67h |
| 1339 | 2.286.1 | заказать цепь |  | 10min | 2026-05-19 09:00 A | 2026-05-19 09:10 A |  | 100% |  |  |  | start no earlier than 2026-05-19 08:00 | Зорькин В | 0.17h | 0.17h |
| 1340 | 2.286.2 | доставка |  | 10d | 2026-05-29 09:00 A | 2026-06-11 18:00 A |  | 100% |  |  |  | start no earlier than 2026-05-29 09:00 | Карабанов | 80h | 80h |
| 1341 | 2.286.3 | замена цепи на вход в зону палетирования на складе взять 10М оцинкованная 3мм | manual | 30min | 2026-07-28 09:00 A | 2026-07-28 09:30 A |  | 100% |  |  |  | start no earlier than 2026-07-28 09:00 | Макаревич А | 0.5h | 0.5h |
| 1342 | 2.287 | Изготовить полочки из нержавейки по образцу на 18 баночек еще 2 шт |  | 3h | 2026-07-24 09:00 A | 2026-07-24 12:00 A |  | 100% |  |  |  | start no earlier than 2026-07-24 09:00 | Бундин В | 3h | 3h |
| 1343 | 2.288 | **разделить воду на ПГ и экструдер** |  | 0.25d | 2026-09-17 09:00 | 2026-09-17 11:00 |  |  |  | 0d |  |  |  | 2h |  |
| 1344 | 2.288.1 | изготовить промежуточную емкость для прекондера, подача воды, сделать по аналогу 3 цеха | manual | 2h | 2026-09-17 09:00 | 2026-09-17 11:00 |  |  |  |  |  | start no earlier than 2026-09-17 09:00 | Тимофеев В | 2h |  |
| 1345 | 2.289 | **отмена** |  | 78.31d? | 2026-08-11 09:00 A | 2026-11-26 11:30 |  | 2% | 76.53d? | 74.28d |  |  |  | 11h | 0.25h |
| 1346 | 2.289.1 | **найти места утечки тепла под потолком- перемерзает труба подачи воды в 3 цех** |  | 78.31d? | 2026-08-11 09:00 A | 2026-11-26 11:30 |  | 2% | 76.53d? | 74.28d |  |  |  | 11h | 0.25h |
| 1347 | 2.289.1.1 | вспомнить из-за чего холод под потолком? Какие нужны мероприятия?- никто не помнит |  | 15min | 2026-08-11 09:00 A | 2026-08-11 09:15 A |  | 100% |  |  |  | start no earlier than 2026-08-11 09:00 | Некрасов А | 0.25h | 0.25h |
| 1348 | 2.289.1.2 | подать олегу заявку |  | 15min | 2026-08-31 09:00 | 2026-08-31 09:15 |  |  |  | 138.56d |  | start no earlier than 2026-08-31 09:00 | Зорькин В | 0.25h |  |
| 1349 | 2.289.1.3 | проверка пирометром / тепловизором |  | 2h | 2026-11-11 09:00 | 2026-11-11 11:00 |  |  |  | 74.28d | 0d | start no earlier than 2026-11-11 09:00 | Некрасов А | 2h |  |
| 1350 | 2.289.1.4 | заявка (подумать материал) |  | 15min | 2026-11-11 11:00 | 2026-11-11 11:15 | 1349 |  |  | 74.28d | 0d | start no earlier than 2026-08-13 09:00 | Зорькин В | 0.25h |  |
| 1351 | 2.289.1.5 | доставка- контроль |  | 15min | 2026-11-25 11:15 | 2026-11-25 11:30 | 1350FS+10d |  |  | 74.28d | 0d | start no earlier than 2026-08-12 09:00 | Зорькин В | 0.25h |  |
| 1352 | 2.289.1.6 | монтаж |  | 1d? | 2026-11-25 11:30 | 2026-11-26 11:30 | 1351 |  |  | 74.28d |  | start no earlier than 2026-08-11 09:00 | Тимофеев В | 8h |  |

| ID | WBS | Task | Type | Duration | Start | Finish | Predecessors | Complete | Remaining | Total slack | Free slack | Constraint | Resources | Work | Actual work |
| --- | --- | --- | --- | --- | --- | --- | --- | --- | --- | --- | --- | --- | --- | --- | --- |
| 1353 | 2.290 | **вентиляция** |  | 11.25d | 2026-08-13 09:00 A | 2026-08-28 11:00 A |  | 100% |  |  |  |  |  | 4h | 4h |
| 1354 | 2.290.1 | Монтаж частотников на ШУ | manual | 2h | 2026-08-13 09:00 A | 2026-08-13 11:00 A |  | 100% |  |  |  | start no earlier than 2026-08-13 09:00 | Труфанов А | 2h | 2h |
| 1355 | 2.290.2 | В ШУ вырезать окна для частотников в двери, закрыть оргстеклом. Желательно на шарниры. |  | 2h | 2026-08-28 09:00 A | 2026-08-28 11:00 A |  | 100% |  |  |  | start no earlier than 2026-08-31 09:00 | Бундин В | 2h | 2h |
| 1356 | 2.291 | **Синий бункер** |  | 0.25d | 2026-07-30 09:00 A | 2026-07-30 11:00 A |  | 100% |  |  |  |  |  | 4h | 4h |
| 1357 | 2.291.1 | Ремонт синего бункера в зоне вибратора |  | 2h | 2026-07-30 09:00 A | 2026-07-30 11:00 A |  | 100% |  |  |  | start no earlier than 2026-07-30 09:00 | Труфанов А; Бундин В | 4h | 4h |
| 1358 | 2.292 | **Охладитель** |  | 0.38d | 2026-07-30 09:00 A | 2026-07-30 12:00 A |  | 100% |  |  |  |  |  | 3h | 3h |
| 1359 | 2.292.1 | Установка защиты сетки на полозья/направляющие, спросить Зорькина |  | 3h | 2026-07-30 09:00 A | 2026-07-30 12:00 A |  | 100% |  |  |  | start no earlier than 2026-07-30 09:00 | Тимофеев В | 3h | 3h |
| 1360 | 2.293 | Осмотреть/устранить течь раковины возле туалета |  | 1h | 2026-07-29 08:00 A | 2026-07-29 10:00 A |  | 100% |  |  |  | start no earlier than 2026-07-29 08:00 | Дедов В | 1h | 1h |
| 1361 | 3 | **3 цех** |  | 288d? | 2025-09-01 09:00 A | 2026-10-06 18:00 |  | 77% | 66.98d? | 110.59d |  |  |  | 1265h | 991.08h |
| 1362 | 3.1 | **По схемам Труфанова разобраться с автоматикой шкафа и подключить 3 датчика уровня и подписать, где и что находится +кнопки и переключатели на шкафу тоже подписать** |  | 1.06d | 2026-09-07 09:00 A | 2026-09-08 09:30 A |  | 100% |  |  |  |  |  | 8.5h | 8.5h |
| 1363 | 3.1.1 | изучение схему |  | 8h | 2026-09-07 09:00 A | 2026-09-07 18:00 A |  | 100% |  |  |  | start no earlier than 2026-09-07 09:00 | Дедов В | 8h | 8h |
| 1364 | 3.1.2 | подкл 2я нория по датчику уровня |  | 30min | 2026-09-08 09:00 A | 2026-09-08 09:30 A |  | 100% |  |  |  | start no earlier than 2026-09-08 08:00 | Дедов В | 0.5h | 0.5h |
| 1365 | 3.2 | **установить ограничитель на дверь что бы попадала под движение рольворот** |  | 6.19d | 2026-09-15 09:00 | 2026-09-23 10:30 |  |  |  | 120.41d |  |  |  | 1.5h |  |
| 1366 | 3.2.1 | заявка |  | 15min | 2026-09-15 09:00 | 2026-09-15 09:15 |  |  |  | 120.41d | 0d | start no earlier than 2026-09-15 09:00 | Зорькин В | 0.25h |  |
| 1367 | 3.2.2 | контроль доставки |  | 15min | 2026-09-22 09:15 | 2026-09-22 09:30 | 1366FS+5d |  |  | 120.41d | 0d | start no earlier than 2026-09-03 08:00 | Зорькин В | 0.25h |  |
| 1368 | 3.2.3 | монтаж |  | 1h | 2026-09-23 09:30 | 2026-09-23 10:30 | 1367FS+1d |  |  | 120.41d |  | start no earlier than 2026-09-03 08:00 | Некрасов А | 1h |  |
| 1369 | 3.3 | приварить к люку сливной ямы вспомогательную ручку (ручка весит на стеллаже в слесарке) | manual | 2h | 2026-08-30 09:00 | 2026-08-30 11:00 |  |  |  |  |  | start no earlier than 2026-08-30 09:00 | Бундин В | 2h |  |
| 1370 | 3.4 | **монтаж унитаз, получить на складе** |  | 0d | 2026-08-17 09:00 A | 2026-08-17 09:00 A |  | 100% |  |  |  |  |  |  |  |
| 1371 | 3.4.1 | крышка бачка лопнувшая- поменять по гарантии | milestone | 0d | 2026-08-17 09:00 A | 2026-08-17 09:00 A |  | 100% |  |  |  | start no earlier than 2026-08-17 09:00 | Зорькин В |  |  |
| 1372 | 3.5 | закрыить металлом 1.5мм щель стена / площадка загрузки муки. Между рольворотой и стеной с окнами |  | 2h | 2026-08-15 09:00 A | 2026-08-17 11:00 A |  | 100% |  |  |  | start no earlier than 2026-08-15 09:00 | Бундин В | 2h | 2h |
| 1373 | 3.6 | закрыть щель битумной лентой стык площадка-профлист стенка. Полоску клеить из нутри, обезжирить. |  | 2h | 2026-08-16 09:00 A | 2026-08-17 11:00 A |  | 100% |  |  |  | start no earlier than 2026-08-16 09:00 | Бундин В | 2h | 2h |
| 1374 | 3.7 | монтаж светильник в корридор / лестница на площадку жиров |  | 3h | 2026-08-16 09:00 A | 2026-08-17 12:00 A |  | 100% |  |  |  | start no earlier than 2026-08-16 09:00 | Бундин В | 3h | 3h |
| 1375 | 3.8 | **ломает гранулу после печи** |  | 17.12d? | 2026-08-18 09:00 A | 2026-09-09 10:00 |  | 47% | 9.05d? | 130.47d |  |  |  | 18.5h | 9.25h |
| 1376 | 3.8.1 | тест на ручной загрузке |  | 2h | 2026-08-18 09:00 A | 2026-08-18 11:00 A |  | 100% |  |  |  | start no earlier than 2026-08-18 09:00 | Шуранов Ю | 2h | 2h |
| 1377 | 3.8.2 | полная раборка трассы на ревизию острых граней? |  | 2h | 2026-08-19 09:00 A | 2026-08-19 11:00 A |  | 100% |  |  |  | start no earlier than 2026-08-19 09:00 | Тимофеев В | 2h | 2h |
| 1378 | 3.8.3 | определить параметры нории для запроса цены |  | 2h | 2026-08-18 09:00 A | 2026-08-18 11:00 A |  | 100% |  |  |  | start no earlier than 2026-08-18 09:00 | Шуранов Ю | 2h | 2h |
| 1379 | 3.8.4 | контроль отвта |  | 15min | 2026-09-03 09:00 | 2026-09-03 09:15 | 1378FS+5d |  |  | 135.56d |  | start no earlier than 2026-09-03 09:00 | Зорькин В | 0.25h |  |
| 1380 | 3.8.5 | изготовить новый отвод 90 с фланцем, учесть степеньку |  | 1h | 2026-09-02 09:00 A | 2026-09-02 10:00 A |  | 100% |  |  |  | start no earlier than 2026-09-09 09:00 | Макаревич А | 1h | 1h |
| 1381 | 3.8.6 | тест |  | 1h | 2026-08-19 09:00 A | 2026-08-19 10:00 A |  | 100% |  |  |  | start no earlier than 2026-08-19 09:00 | Тимофеев В; Шуранов Ю | 2h | 2h |
| 1382 | 3.8.7 | переварить фланец на угловом соединении (объясню по телефону). То же самое | milestone | 0h | 2026-09-04 09:00 A | 2026-09-04 09:00 A |  | 100% |  |  |  | start no earlier than 2026-09-04 09:00 | Макаревич А |  |  |
| 1383 | 3.8.8 | печать переходника на 3д принтере |  | 1d? | 2026-08-31 09:00 | 2026-08-31 18:00 |  |  |  | 137.59d |  | start no earlier than 2026-08-31 09:00 | Домоводов К | 8h |  |
| 1384 | 3.8.9 | проверка размещения нории от квадропака |  | 15min | 2026-08-18 09:00 A | 2026-08-18 09:15 A |  | 100% |  |  |  | start no earlier than 2026-08-18 09:00 | Шуранов Ю | 0.25h | 0.25h |
| 1385 | 3.8.10 | установить угловой фланец на пневмотрассу |  | 1h | 2026-09-09 09:00 | 2026-09-09 10:00 |  |  |  | 130.47d |  | start no earlier than 2026-09-09 09:00 | Тимофеев В | 1h |  |

| ID | WBS | Task | Type | Duration | Start | Finish | Predecessors | Complete | Remaining | Total slack | Free slack | Constraint | Resources | Work | Actual work |
| --- | --- | --- | --- | --- | --- | --- | --- | --- | --- | --- | --- | --- | --- | --- | --- |
| 1386 | 3.9 | **доп мощности для приточной вентиляции** |  | 34d? | 2026-08-21 09:00 A | 2026-10-06 18:00 |  | 16% | 28.63d? | 110.59d |  |  |  | 152h | 24h |
| 1387 | 3.9.1 | проект автоматика ограничения мощности в автомате |  | 1d? | 2026-08-31 09:00 | 2026-08-31 18:00 |  |  |  | 110.59d | 0d | start no earlier than 2026-08-31 09:00 | Домоводов К | 8h |  |
| 1388 | 3.9.2 | составить ТЗ на монтаж кабеля |  | 3d | 2026-08-21 09:00 A | 2026-08-25 18:00 A |  | 100% |  |  |  | start no earlier than 2026-08-21 09:00 | Домоводов К | 24h | 24h |
| 1389 | 3.9.3 | получить КП / счет договор | milestone | 0d | 2026-09-01 18:00 | 2026-09-01 18:00 | 1387FS+1d, 1388FS+2d |  |  | 110.59d | 0d | start no earlier than 2026-08-27 09:00 | Домоводов К |  |  |
| 1390 | 3.9.4 | предоплата | milestone | 0d | 2026-09-02 18:00 | 2026-09-02 18:00 | 1389FS+1d |  |  | 110.59d | 0d | start no earlier than 2026-08-10 08:00 | Домоводов К |  |  |
| 1391 | 3.9.5 | монтаж |  | 15d | 2026-09-16 09:00 | 2026-10-06 18:00 | 1390FS+10d |  |  | 110.59d |  | start no earlier than 2026-08-10 08:00 | Подрядчик | 120h |  |
| 1392 | 3.10 | сделать перемычку на нижней части системы загрузки палет подачи жиров и гидрализата | manual | 3h | 2026-08-15 09:00 | 2026-08-15 12:00 |  |  |  |  |  | start no earlier than 2026-08-15 09:00 | Бундин В | 3h |  |
| 1393 | 3.11 | **сборка квадропака 3 цех** |  | 21.25d | 2026-08-14 09:00 A | 2026-09-11 11:00 |  | 56% | 9.35d | 128.34d |  |  |  | 33h | 18h |
| 1394 | 3.11.1 | Монтаж/позиционирование квадропака |  | 5h | 2026-09-02 09:00 A | 2026-09-02 15:00 A |  | 100% |  |  |  | start no earlier than 2026-09-02 09:00 | Труфанов А | 5h | 5h |
| 1395 | 3.11.2 | перестановка норий, задействовать бункер |  | 2h | 2026-08-17 09:00 A | 2026-08-17 11:00 A |  | 100% |  |  |  | start no earlier than 2026-08-17 09:00 | Тимофеев В; Некрасов А | 4h | 4h |
| 1396 | 3.11.3 | сборка накопительный стол |  | 2h | 2026-08-19 09:00 A | 2026-08-19 11:00 A | 1395 | 100% |  |  |  | start no earlier than 2026-08-19 09:00 | Тимофеев В | 2h | 2h |
| 1397 | 3.11.4 | подключение дозатор |  | 1h | 2026-08-14 09:00 | 2026-08-14 10:00 |  |  |  | 149.47d |  | start no earlier than 2026-08-14 09:00 | Труфанов А | 1h |  |
| 1398 | 3.11.5 | зарисовка схема ШУ нория - понять управление бункером |  | 4h | 2026-08-14 09:00 | 2026-08-14 13:00 |  |  |  | 148.84d | 0d | start no earlier than 2026-08-14 09:00 | Труфанов А | 4h |  |
| 1399 | 3.11.6 | подключение нория к упаковке |  | 2h | 2026-08-14 14:00 | 2026-08-14 16:00 | 1398 |  |  | 148.84d |  | start no earlier than 2026-08-14 09:00 | Труфанов А | 2h |  |
| 1400 | 3.11.7 | подключение вводный кабель (питание) информация у Труфанова |  | 2h | 2026-09-04 09:00 A | 2026-09-04 11:00 A | 1399 | 100% |  |  |  | start no earlier than 2026-09-04 09:00 | Бундин В; Труфанов А | 4h | 4h |
| 1401 | 3.11.8 | тест на пакетах |  | 2h | 2026-09-11 09:00 | 2026-09-11 11:00 |  |  |  | 128.34d |  | start no earlier than 2026-09-11 09:00 | Зорькин В; Труфанов А | 4h |  |
| 1402 | 3.11.9 | подключениекомпрессор |  | 1h | 2026-09-03 09:00 A | 2026-09-03 10:00 A | 1400 | 100% |  |  |  | start no earlier than 2026-09-03 09:00 | Бобренок В | 1h | 1h |
| 1403 | 3.11.10 | Установка квадропака (позиционирование нижней машины) информация у Труфанова |  | 2h | 2026-09-02 09:00 | 2026-09-02 11:00 |  |  |  | 136.34d |  | start no earlier than 2026-09-02 09:00 | Труфанов А; Бундин В | 4h |  |
| 1404 | 3.11.11 | Выставить опоры верхней рамы и лестницы по уровню |  | 1h | 2026-09-02 09:00 A | 2026-09-02 10:00 A |  | 100% |  |  |  | start no earlier than 2026-09-02 08:00 | Бундин В | 1h | 1h |
| 1405 | 3.11.12 | Редуктор стола повернуть кабелем к электрощиту (на столе) |  | 30min | 2026-09-02 09:00 A | 2026-09-02 09:30 A |  | 100% |  |  |  | start no earlier than 2026-09-02 08:00 | Бундин В | 0.5h | 0.5h |
| 1406 | 3.11.13 | Провод от редуктора и кнопки в гофре закрепить по раме стола завести в шкаф |  | 30min | 2026-09-02 09:00 A | 2026-09-02 09:30 A |  | 100% |  |  |  | start no earlier than 2026-09-02 08:00 | Бундин В | 0.5h | 0.5h |
| 1407 | 3.12 | сделать ручку и зацепной крюк для открытия люка сливной ямы | manual | 2h | 2026-08-08 09:00 A | 2026-08-08 11:00 A |  | 100% |  |  |  | start no earlier than 2026-08-08 09:00 | Бобренок В | 2h | 2h |
| 1408 | 3.13 | **карусель добавить перемычку снизу, чтобы не выпал мешок** |  | 20.25d | 2026-08-18 09:00 A | 2026-09-14 11:00 |  | 7% | 18.8d | 127.34d |  |  |  | 2.33h | 0.17h |
| 1409 | 3.13.1 | заказать краску |  | 10min | 2026-08-18 09:00 A | 2026-08-18 09:10 A |  | 100% |  |  |  | start no earlier than 2026-08-18 09:00 | Шуранов Ю | 0.17h | 0.17h |
| 1410 | 3.13.2 | контроль доставки |  | 10min | 2026-08-31 09:00 | 2026-08-31 09:10 | 1409FS+5d |  |  | 137.32d | 9.98d | start no earlier than 2026-08-31 09:00 | Зорькин В | 0.17h |  |
| 1411 | 3.13.3 | покрасить перемычки система безопасности) |  | 2h | 2026-09-14 09:00 | 2026-09-14 11:00 | 1410FS+1d |  |  | 127.34d |  | start no earlier than 2026-09-14 09:00 | Тимофеев В | 2h |  |
| 1412 | 3.14 | убрать битумную ленту снаружи мезонина |  | 1h | 2026-08-04 08:00 A | 2026-08-04 10:00 A |  | 100% |  |  |  | start no earlier than 2026-08-04 08:00 | Макаревич А | 1h | 1h |
| 1413 | 3.15 | хорошо закрепить шланг подачи воды в прекондеционер |  | 2h | 2026-08-04 08:00 A | 2026-08-04 11:00 A |  | 100% |  |  |  | start no earlier than 2026-08-04 08:00 | Макаревич А | 2h | 2h |
| 1414 | 3.16 | на выходе ротаметра поменять шланг большего диаметра |  | 1h | 2026-07-31 08:00 A | 2026-07-31 10:00 A |  | 100% |  |  |  | start no earlier than 2026-07-31 08:00 | Тимофеев В | 1h | 1h |
| 1415 | 3.17 | покрасить кронштейн крепления ротаметра |  | 1h | 2026-07-31 09:00 A | 2026-07-31 10:00 A |  | 100% |  |  |  | start no earlier than 2026-07-31 09:00 | Бундин В | 1h | 1h |
| 1416 | 3.18 | не набирает заданную температуру 4 зона экструдера- разобраться |  | 2h | 2026-07-30 08:00 A | 2026-07-30 11:00 A |  | 100% |  |  |  | start no earlier than 2026-07-30 08:00 | Дедов В | 2h | 2h |
| 1417 | 3.19 | сборка кожухи на печи |  | 2h | 2026-07-15 09:00 A | 2026-07-15 11:00 A |  | 100% |  |  |  | start no earlier than 2026-07-15 09:00 | Бундин В | 2h | 2h |

| ID | WBS | Task | Type | Duration | Start | Finish | Predecessors | Complete | Remaining | Actual start | Total slack | Constraint | Resources | Work | Actual work |
| --- | --- | --- | --- | --- | --- | --- | --- | --- | --- | --- | --- | --- | --- | --- | --- |
| 1418 | 3.20 | **установить зеркало сферическое на бункер** |  | 15.5d | 2026-07-07 09:00 A | 2026-07-28 13:00 A |  | 100% |  |  |  |  |  | 5h | 5h |
| 1419 | 3.20.1 | заявка |  | 1h | 2026-07-07 09:00 A | 2026-07-07 10:00 A |  | 100% |  |  |  | start no earlier than 2026-07-07 09:00 | Зорькин В | 1h | 1h |
| 1420 | 3.20.2 | контроль доставки | milestone | 0d | 2026-07-17 10:00 A | 2026-07-17 10:00 A | 1419FS+10d | 100% |  |  |  | start no earlier than 2026-07-14 08:00 | Зорькин В |  |  |
| 1421 | 3.20.3 | монтаж |  | 4h | 2026-07-28 09:00 A | 2026-07-28 13:00 A | 1420FS+1d | 100% |  |  |  | start no earlier than 2026-07-28 09:00 | Макаревич А | 4h | 4h |
| 1422 | 3.21 | поиск след от смазки на охладителе |  | 1h | 2026-07-10 09:00 A | 2026-07-10 10:00 A |  | 100% |  |  |  | start no earlier than 2026-07-10 09:00 | Тимофеев В; Зорькин В | 2h | 2h |
| 1423 | 3.22 | **установить наосос центробежный на бочку слив с парогенератора, врезать штуцер в бочку** |  | 0.25d | 2026-07-15 09:00 A | 2026-07-15 11:00 A |  | 100% |  |  |  |  |  | 4h | 4h |
| 1424 | 3.22.1 | орг закуп с курьером |  | 2h | 2026-07-15 09:00 A | 2026-07-15 11:00 A |  | 100% |  |  |  | start no earlier than 2026-07-15 09:00 | Зорькин В | 2h | 2h |
| 1425 | 3.22.2 | монтаж штуцер |  | 2h | 2026-07-15 09:00 A | 2026-07-15 11:00 A |  | 100% |  |  |  | start no earlier than 2026-07-15 09:00 | Бобренок В | 2h | 2h |
| 1426 | 3.23 | **вода идет не стабильно** |  | 4.38d | 2026-07-09 09:00 A | 2026-07-15 12:00 A |  | 100% |  |  |  |  |  | 8h | 8h |
| 1427 | 3.23.1 | Поставить гидроаккумулятор на насос между выходом насосной станции и 3-х ходомым краном подачи воды в экструдер и заменить трубки на шланги |  | 3h | 2026-07-09 09:00 A | 2026-07-09 12:00 A |  | 100% |  |  |  | start no earlier than 2026-07-09 09:00 | Тимофеев В | 3h | 3h |
| 1428 | 3.23.2 | тест работы воды с ПГ на давлении питательного насоса 3+ |  | 1h | 2026-07-10 09:00 A | 2026-07-10 10:00 A |  | 100% |  |  |  | start no earlier than 2026-07-10 09:00 | Зорькин В; Тимофеев В | 2h | 2h |
| 1429 | 3.23.3 | орг закуп с курьером |  | 2h | 2026-07-15 09:00 A | 2026-07-15 11:00 A | 1424SS | 100% |  |  |  | start no earlier than 2026-07-13 09:00 | Зорькин В | 2h | 2h |
| 1430 | 3.23.4 | замена шланг напорный с насоса до ротаметра |  | 1h | 2026-07-15 11:00 A | 2026-07-15 12:00 A | 1429 | 100% |  |  |  | start no earlier than 2026-07-13 09:00 | Бобренок В | 1h | 1h |
| 1431 | 3.24 | Доработать крутилку ссыпа гранулы, прихватить на сварку |  | 1h | 2026-07-09 09:00 A | 2026-07-09 10:00 A |  | 100% |  |  |  | start no earlier than 2026-07-09 09:00 | Макаревич А | 1h | 1h |
| 1432 | 3.25 | удлинить лоток ножевого узла, до кромки загрузки применик пневмотранспорта |  | 3h | 2026-07-09 09:00 A | 2026-07-09 12:00 A |  | 100% |  |  |  | start no earlier than 2026-07-09 09:00 | Макаревич А | 3h | 3h |
| 1433 | 3.26 | Снять торцевые дверцы на печи для доступа к сетке |  | 1h | 2026-07-08 09:00 A | 2026-07-08 10:00 A |  | 100% |  |  |  | start no earlier than 2026-07-08 08:00 | Бундин В | 1h | 1h |
| 1434 | 3.27 | Снять кожухи на редукторах на цепях |  | 1h | 2026-07-08 09:00 A | 2026-07-08 10:00 A |  | 100% |  |  |  | start no earlier than 2026-07-08 08:00 | Бундин В | 1h | 1h |
| 1435 | 3.28 | Установка раковины,унитаза в 3 цеху 2 этаж |  | 4h | 2026-07-07 09:00 A | 2026-07-07 13:00 A |  | 100% |  |  |  | start no earlier than 2026-07-07 09:00 | Бундин В | 4h | 4h |
| 1436 | 3.29 | Установить тройник на компрессор маленький, на входе. (тройни пришел сегодня на склад) |  | 1h | 2026-07-08 09:00 A | 2026-07-08 10:00 A |  | 100% |  |  |  | start no earlier than 2026-07-08 08:00 | Бундин В | 1h | 1h |
| 1437 | 3.30 | Вернуть упакованный унитаз на склад |  | 30min | 2026-07-08 09:00 A | 2026-07-08 09:30 A |  | 100% |  |  |  | start no earlier than 2026-07-08 08:00 | Бундин В | 0.5h | 0.5h |
| 1438 | 3.31 | **на тепловых реле 1 и 2 смесителя добавить порог выключения** |  | 1h? | 2026-07-11 09:00 | 2026-07-11 10:00 |  | 33% | 0.67h? | 2026-07-14 09:00 |  |  |  | 1.5h | 0.5h |
| 1439 | 3.31.1 | заявка на тепловые реле с большим номинолом |  | 15min | 2026-07-14 09:00 A | 2026-07-14 09:15 A |  | 100% |  |  |  | start no earlier than 2026-07-14 08:00 | Зорькин В | 0.25h | 0.25h |
| 1440 | 3.31.2 | доставка контроль |  | 15min | 2026-08-28 09:00 A | 2026-08-28 09:15 A | 1439FS+5d | 100% |  |  |  | start no earlier than 2026-08-28 09:00 | Зорькин В | 0.25h | 0.25h |
| 1441 | 3.31.3 | замена тепловых реле, получить на складе |  | 1h | 2026-09-03 09:00 | 2026-09-03 10:00 | 1440FS+1d |  |  |  | 135.47d | start no earlier than 2026-09-03 09:00 | Бобренок В | 1h |  |
| 1442 | 3.32 | сделать ручки с резьбой для снятия матрицы экструдера |  | 2h | 2026-07-04 09:00 A | 2026-07-06 11:00 A |  | 100% |  |  |  | start no earlier than 2026-07-04 09:00 | Макаревич А | 2h | 2h |
| 1443 | 3.33 | сделать противоудары головы на циклоне в зоне жиров | manual | 1h | 2026-07-26 09:00 A | 2026-07-26 10:00 A |  | 100% |  |  |  | start no earlier than 2026-07-26 09:00 | Макаревич А | 1h | 1h |
| 1444 | 3.34 | сделать откидную крышку на ножевом узле (расскажу как) |  | 8h | 2026-07-04 09:00 A | 2026-07-06 18:00 A |  | 100% |  |  |  | start no earlier than 2026-07-04 09:00 | Макаревич А | 8h | 8h |
| 1445 | 3.35 | подклинивает охладитель (все ярусы)- разобраться почему |  | 2h | 2026-07-11 09:00 A | 2026-07-13 11:00 A |  | 100% |  |  |  | start no earlier than 2026-07-11 09:00 | Макаревич А | 2h | 2h |

| ID | WBS | Task | Type | Duration | Start | Finish | Complete | Actual finish | Total slack | Constraint | Resources | Work | Actual work |
| --- | --- | --- | --- | --- | --- | --- | --- | --- | --- | --- | --- | --- | --- |
| 1446 | 3.36 | **откалибровать весы красных смесителей, муку с контрольным весом обеспечит 5ц** |  | 2h? | 2026-07-29 09:00 A | 2026-07-29 11:00 | 100% | 2026-08-03 18:00 |  |  | Дедов В | 10h | 10h |
| 1447 | 3.36.1 | вызвать специалистов |  | 1d? | 2026-08-03 09:00 A | 2026-08-03 18:00 A | 100% |  |  | start no earlier than 2026-08-03 09:00 | Шуранов Ю | 8h | 8h |
| 1448 | 3.37 | **установка частотника на шнек подачи со смесителей на ногу опоры шнека в разрыв питания шнека** |  | 0.12d | 2026-07-04 09:00 A | 2026-07-06 10:00 A | 100% |  |  |  |  | 1h | 1h |
| 1449 | 3.37.1 | демонтировать частотник шнека (в слесарку) |  | 1h | 2026-07-04 09:00 A | 2026-07-06 10:00 A | 100% |  |  | start no earlier than 2026-07-04 09:00 | Дедов В | 1h | 1h |
| 1450 | 3.38 | щель запенить выход из цеха |  | 1d? | 2026-07-02 09:00 A | 2026-07-02 18:00 A | 100% |  |  | start no earlier than 2026-07-02 09:00 | Олег | 8h | 8h |
| 1451 | 3.39 | силиконим двери прекондиционера (одну эксперимент) |  | 2h | 2026-07-02 09:00 A | 2026-07-02 11:00 A | 100% |  |  | start no earlier than 2026-07-03 09:00 | Дедов В | 2h | 2h |
| 1452 | 3.40 | наростить лопатку датчика переполнения на приемном лотке прекондиционера |  | 1h | 2026-06-30 09:00 A | 2026-06-30 10:00 A | 100% |  |  | start no earlier than 2026-06-30 09:00 | Бундин В | 1h | 1h |
| 1453 | 3.41 | установка бака стабилизации на подачу воды в прекондеционер (подключение) |  | 2h | 2026-07-02 09:00 A | 2026-07-02 11:00 A | 100% |  |  | start no earlier than 2026-07-02 09:00 | Тимофеев В | 2h | 2h |
| 1454 | 3.42 | изготовить фильтры на установки охлаждения |  | 1d? | 2026-07-06 09:00 | 2026-07-06 18:00 |  |  | 177.59d | start no earlier than 2026-07-06 09:00 | Тимофеев В | 8h |  |
| 1455 | 3.43 | удлинить горловину для второго красного смесителя |  | 2h | 2026-06-29 09:00 A | 2026-06-29 11:00 A | 100% |  |  | start no earlier than 2026-06-29 09:00 | Бундин В | 2h | 2h |
| 1456 | 3.44 | закрепить датчик сырья лопаткой в горке, под магнитом. Бункер экструдера |  | 4h | 2026-06-27 09:00 A | 2026-06-29 13:00 A | 100% |  |  | start no earlier than 2026-06-27 09:00 | Бундин В | 4h | 4h |
| 1457 | 3.45 | над магнитом сделать приемную воронку, борта, чтобы не пересыпалось сырье |  | 4h | 2026-06-27 09:00 A | 2026-06-29 13:00 A | 100% |  |  | start no earlier than 2026-06-27 09:00 | Бундин В | 4h | 4h |
| 1458 | 3.46 | удлинить воронку смесителя до горловины шнека. Приготовить сварщику, обяснить что нужно сделать. Вместо вибратора |  | 4h | 2026-06-27 09:00 A | 2026-06-29 13:00 A | 100% |  |  | start no earlier than 2026-06-27 09:00 | Дедов В; Бундин В | 8h | 8h |
| 1459 | 3.47 | байпас для масленной станции |  | 2h | 2026-07-01 09:00 A | 2026-07-01 11:00 A | 100% |  |  | start no earlier than 2026-07-01 09:00 | Тимофеев В | 2h | 2h |
| 1460 | 3.48 | **площадка для операторов для доступа к бункеру, что бы не наступали на краны** |  | 0.12d | 2026-07-02 09:00 A | 2026-07-02 10:00 A | 100% |  |  |  | Макаревич А; Некрасов А | 4h | 4h |
| 1461 | 3.48.1 | убрать заусенцы болгаркой |  | 1h | 2026-07-02 09:00 A | 2026-07-02 10:00 A | 100% |  |  | start no earlier than 2026-07-02 09:00 | Макаревич А; Тимофеев В | 2h | 2h |
| 1462 | 3.49 | **монтаж второй площадки с другой стороны (лестницу берем у 5 цеха -белую)** |  | 0.12d | 2026-07-03 09:00 A | 2026-07-03 10:00 A | 100% |  |  |  | Макаревич А; Некрасов А | 3h | 3h |
| 1463 | 3.49.1 | покрасить лестницу (мастер ц.1 даст людей- контроль) |  | 1h | 2026-07-03 09:00 A | 2026-07-03 10:00 A | 100% |  |  | start no earlier than 2026-07-03 09:00 | Макаревич А | 1h | 1h |
| 1464 | 3.50 | закрутить крышку двигателя улитки на циклоне жиров |  | 1h | 2026-06-25 09:00 A | 2026-06-25 10:00 A | 100% |  |  | start no earlier than 2026-06-25 09:00 | Дедов В | 1h | 1h |
| 1465 | 3.51 | укоротить шланг подачи масла | manual | 1h | 2026-06-25 08:00 A | 2026-06-25 09:00 A | 100% |  |  | start no earlier than 2026-06-25 08:00 | Макаревич А | 1h | 1h |
| 1466 | 3.52 | проверка подачи воды на парогенератор и прекондиционер, почему клапан подачи в бак заблокирован. |  | 2h | 2026-06-25 09:00 A | 2026-06-25 11:00 A | 100% |  |  | start no earlier than 2026-06-25 09:00 | Дедов В | 2h | 2h |
| 1467 | 3.53 | проверить парогенератор |  | 0.5h | 2026-06-25 09:00 A | 2026-06-25 09:30 A | 100% |  |  | start no earlier than 2026-06-25 09:00 | Дедов В | 0.5h | 0.5h |
| 1468 | 3.54 | вскрыть парогенератор, чистка электродов- фото |  | 3h | 2026-06-25 08:00 A | 2026-06-25 12:00 A | 100% |  |  | start no earlier than 2026-06-25 08:00 | Макаревич А | 3h | 3h |
| 1469 | 3.55 | подключить ролеты на охладителе |  | 1h | 2026-06-25 09:00 A | 2026-06-25 10:00 A | 100% |  |  | start no earlier than 2026-06-25 09:00 | Дедов В | 1h | 1h |
| 1470 | 3.56 | изготовление и установка шибера в лоток |  | 2h | 2026-06-25 09:00 A | 2026-06-25 11:00 A | 100% |  |  | start no earlier than 2026-06-25 09:00 | Дедов В | 2h | 2h |
| 1471 | 3.57 | контроль печи, будет включена пока не перестанет дымить |  | 1h | 2026-06-24 09:00 A | 2026-06-24 10:00 A | 100% |  |  | start no earlier than 2026-06-24 09:00 | Труфанов А; Макаревич А | 2h | 2h |

| ID | WBS | Task | Type | Duration | Start | Finish | Predecessors | Complete | Constraint | Resources | Work | Actual work |
| --- | --- | --- | --- | --- | --- | --- | --- | --- | --- | --- | --- | --- |
| 1472 | 3.58 | **взять на складе у Веры кронштейн под щетку, закрепить на него саму щетку и прикрутить на мезонине навесок в сторону ворот** |  | 28.38d | 2026-07-07 09:00 A | 2026-08-14 12:00 A |  | 100% |  |  | 3.5h | 3.5h |
| 1473 | 3.58.1 | заказать профиль 5мм |  | 15min | 2026-07-07 09:00 A | 2026-07-07 09:15 A |  | 100% | start no earlier than 2026-07-07 09:00 | Зорькин В | 0.25h | 0.25h |
| 1474 | 3.58.2 | контроль досставки |  | 15min | 2026-07-17 09:15 A | 2026-07-17 09:30 A | 1473FS+10d | 100% | start no earlier than 2026-07-07 09:00 | Зорькин В | 0.25h | 0.25h |
| 1475 | 3.58.3 | прикрепить на клепки/ саморезу щетку и установить на мезонине где ворота (все это находиться в 3 ц. справа на входе) Еще одна щетка есть у веры на складе, висела на кабинке | manual | 3h | 2026-08-14 09:00 A | 2026-08-14 12:00 A | 1474 | 100% |  | Макаревич А | 3h | 3h |
| 1476 | 3.59 | кабель трется о дверь, уложить в лоток, приподнять -закрепить к воздуховоду |  | 3h | 2026-06-24 09:00 A | 2026-06-24 12:00 A |  | 100% | start no earlier than 2026-06-24 09:00 | Труфанов А | 3h | 3h |
| 1477 | 3.60 | на частотнике пневмоулитки на жирах- увеличить время разгона и торможения |  | 1h | 2026-06-23 09:00 A | 2026-06-23 10:00 A |  | 100% | start no earlier than 2026-06-23 09:00 | Труфанов А | 1h | 1h |
| 1478 | 3.61 | проверить редукторы на печи (утечка есть или нет) |  | 1h | 2026-06-23 09:00 A | 2026-06-23 10:00 A |  | 100% | start no earlier than 2026-06-23 09:00 | Труфанов А | 1h | 1h |
| 1479 | 3.62 | убрать трубу нерж в коридоре возле охладителя в комнату на выходе из цеха | manual | 1h | 2026-06-20 09:00 A | 2026-06-20 10:00 A |  | 100% | start no earlier than 2026-06-20 09:00 | Бундин В | 1h | 1h |
| 1480 | 3.63 | капает с улитки вытяжки печи- просверлить сверло 6мм |  | 1h | 2026-06-20 09:00 A | 2026-06-22 10:00 A |  | 100% | start no earlier than 2026-06-20 09:00 | Дедов В | 1h | 1h |
| 1481 | 3.64 | герметизация всех стыков вневмотрубы аллюминевым скотчем (улитка с печи на жиры) | manual | 1h | 2026-06-21 09:00 A | 2026-06-21 10:00 A |  | 100% | start no earlier than 2026-06-21 09:00 | Труфанов А | 1h | 1h |
| 1482 | 3.65 | отпилить одну перекладину опоры вентиляции, чтобы открывалась дверь печи | manual | 3h | 2026-06-21 09:00 A | 2026-06-21 12:00 A |  | 100% | start no earlier than 2026-06-21 09:00 | Бундин В | 3h | 3h |
| 1483 | 3.66 | проверка подачи воды в прекондиционер | manual | 1h | 2026-06-21 09:00 A | 2026-06-21 10:00 A |  | 100% | start no earlier than 2026-06-21 09:00 | Труфанов А | 1h | 1h |
| 1484 | 3.67 | включаем печь, прожигаем масло- чтобы вагорело и не дымило… контроль |  | 1h | 2026-06-23 09:00 A | 2026-06-23 10:00 A |  | 100% | start no earlier than 2026-06-23 09:00 | Шуранов Ю | 1h | 1h |
| 1485 | 3.68 | прикрутить горловину прекондиционера (находиться в комнате на выходе из цеха) | manual | 1h | 2026-06-20 09:00 A | 2026-06-20 10:00 A |  | 100% | start no earlier than 2026-06-20 09:00 | Бундин В | 1h | 1h |
| 1486 | 3.69 | на 1 и 2 зоне температура растет больше факта- проверить |  | 1h | 2026-06-23 09:00 A | 2026-06-23 10:00 A |  | 100% | start no earlier than 2026-06-23 09:00 | Труфанов А | 1h | 1h |
| 1487 | 3.70 | собрать парогенератор (насос+ вход вода в парик) |  | 1h | 2026-06-19 09:00 A | 2026-06-19 10:00 A |  | 100% | start no earlier than 2026-06-19 09:00 | Дедов В | 1h | 1h |
| 1488 | 3.71 | увеличить частоту на пневмоулитку с печи в жиры |  | 1h | 2026-06-19 09:00 A | 2026-06-19 10:00 A |  | 100% | start no earlier than 2026-06-19 09:00 | Дедов В | 1h | 1h |
| 1489 | 3.72 | трубу жиротопки утеплить |  | 2h | 2026-06-18 09:00 A | 2026-06-18 11:00 A |  | 100% | start no earlier than 2026-06-18 08:00 | Труфанов А | 2h | 2h |
| 1490 | 3.73 | установка смесителя душа 2 этаж продолжить |  | 4h | 2026-07-07 09:00 A | 2026-07-07 13:00 A |  | 100% | start no earlier than 2026-07-07 09:00 | Бундин В | 4h | 4h |
| 1491 | 3.74 | на прекондеционере настроить премыкание на всех дверцах | manual | 3h | 2026-06-21 09:00 A | 2026-06-21 12:00 A |  | 100% | start no earlier than 2026-06-21 09:00 | Труфанов А | 3h | 3h |
| 1492 | 3.75 | обрезить шпильки, которые торчат, на воздуховодах вентиляции (зона навесок и жиров) |  | 2h | 2026-06-18 09:00 A | 2026-06-18 11:00 A |  | 100% | start no earlier than 2026-06-18 08:00 | Труфанов А | 2h | 2h |
| 1493 | 3.76 | **модернизация схема ШУ жиротопки - отключается циркуляц насос при достжении температуры** |  | 5.5d | 2026-06-07 09:00 A | 2026-06-15 13:00 A |  | 100% |  |  | 5h | 5h |
| 1494 | 3.76.1 | изучить схему, согласовать предложения модернизации |  | 1h | 2026-06-07 09:00 A | 2026-06-08 10:00 A |  | 100% | start no earlier than 2026-06-07 09:00 | Дедов В | 1h | 1h |
| 1495 | 3.76.2 | реализации модернизации |  | 4h | 2026-06-15 09:00 A | 2026-06-15 13:00 A | 1494 | 100% | start no earlier than 2026-06-15 09:00 | Дедов В | 4h | 4h |

| ID | WBS | Task | Type | Duration | Start | Finish | Predecessors | Complete | Remaining | Actual start | Actual finish | Total slack | Free slack | Constraint | Resources | Work | Actual work |
| --- | --- | --- | --- | --- | --- | --- | --- | --- | --- | --- | --- | --- | --- | --- | --- | --- | --- |
| 1496 | 3.77 | **сборка квадропак с системой дозации** |  | 56.5d | 2026-06-18 09:00 A | 2026-09-04 13:00 |  | 45% | 31.17d |  |  | 134.09d |  |  |  | 67h | 36h |
| 1497 | 3.77.1 | сборка нория |  | 8h | 2026-07-17 09:00 | 2026-07-17 18:00 |  |  |  |  |  | 167.59d | 0d | start no earlier than 2026-07-17 09:00 | Некрасов А; Тимофеев В | 15h |  |
| 1498 | 3.77.2 | сборка площадка |  | 4h | 2026-07-20 09:00 | 2026-07-20 13:00 | 1497 |  |  |  |  | 167.59d | 0d | start no earlier than 2026-07-09 08:00 | Некрасов А; Тимофеев В | 8h |  |
| 1499 | 3.77.3 | монтаж весы |  | 4h | 2026-07-20 14:00 | 2026-07-20 18:00 | 1498 |  |  |  |  | 167.59d |  | start no earlier than 2026-07-09 08:00 | Некрасов А; Тимофеев В | 8h |  |
| 1500 | 3.77.4 | подключить квадропак / пусконаладка |  | 4h | 2026-09-04 09:00 A | 2026-09-04 13:00 A |  | 100% |  |  |  |  |  | start no earlier than 2026-09-04 09:00 | Зорькин В; Труфанов А | 8h | 8h |
| 1501 | 3.77.5 | разгрузка / распаковка |  | 1h | 2026-06-18 09:00 A | 2026-06-18 10:00 A |  | 100% |  |  |  |  |  | start no earlier than 2026-06-18 09:00 | Некрасов А; Тимофеев В | 1h | 1h |
| 1502 | 3.77.6 | сборка рама в 1ц над столом выгрузки пакетов. Примерка/доработка рамы по месту |  | 4h | 2026-07-09 09:00 A | 2026-07-09 13:00 A |  | 100% |  |  |  |  |  | start no earlier than 2026-07-09 09:00 | Некрасов А; Макаревич А; Тимофеев В | 11h | 11h |
| 1503 | 3.77.7 | сборка дозатор |  | 4h | 2026-07-09 09:00 A | 2026-07-09 13:00 A |  | 100% |  |  |  |  |  | start no earlier than 2026-07-09 09:00 | Зорькин В; Макаревич А; Некрасов А; Тимофеев В | 16h | 16h |
| 1504 | 3.78 | устранить заусенцы пол площадки жиротопки. Рвет тряпку уборщица. |  | 4h | 2026-05-31 09:00 A | 2026-06-01 13:00 A |  | 100% |  |  |  |  |  | start no earlier than 2026-05-31 09:00 | Макаревич А | 4h | 4h |
| 1505 | 3.79 | **востановить насос циркуляция воды на жиротопке** |  | 8.32d | 2026-06-06 09:00 A | 2026-06-18 11:35 A |  | 100% |  |  |  |  |  |  |  | 3.58h | 3.58h |
| 1506 | 3.79.1 | разборка насос / выяснить причину заклинивания |  | 1h | 2026-06-06 09:00 A | 2026-06-08 10:00 A |  | 100% |  |  |  |  |  | start no earlier than 2026-06-06 09:00 | Бундин В | 1h | 1h |
| 1507 | 3.79.2 | заявка аналог |  | 20min | 2026-06-08 09:00 A | 2026-06-08 09:20 A | 1506 | 100% |  |  |  |  |  | start no earlier than 2026-06-08 09:00 | Шуранов Ю | 0.33h | 0.33h |
| 1508 | 3.79.3 | контроль доставка |  | 15min | 2026-06-17 09:20 A | 2026-06-17 09:35 A | 1507FS+7d | 100% |  |  |  |  |  | start no earlier than 2026-06-05 08:00 | Шуранов Ю | 0.25h | 0.25h |
| 1509 | 3.79.4 | замена |  | 2h | 2026-06-18 09:35 A | 2026-06-18 11:35 A | 1508FS+1d | 100% |  |  |  |  |  | start no earlier than 2026-06-05 08:00 | Тимофеев В | 2h | 2h |
| 1510 | 3.80 | **жиротопка** |  | 9.5d | 2026-06-09 09:00 A | 2026-06-22 13:00 A |  | 100% |  |  |  |  |  |  |  | 9h | 9h |
| 1511 | 3.80.1 | (проверить двигатель и сам насос) |  | 1h | 2026-06-09 09:00 A | 2026-06-09 10:00 A |  | 100% |  |  |  |  |  | start no earlier than 2026-06-09 09:00 | Тимофеев В | 1h | 1h |
| 1512 | 3.80.2 | ремонт заклинившего насоса жиров (сняли сегодя голову ) |  | 1h | 2026-06-18 09:00 A | 2026-06-18 10:00 A | 1511 | 100% |  |  |  |  |  | start no earlier than 2026-06-18 09:00 | Труфанов А | 1h | 1h |
| 1513 | 3.80.3 | установить насос, который перебрал Труфанов поставить на штатное место / если не заработает ставим новый | manual | 1h | 2026-06-21 09:00 A | 2026-06-21 10:00 A | 1512 | 100% |  |  |  |  |  | start no earlier than 2026-06-21 09:00 | Бундин В | 1h | 1h |
| 1514 | 3.80.4 | восстановить работу пускателя на насос перекачки с бака в бак |  | 4h | 2026-06-20 09:00 A | 2026-06-22 13:00 A |  | 100% |  |  |  |  |  | start no earlier than 2026-06-20 09:00 | Дедов В | 4h | 4h |
| 1515 | 3.80.5 | подключить все шланги подачи жира в баки | manual | 2h | 2026-06-22 09:00 A | 2026-06-22 11:00 A |  | 100% |  |  |  |  |  | start no earlier than 2026-06-22 09:00 | Труфанов А | 2h | 2h |
| 1516 | 3.81 | **трасса нерж жиротопка- баки, найти утечки устранить** |  | 0.75d | 2026-05-23 09:00 A | 2026-05-25 16:00 A |  | 100% |  |  |  |  |  |  |  | 6h | 6h |
| 1517 | 3.81.1 | заварить места утечки и восстановить утеплитель + греющий кабель |  | 6h | 2026-05-23 09:00 A | 2026-05-25 16:00 A |  | 100% |  |  |  |  |  | start no earlier than 2026-05-23 09:00 | Макаревич А | 6h | 6h |
| 1518 | 3.82 | **защита ворот на мезонине загрузки** |  | 8h? | 2026-05-22 09:00 | 2026-05-22 18:00 |  | 100% |  | 2026-05-29 09:00 | 2026-08-13 13:00 |  |  |  |  | 27h | 27h |
| 1519 | 3.82.1 | покрасить конструкцию |  | 2h | 2026-05-31 09:00 A | 2026-06-01 11:00 A |  | 100% |  |  |  |  |  | start no earlier than 2026-05-31 09:00 | Макаревич А | 2h | 2h |
| 1520 | 3.82.2 | приварить дополнительную перекладину на защиту воротины |  | 2h | 2026-07-07 09:00 A | 2026-07-07 11:00 A |  | 100% |  |  |  |  |  | start no earlier than 2026-07-07 09:00 | Труфанов А; Тимофеев В | 4h | 4h |
| 1521 | 3.82.3 | заказать щетку и битумную ленту |  | 1h | 2026-05-31 11:00 A | 2026-06-01 10:00 A | 1519 | 100% |  |  |  |  |  | start no earlier than 2026-05-22 09:00 | Шуранов Ю | 1h | 1h |
| 1522 | 3.82.4 | контроль доставки |  | 1d? | 2026-05-31 12:00 A | 2026-06-01 18:00 A | 1521 | 100% |  |  |  |  |  | start no earlier than 2026-05-29 09:00 | Шуранов Ю | 8h | 8h |
| 1523 | 3.82.5 | установка щетки |  | 4h | 2026-08-13 09:00 A | 2026-08-13 13:00 A |  | 100% |  |  |  |  |  | start no earlier than 2026-08-13 09:00 | Макаревич А | 4h | 4h |
| 1524 | 3.82.6 | монтаж |  | 1d? | 2026-05-29 09:00 A | 2026-05-29 18:00 A |  | 100% |  |  |  |  |  | start no earlier than 2026-05-29 09:00 | Некрасов А | 8h | 8h |
| 1525 | 3.83 | установить щетку на поломоечную машину (щетка на складе) |  | 2h | 2026-05-21 09:00 A | 2026-05-21 11:00 A |  | 100% |  |  |  |  |  | start no earlier than 2026-05-21 08:00 | Бундин В | 2h | 2h |
| 1526 | 3.84 | площадка мезонина зона фасовки- убрать щели профиля битумной лентой |  | 2h | 2026-05-21 09:00 A | 2026-05-21 11:00 A |  | 100% |  |  |  |  |  | start no earlier than 2026-05-21 09:00 | Бундин В | 2h | 2h |
| 1527 | 3.85 | прикрутить дюзы форсунок подачи воды в прекондиционер, взять у меня на столе. |  | 1h | 2026-05-22 09:00 A | 2026-05-22 10:00 A |  | 100% |  |  |  |  |  | start no earlier than 2026-05-22 09:00 | Тимофеев В | 1h | 1h |
| 1528 | 3.86 | проверить насос подачи жира со 2 бака на барабаны, Викторович его разобрал |  | 2h | 2026-05-19 08:00 A | 2026-05-19 11:00 A |  | 100% |  |  |  |  |  | start no earlier than 2026-05-19 08:00 | Дедов В | 2h | 2h |
| 1529 | 3.87 | проверить рабочий или нет циркуляционный насос для змеевика на жиротопке |  | 1h | 2026-05-19 08:00 A | 2026-05-19 10:00 A |  | 100% |  |  |  |  |  | start no earlier than 2026-05-19 08:00 | Дедов В | 1h | 1h |
| 1530 | 3.88 | проверка оборудования на жирах водой |  | 3h | 2026-05-19 09:00 A | 2026-05-19 12:00 A |  | 100% |  |  |  |  |  | start no earlier than 2026-05-20 09:00 | Тимофеев В | 3h | 3h |
| 1531 | 3.89 | покраска пол под лотком барабан-охладитель |  | 1h | 2026-05-15 09:00 A | 2026-05-15 10:00 A |  | 100% |  |  |  |  |  | start no earlier than 2026-05-15 09:00 | Бобренок В | 1h | 1h |

| ID | WBS | Task | Type | Duration | Start | Finish | Complete | Remaining | Total slack | Constraint | Resources | Work | Actual work |
| --- | --- | --- | --- | --- | --- | --- | --- | --- | --- | --- | --- | --- | --- |
| 1532 | 3.90 | **ремонт ворот рольставня** |  | 4.12d | 2026-05-14 09:00 A | 2026-05-20 10:00 A | 100% |  |  |  |  | 2h | 2h |
| 1533 | 3.90.1 | вызывать сервис |  | 1h | 2026-05-14 09:00 A | 2026-05-14 10:00 A | 100% |  |  | start no earlier than 2026-05-14 09:00 | Зорькин В | 1h | 1h |
| 1534 | 3.90.2 | контроль работ |  | 1h | 2026-05-20 09:00 A | 2026-05-20 10:00 A | 100% |  |  | start no earlier than 2026-05-20 09:00 | Зорькин В | 1h | 1h |
| 1535 | 3.91 | вырезать косая пластина в воронку пневмотранспорта на подачу жиров |  | 2h | 2026-05-14 09:00 A | 2026-05-14 11:00 A | 100% |  |  | start no earlier than 2026-05-14 09:00 | Макаревич А | 2h | 2h |
| 1536 | 3.92 | убрать бороду от вентиляторов |  | 4h | 2026-05-12 09:00 A | 2026-05-12 13:00 A | 100% |  |  | start no earlier than 2026-05-12 09:00 | Некрасов А; Труфанов А | 8h | 8h |
| 1537 | 3.93 | монтаж кабель управления заслонками вентиляторы окно |  | 4h | 2026-05-20 09:00 A | 2026-05-20 13:00 A | 100% |  |  | start no earlier than 2026-05-22 09:00 | Некрасов А; Бундин В | 8h | 8h |
| 1538 | 3.94 | **автоматика управления смесителями** |  | 80.38d | 2026-05-04 09:00 A | 2026-08-24 12:00 | 91% | 6.89d | 143.22d |  |  | 35h | 32h |
| 1539 | 3.94.1 | поменять местами переключатели управления смесителями левый что бы включал поперечный смеситель |  | 2h | 2026-07-12 09:00 A | 2026-07-13 11:00 A | 100% |  |  | start no earlier than 2026-07-12 09:00 | Дедов В | 2h | 2h |
| 1540 | 3.94.2 | сделать подключение красных смесителей по схеме Домоводова |  | 22h | 2026-05-18 09:00 A | 2026-05-20 16:00 A | 100% |  |  | start no earlier than 2026-05-19 09:00 | Дедов В | 22h | 22h |
| 1541 | 3.94.3 | доработка схемы управления смесителями по логике ТЗ, упорядочить монтаж, промаркировать соденения |  | 8h | 2026-05-04 09:00 A | 2026-05-04 18:00 A | 100% |  |  | start no earlier than 2026-05-04 09:00 | Дедов В | 8h | 8h |
| 1542 | 3.94.4 | уложить красиво все провода в шкафу управления смесителями |  | 3h | 2026-08-24 09:00 | 2026-08-24 12:00 |  |  | 143.22d | start no earlier than 2026-08-24 09:00 | Дедов В | 3h |  |
| 1543 | 3.95 | **установить воздуховод на 300мм на красные смесители** |  | 6.25d | 2026-05-08 08:00 A | 2026-05-18 11:00 A | 100% |  |  |  |  | 4h | 4h |
| 1544 | 3.95.1 | заказать другой диаметр | milestone | 0d | 2026-05-08 08:00 A | 2026-05-08 08:00 A | 100% |  |  | start no earlier than 2026-05-08 08:00 | Зорькин В |  |  |
| 1545 | 3.95.2 | установить ф300 | milestone | 0h | 2026-05-13 09:00 A | 2026-05-13 09:00 A | 100% |  |  | start no earlier than 2026-05-13 09:00 | Тимофеев В; Зорькин В |  |  |
| 1546 | 3.95.3 | красные смесители вернуть воздуховоды (доработать рукав пересыпки воронка-смеситель) |  | 2h | 2026-05-13 09:00 A | 2026-05-13 11:00 A | 100% |  |  | start no earlier than 2026-05-13 09:00 | Тимофеев В | 2h | 2h |
| 1547 | 3.95.4 | сборка рукав на второй смеситель. Сшить по образцу |  | 2h | 2026-05-18 09:00 A | 2026-05-18 11:00 A | 100% |  |  | start no earlier than 2026-05-18 09:00 | Тимофеев В | 2h | 2h |
| 1548 | 3.96 | проверить почему не запускается приточная вентиляция в вент. Камере 7,5кВт |  | 1h | 2026-04-29 08:00 A | 2026-04-29 10:00 A | 100% |  |  | start no earlier than 2026-04-29 08:00 | Дедов В | 1h | 1h |
| 1549 | 3.97 | прозвонить кнопку индикации водителя под сиденьем (позвони объясню) |  | 2h | 2026-04-15 09:00 A | 2026-04-15 11:00 A | 100% |  |  | start no earlier than 2026-04-15 08:00 | Бундин В | 2h | 2h |
| 1550 | 3.98 | проверить приход с Китая по шнекам и гильзам |  | 1h | 2026-04-09 09:00 A | 2026-04-09 10:00 A | 100% |  |  | start no earlier than 2026-04-09 08:00 | Шуранов Ю | 1h | 1h |
| 1551 | 3.99 | собрать и установить мойку (со старой прикрутить смеситель) мойка у Веры на складе на 2 верхнем ярусе стеллажей | manual | 2h | 2026-04-05 09:00 A | 2026-04-05 11:00 A | 100% |  |  | start no earlier than 2026-04-05 09:00 | Труфанов А | 2h | 2h |
| 1552 | 3.100 | вывоз 3 поддона с мусором |  | 30min | 2026-03-24 09:00 A | 2026-03-24 09:30 A | 100% |  |  | start no earlier than 2026-03-24 09:00 | Некрасов А; Труфанов А | 1h | 1h |
| 1553 | 3.101 | установить отбойники на стеллажи | manual | 8h | 2026-03-29 09:00 A | 2026-03-29 18:00 A | 100% |  |  | start no earlier than 2026-03-29 09:00 | Бундин В | 8h | 8h |
| 1554 | 3.102 | установить отбойники на стеллажи | manual | 6h | 2026-04-18 09:00 A | 2026-04-18 16:00 A | 100% |  |  | start no earlier than 2026-04-18 09:00 | Бобренок В | 6h | 6h |
| 1555 | 3.103 | уборка зона курилка / венткамера |  | 4h | 2026-03-17 09:00 A | 2026-03-17 13:00 A | 100% |  |  | start no earlier than 2026-03-17 09:00 | Тимофеев В; Некрасов А; Макаревич А; Труфанов А | 16h | 16h |

| ID | WBS | Task | Duration | Start | Finish | Predecessors | Complete | Remaining | Actual start | Total slack | Constraint | Resources | Work | Actual work |
| --- | --- | --- | --- | --- | --- | --- | --- | --- | --- | --- | --- | --- | --- | --- |
| 1556 | 3.104 | **сборка квадропак** | 13.25d | 2026-05-06 09:00 A | 2026-05-25 11:00 A |  | 100% |  |  |  |  |  | 14h | 14h |
| 1557 | 3.104.1 | подвести воздух к квадропаку | 4h | 2026-05-22 09:00 A | 2026-05-22 13:00 A |  | 100% |  |  |  | start no earlier than 2026-05-22 09:00 | Тимофеев В | 4h | 4h |
| 1558 | 3.104.2 | установить перед пневмораспределителями влагоотделитель | 2h | 2026-05-24 09:00 A | 2026-05-25 11:00 A |  | 100% |  |  |  | start no earlier than 2026-05-24 09:00 | Дедов В | 2h | 2h |
| 1559 | 3.104.3 | подключить квадропак к щитку кабель 5х2,5 | 4h | 2026-05-06 09:00 A | 2026-05-06 13:00 A |  | 100% |  |  |  | start no earlier than 2026-05-06 09:00 | Труфанов А; Тимофеев В | 8h | 8h |
| 1560 | 3.105 | крепление магистрали компрессора. Зона дрожировки | 1h | 2026-03-08 09:00 A | 2026-03-09 10:00 A |  | 100% |  |  |  | start no earlier than 2026-03-08 09:00 | Бундин В | 1h | 1h |
| 1561 | 3.106 | Собрать транспортер тип2 (уточнить у Шуранова)/ доделать | 3h | 2026-03-08 09:00 A | 2026-03-09 12:00 A |  | 100% |  |  |  | start no earlier than 2026-03-08 09:00 | Бобренок В | 3h | 3h |
| 1562 | 3.107 | **Покраска лестницы** | 43d | 2026-03-04 09:00 A | 2026-05-01 18:00 A |  | 100% |  |  |  |  |  | 116.33h | 116.33h |
| 1563 | 3.107.1 | Заявка на краску | 20min | 2026-03-04 09:00 A | 2026-03-04 09:20 A |  | 100% |  |  |  | start no earlier than 2026-03-04 09:00 | Зорькин В | 0.33h | 0.33h |
| 1564 | 3.107.2 | Доставка | 10d | 2026-03-04 09:20 A | 2026-03-18 09:20 A | 1563 | 100% |  |  |  | start no earlier than 2026-03-03 08:00 | Карабанов | 80h | 80h |
| 1565 | 3.107.3 | Работа по покраске | 6h | 2026-04-28 09:00 A | 2026-04-28 16:00 A | 1564 | 100% |  |  |  | start no earlier than 2026-04-28 09:00 | оперторы2; Олег | 12h | 12h |
| 1566 | 3.107.4 | покраска колонны в коридоре | 4h | 2026-04-28 09:00 A | 2026-04-28 13:00 A |  | 100% |  |  |  | start no earlier than 2026-04-28 08:00 | оперторы2; Олег | 8h | 8h |
| 1567 | 3.107.5 | покарска потолок в корридоре | 2d | 2026-04-30 09:00 A | 2026-05-01 18:00 A |  | 100% |  |  |  | start no earlier than 2026-04-30 09:00 | оператор2 | 16h | 16h |
| 1568 | 3.108 | **доработка лотка барабан-охладитель - снизить скорость падения, установить сетку** | 1.5d? | 2026-04-14 09:00 | 2026-04-15 13:00 |  | 88% | 0.17d? | 2026-05-13 09:00 |  |  |  | 46.75h | 42.75h |
| 1569 | 3.108.1 | сборка кронштейны + стека | 5h | 2026-05-13 09:00 A | 2026-05-13 15:00 A |  | 100% |  |  |  | start no earlier than 2026-05-13 09:00 | Труфанов А; Некрасов А | 10h | 10h |
| 1570 | 3.108.2 | сборка ручки, установка. Фотоотчет | 2h | 2026-05-15 09:00 A | 2026-05-15 11:00 A |  | 100% |  |  |  | start no earlier than 2026-05-15 09:00 | Некрасов А; Труфанов А | 4h | 4h |
| 1571 | 3.108.3 | сборка вращающаяся заслонка | 4h | 2026-05-15 11:00 A | 2026-05-15 16:00 A | 1570 | 100% |  |  |  | start no earlier than 2026-05-15 09:00 | Некрасов А; Труфанов А | 8h | 8h |
| 1572 | 3.108.4 | доработка пластины, что бы не клинила | 1h | 2026-05-21 09:00 A | 2026-05-21 10:00 A |  | 100% |  |  |  | start no earlier than 2026-05-22 09:00 | Некрасов А; Бундин В | 2h | 2h |
| 1573 | 3.108.5 | заказ на лазере пластину для регулировки шибера | 1d? | 2026-05-25 09:00 A | 2026-05-25 18:00 A |  | 100% |  |  |  | start no earlier than 2026-05-25 09:00 | Зорькин В | 8h | 8h |
| 1574 | 3.108.6 | чертеж пластина фиксации рычага | 2h | 2026-05-19 09:00 A | 2026-05-19 11:00 A | 1571 | 100% |  |  |  | start no earlier than 2026-05-19 09:00 | Зорькин В | 2h | 2h |
| 1575 | 3.108.7 | заявка на изготвление на лазер | 15min | 2026-05-20 11:00 A | 2026-05-20 11:15 A | 1574FS+1d | 100% |  |  |  | start no earlier than 2026-05-15 08:00 | Зорькин В | 0.25h | 0.25h |
| 1576 | 3.108.8 | контроль изг | 15min | 2026-06-01 09:00 A | 2026-06-01 09:15 A | 1575FS+5d | 100% |  |  |  | start no earlier than 2026-06-01 09:00 | Зорькин В | 0.25h | 0.25h |
| 1577 | 3.108.9 | доставка орг | 15min | 2026-06-05 09:00 A | 2026-06-05 09:15 A | 1576FS+1d | 100% |  |  |  | start no earlier than 2026-06-05 09:00 | Зорькин В | 0.25h | 0.25h |
| 1578 | 3.108.10 | сборка рычага | 4h | 2026-06-08 09:15 | 2026-06-08 14:15 | 1577FS+1d |  |  |  | 198.06d | start no earlier than 2026-06-06 09:00 | Бундин В | 4h |  |
| 1579 | 3.108.11 | сделать напраляшку на шибере регулируемую- сыпит в одну сторону | 1d? | 2026-06-17 09:00 A | 2026-06-17 18:00 A |  | 100% |  |  |  | start no earlier than 2026-06-23 09:00 | Тимофеев В | 8h | 8h |
| 1580 | 3.109 | сборка система отопления 2 этаж | 1d? | 2026-06-15 09:00 | 2026-06-15 18:00 |  |  |  |  | 192.59d | start no earlier than 2026-06-15 09:00 | Труфанов А; Некрасов А; Олег | 24h |  |

| ID | WBS | Task | Duration | Start | Finish | Predecessors | Complete | Remaining | Total slack | Constraint | Resources | Work | Actual work |
| --- | --- | --- | --- | --- | --- | --- | --- | --- | --- | --- | --- | --- | --- |
| 1581 | 3.110 | **заменить сопряжение смесителей на гибк вставку** | 29.25d | 2026-03-19 09:00 A | 2026-04-29 11:00 A |  | 100% |  |  |  |  | 122.5h | 122.5h |
| 1582 | 3.110.1 | заявка | 30min | 2026-03-19 09:00 A | 2026-03-19 09:30 A |  | 100% |  |  | start no earlier than 2026-03-19 09:00 | Зорькин В | 0.5h | 0.5h |
| 1583 | 3.110.2 | доставка | 15d | 2026-03-19 09:30 A | 2026-04-09 09:30 A | 1582 | 100% |  |  | start no earlier than 2026-02-27 08:00 | Карабанов | 120h | 120h |
| 1584 | 3.110.3 | замена | 2h | 2026-04-29 09:00 A | 2026-04-29 11:00 A | 1583 | 100% |  |  | start no earlier than 2026-04-29 09:00 | Тимофеев В | 2h | 2h |
| 1585 | 3.111 | **приточная вентиляция** | 41.25d | 2026-03-06 09:00 A | 2026-05-04 11:00 |  | 31% | 28.29d | 223.34d |  |  | 17.5h | 5.5h |
| 1586 | 3.111.1 | визит Евгения. Контроль монтажа | 30min | 2026-03-06 09:00 A | 2026-03-06 09:30 A |  | 100% |  |  | start no earlier than 2026-03-06 09:00 | Домоводов К | 0.5h | 0.5h |
| 1587 | 3.111.2 | подключить силовой кабель в ШУ (лежит в лотке) | 3h | 2026-03-13 09:00 A | 2026-03-13 12:00 A |  | 100% |  |  | start no earlier than 2026-03-13 09:00 | Подрядчик | 3h | 3h |
| 1588 | 3.111.3 | монтаж изоляционных прокладок вводный автомат между фазами | 2h | 2026-03-20 09:00 | 2026-03-20 11:00 |  |  |  | 254.34d | start no earlier than 2026-03-20 09:00 | Дедов В | 2h |  |
| 1589 | 3.111.4 | подключить нулевой провод шкаф управления | 2h | 2026-03-20 09:00 | 2026-03-20 11:00 |  |  |  | 254.34d | start no earlier than 2026-03-20 09:00 | Дедов В | 2h |  |
| 1590 | 3.111.5 | монтаж перемычек от автомата на ТВ реле . Звонить Дедову | 1d | 2026-03-20 09:00 | 2026-03-20 18:00 |  |  |  | 253.59d | start no earlier than 2026-03-20 09:00 | Дедов В | 8h |  |
| 1591 | 3.111.6 | замена схемы включения вентилятор вытяжка / приточка | 2h | 2026-05-04 09:00 A | 2026-05-04 11:00 A |  | 100% |  |  | start no earlier than 2026-05-04 09:00 | Дедов В | 2h | 2h |
| 1592 | 3.112 | установить гидроаккумулятор | 2h | 2026-03-03 09:00 A | 2026-03-03 11:00 A |  | 100% |  |  | start no earlier than 2026-03-03 09:00 | Тимофеев В | 2h | 2h |
| 1593 | 3.113 | тест герметичности. жиропровод нерж оборудовать греющим кабелем + утеплитель. | 2h | 2026-06-01 09:00 | 2026-06-01 11:00 |  |  |  | 203.34d | start no earlier than 2026-05-31 09:00 | Макаревич А | 2h |  |
| 1594 | 3.114 | **установить перила площадка загрузки навески** | 0.25d | 2026-05-27 09:00 A | 2026-05-27 11:00 A |  | 100% |  |  |  |  | 2h | 2h |
| 1595 | 3.114.1 | покрасить перила | 2h | 2026-05-27 09:00 A | 2026-05-27 11:00 A |  | 100% |  |  | start no earlier than 2026-05-27 09:00 | оператор2 | 2h | 2h |
| 1596 | 3.115 | дорабать качелю безопасности на площадке загрузки навески что бы не задевала за вентиляцию | 2h | 2026-05-12 09:00 A | 2026-05-12 11:00 A |  | 100% |  |  | start no earlier than 2026-05-12 09:00 | Некрасов А | 2h | 2h |
| 1597 | 3.116 | подготовить отражатели тепла на подшипники печи линия 4 | 8h | 2025-09-01 09:00 | 2025-09-01 18:00 |  |  |  | 397.59d | start no earlier than 2025-08-30 09:00 | Тимофеев В | 8h |  |
| 1598 | 3.117 | усилить раму прекондиционера | 1d? | 2026-04-28 08:00 A | 2026-04-28 18:00 A |  | 100% |  |  | start no earlier than 2026-04-28 08:00 | Тимофеев В | 8h | 8h |
| 1599 | 3.118 | переместить магнит загрузки сырья | 2h | 2026-05-07 09:00 A | 2026-05-07 11:00 A |  | 100% |  |  | start no earlier than 2026-05-07 09:00 | Тимофеев В | 2h | 2h |
| 1600 | 3.119 | труба выход пара греет шнек - переместить | 1d? | 2026-06-19 09:00 | 2026-06-19 18:00 |  |  |  | 188.59d | start no earlier than 2026-06-19 09:00 | Тимофеев В | 8h |  |
| 1601 | 3.120 | герметизация примыкание на выходе из печи | 2d | 2026-05-18 09:00 A | 2026-05-19 18:00 A |  | 100% |  |  | start no earlier than 2026-05-18 09:00 | Олег | 16h | 16h |
| 1602 | 3.121 | обшить стены курилки | 2d | 2026-04-30 09:00 A | 2026-05-01 18:00 A |  | 100% |  |  | start no earlier than 2026-04-30 09:00 | Олег; Некрасов А | 32h | 32h |
| 1603 | 3.122 | покраска рамы воздуховодов уличные | 4h | 2026-05-27 09:00 | 2026-05-27 13:00 |  |  |  | 206.09d | start no earlier than 2026-05-27 09:00 | оператор2 | 4h |  |
| 1604 | 3.123 | **Люки на колодцы** | 13.31d | 2026-05-26 09:00 A | 2026-06-12 11:30 |  | 98% | 0.32d | 194.28d |  |  | 163.5h | 161.5h |
| 1605 | 3.123.1 | Консультация с Олегом | 30min | 2026-05-26 09:00 A | 2026-05-26 09:30 A |  | 100% |  |  | start no earlier than 2026-05-26 08:00 | Зорькин В; Олег | 1h | 1h |
| 1606 | 3.123.2 | Заявка на закуп | 30min | 2026-05-29 09:00 A | 2026-05-29 09:30 A | 1605 | 100% |  |  | start no earlier than 2026-05-29 09:00 | Зорькин В | 0.5h | 0.5h |
| 1607 | 3.123.3 | Доставка, контроль | 10d | 2026-05-29 09:30 A | 2026-06-12 09:30 A | 1606 | 100% |  |  | start no earlier than 2026-05-26 09:00 | Зорькин В; Шуранов Ю | 160h | 160h |
| 1608 | 3.123.4 | установка люков на колодцы | 2h | 2026-06-12 09:30 | 2026-06-12 11:30 | 1607 |  |  | 194.28d | start no earlier than 2026-06-04 09:00 | Олег | 2h |  |
| 1609 | 3.124 | Выяснить количество теплопотерь с печи на входе | 1h | 2026-08-28 09:00 | 2026-08-28 10:00 |  |  |  | 139.47d | start no earlier than 2026-08-28 09:00 | Зорькин В; Бобренок В | 2h |  |
| 1610 | 3.125 | Переделка входа пневмотрассы с печи на жиры, сделать плавный переход из двух углов по 45 | 4h | 2026-07-24 09:00 | 2026-07-24 13:00 |  |  |  | 164.09d | start no earlier than 2026-07-24 09:00 | Бундин В | 4h |  |

| ID | WBS | Task | Type | Duration | Start | Finish | Predecessors | Complete | Remaining | Actual finish | Total slack | Free slack | Constraint | Resources | Work | Actual work |
| --- | --- | --- | --- | --- | --- | --- | --- | --- | --- | --- | --- | --- | --- | --- | --- | --- |
| 1611 | 3.126 | **Печь** |  | 0d | 2026-07-25 09:00 A | 2026-07-26 11:00 A |  | 100% |  |  |  |  |  |  | 6h | 6h |
| 1612 | 3.126.1 | Переделка входа пневмотрассы с печи на жиры, сделать плавный переход из двух углов по 45, закончить если Валентин не доделал или взять в работу если Валентин не начал. Уточнить у него как он хотел сделать. | manual | 4h | 2026-07-25 09:00 A | 2026-07-25 13:00 A |  | 100% |  |  |  |  | start no earlier than 2026-07-25 09:00 | Макаревич А | 4h | 4h |
| 1613 | 3.126.2 | 4 зона шкаф управления не набирает заданную температуру, выяснить причину/устранить | manual | 2h | 2026-07-26 09:00 A | 2026-07-26 11:00 A |  | 100% |  |  |  |  | start no earlier than 2026-07-26 09:00 | Бобренок В | 2h | 2h |
| 1614 | 3.127 | **розетки** |  | 0.25d | 2026-07-25 09:00 A | 2026-07-27 11:00 A |  | 100% |  |  |  |  |  |  | 6h | 6h |
| 1615 | 3.127.1 | Монтаж розетки для болера, где мойка экструдера, подключиться к резерву ШУ на экструдере | manual | 2h | 2026-07-25 09:00 A | 2026-07-25 11:00 A |  | 100% |  |  |  |  | start no earlier than 2026-07-25 09:00 | Бобренок В | 2h | 2h |
| 1616 | 3.127.2 | Монтаж розетки, где ворота выхода готовой продукции | manual | 2h | 2026-07-27 09:00 A | 2026-07-27 11:00 A |  | 100% |  |  |  |  |  | Некрасов А; Труфанов А | 4h | 4h |
| 1617 | 3.128 | **Дражжировка** |  | 0d | 2026-07-26 09:00 A | 2026-07-26 11:00 A |  | 100% |  |  |  |  |  |  | 2h | 2h |
| 1618 | 3.128.1 | Устранить течь за раковиной. Вода перекрывается на потолке возле главной вентилляции | manual | 2h | 2026-07-26 09:00 A | 2026-07-26 11:00 A |  | 100% |  |  |  |  | start no earlier than 2026-07-26 09:00 | Бобренок В | 2h | 2h |
| 1619 | 3.129 | обшить стены вент камеры |  | 2d | 2026-05-06 09:00 A | 2026-05-07 18:00 A |  | 100% |  |  |  |  | start no earlier than 2026-05-06 09:00 | Олег; Некрасов А | 32h | 32h |
| 1620 | 3.130 | убрать металл 100*100 в зону охладителя или корридор |  | 1h | 2026-03-02 09:00 A | 2026-03-02 10:00 A |  | 100% |  |  |  |  | start no earlier than 2026-03-02 09:00 | Некрасов А; Труфанов А | 2h | 2h |
| 1621 | 4 | **4 склад** |  | 109.75d | 2026-03-13 09:00 A | 2026-07-15 16:00 |  | 100% |  | 2026-07-29 11:00 |  |  |  |  | 93.25h | 93.25h |
| 1622 | 4.1 | реверс направления кнопок движения вперед-назад ричтрака |  | 2h | 2026-07-14 08:00 A | 2026-07-14 11:00 A |  | 100% |  |  |  |  | start no earlier than 2026-07-14 08:00 | Дедов В | 2h | 2h |
| 1623 | 4.2 | 2 ветки не работают светильники -разобраться |  | 1h | 2026-07-02 09:00 A | 2026-07-02 10:00 A |  | 100% |  |  |  |  | start no earlier than 2026-07-02 09:00 | Тимофеев В | 1h | 1h |
| 1624 | 4.3 | Выяснить почему перегорают светильники |  | 2h | 2026-07-29 08:00 A | 2026-07-29 11:00 A |  | 100% |  |  |  |  | start no earlier than 2026-07-29 08:00 | Дедов В | 2h | 2h |
| 1625 | 4.4 | замена светильников |  | 8h | 2026-04-17 09:00 A | 2026-04-17 18:00 A |  | 100% |  |  |  |  | start no earlier than 2026-04-17 08:00 | Некрасов А; Труфанов А | 16h | 16h |
| 1626 | 4.5 | сборка рохли 1шт |  | 1h | 2026-03-13 09:00 A | 2026-03-13 10:00 A |  | 100% |  |  |  |  | start no earlier than 2026-03-13 09:00 | Тимофеев В | 1h | 1h |
| 1627 | 4.6 | ремонт обрамление погрузочной рампы |  | 4h | 2026-05-28 09:00 A | 2026-05-28 13:00 A |  | 100% |  |  |  |  | start no earlier than 2026-05-28 09:00 | Олег | 4h | 4h |
| 1628 | 4.7 | замена неисправных светильников |  | 1d | 2026-03-14 09:00 A | 2026-03-16 18:00 A |  | 100% |  |  |  |  | start no earlier than 2026-03-14 09:00 | Некрасов А; Бобренок В | 15h | 15h |
| 1629 | 4.8 | **замена неисправных светильников** |  | 87.75d | 2026-03-16 09:00 A | 2026-07-15 16:00 A |  | 100% |  |  |  |  |  |  | 52.25h | 52.25h |
| 1630 | 4.8.1 | заявка светильники |  | 15min | 2026-03-16 09:00 A | 2026-03-16 09:15 A |  | 100% |  |  |  |  | start no earlier than 2026-03-16 09:00 | Шуранов Ю | 0.25h | 0.25h |
| 1631 | 4.8.2 | доставка |  | 5d | 2026-03-16 09:15 A | 2026-03-23 09:15 A | 1630 | 100% |  |  |  |  | start no earlier than 2026-03-12 08:00 | Карабанов | 40h | 40h |
| 1632 | 4.8.3 | замена |  | 6h | 2026-07-15 09:00 A | 2026-07-15 16:00 A | 1631 | 100% |  |  |  |  | start no earlier than 2026-07-15 09:00 | Некрасов А; Труфанов А | 12h | 12h |
| 1633 | 5 | **5 цех** |  | 892.12d? | 2023-05-29 09:00 A | 2026-10-27 10:00 |  | 60% | 355.27d? |  | 96.47d |  |  |  | 1773.75h | 1069h |
| 1634 | 5.1 | **установить зажим троса на тельфер** |  | 13.28d? | 2026-09-03 09:00 A | 2026-09-21 11:15 |  | 3% | 12.89d? |  | 122.31d |  |  |  | 8.5h | 0.25h |
| 1635 | 5.1.1 | заявка |  | 15min | 2026-09-03 09:00 A | 2026-09-03 09:15 A |  | 100% |  |  |  |  | start no earlier than 2026-09-03 09:00 | Зорькин В | 0.25h | 0.25h |
| 1636 | 5.1.2 | контроль доставки |  | 15min | 2026-09-18 11:00 | 2026-09-18 11:15 | 966FS+5d |  |  |  | 122.31d | 0d | start no earlier than 2026-09-11 09:00 | Зорькин В | 0.25h |  |
| 1637 | 5.1.3 | монтаж |  | 1d? | 2026-09-18 11:15 | 2026-09-21 11:15 | 967FS+1d, 1636 |  |  |  | 122.31d |  | start no earlier than 2026-09-08 08:00 | Тимофеев В | 8h |  |

| ID | WBS | Task | Type | Duration | Start | Finish | Predecessors | Complete | Remaining | Total slack | Free slack | Constraint | Resources | Work | Actual work |
| --- | --- | --- | --- | --- | --- | --- | --- | --- | --- | --- | --- | --- | --- | --- | --- |
| 1638 | 5.2 | **ремонт насос водоснабжения** |  | 7.16d | 2026-09-03 09:00 A | 2026-09-11 10:15 |  | 17% | 5.96d | 128.44d |  |  |  | 1.5h | 0.25h |
| 1639 | 5.2.1 | Сказать параметры, шильдик насосной станции передать зорькину |  | 15min | 2026-09-03 09:00 A | 2026-09-03 09:15 A |  | 100% |  |  |  | start no earlier than 2026-09-03 09:00 | Тимофеев В | 0.25h | 0.25h |
| 1640 | 5.2.2 | конртроль поставки |  | 15min | 2026-09-10 09:00 | 2026-09-10 09:15 | 1639 |  |  | 128.44d | 0d | start no earlier than 2026-09-10 09:00 | Зорькин В | 0.25h |  |
| 1641 | 5.2.3 | замена |  | 1h | 2026-09-11 09:15 | 2026-09-11 10:15 | 1640FS+1d |  |  | 128.44d |  | start no earlier than 2026-09-10 09:00 | Тимофеев В | 1h |  |
| 1642 | 5.3 | воставноить заземление на обоих ситах |  | 2h | 2026-09-04 09:00 A | 2026-09-04 11:00 A |  | 100% |  |  |  | start no earlier than 2026-09-04 09:00 | Бобренок В | 2h | 2h |
| 1643 | 5.4 | востановить контакт пульт тельфера у стены (переменный контакт при движении кабеля у пульта) |  | 1h | 2026-09-03 09:00 A | 2026-09-03 10:00 A |  | 100% |  |  |  | start no earlier than 2026-09-03 08:00 | Бобренок В | 1h | 1h |
| 1644 | 5.5 | подключить Олегу сварочный автомат |  | 1h | 2026-08-31 09:00 A | 2026-08-31 10:00 A |  | 100% |  |  |  | start no earlier than 2026-08-31 09:00 | Тимофеев В | 1h | 1h |
| 1645 | 5.6 | **подготовить сетку на мал дробилку 3 и 4мм** |  | 1.19d | 2026-09-10 09:00 | 2026-09-11 10:30 |  |  |  | 128.41d |  |  |  | 1.5h |  |
| 1646 | 5.6.1 | проверка отстатков сетки на складах |  | 30min | 2026-09-10 09:00 | 2026-09-10 09:30 |  |  |  | 128.41d | 0d | start no earlier than 2026-09-10 09:00 | Тимофеев В | 0.5h |  |
| 1647 | 5.6.2 | вырезатиь сетку в размер |  | 1h | 2026-09-11 09:30 | 2026-09-11 10:30 | 1646FS+1d |  |  | 128.41d |  | start no earlier than 2026-08-20 09:00 | Тимофеев В | 1h |  |
| 1648 | 5.7 | ревизия шнека |  | 3h | 2026-08-17 09:00 A | 2026-08-17 12:00 A |  | 100% |  |  |  | start no earlier than 2026-08-17 09:00 | Бобренок В; Некрасов А | 6h | 6h |
| 1649 | 5.8 | **свет в туалет передать крепление светильника** |  | 1.12d | 2026-08-14 09:00 A | 2026-08-17 10:00 A |  | 100% |  |  |  |  |  | 2.25h | 2.25h |
| 1650 | 5.8.1 | проверить наличие светильника с боковым монтажем |  | 15min | 2026-08-14 09:00 A | 2026-08-14 09:15 A |  | 100% |  |  |  | start no earlier than 2026-08-14 09:00 | Домоводов К | 0.25h | 0.25h |
| 1651 | 5.8.2 | замена светильника / или закрепить |  | 1h | 2026-08-17 09:00 A | 2026-08-17 10:00 A | 1650 | 100% |  |  |  | start no earlier than 2026-08-15 09:00 | Бундин В | 1h | 1h |
| 1652 | 5.8.3 | закрепить светильник в коридоре -вход в туалет |  | 1h | 2026-08-17 09:00 A | 2026-08-17 10:00 A |  | 100% |  |  |  | start no earlier than 2026-08-17 09:00 | Бундин В | 1h | 1h |
| 1653 | 5.9 | трещина вибросито №2 1см ремонт |  | 6h | 2026-08-27 09:00 A | 2026-08-27 16:00 A |  | 100% |  |  |  | start no earlier than 2026-08-27 09:00 | Макаревич А | 6h | 6h |
| 1654 | 5.10 | трещина вибросито №1 кольцо. ремонт |  | 4h | 2026-08-28 09:00 A | 2026-08-28 13:00 A |  | 100% |  |  |  | start no earlier than 2026-08-28 09:00 | Макаревич А | 4h | 4h |
| 1655 | 5.11 | **проект новая дробилка** |  | 40.03d | 2026-08-21 09:00 A | 2026-10-15 09:15 |  | 17% | 33.37d | 104.56d |  |  |  | 144.25h | 24h |
| 1656 | 5.11.1 | **кабель для доп мощности** |  | 40.03d | 2026-08-21 09:00 A | 2026-10-15 09:15 |  | 17% | 33.37d | 104.56d |  |  |  | 144.25h | 24h |
| 1657 | 5.11.1.1 | составить ТЗ на монтаж кабеля |  | 3d | 2026-08-21 09:00 A | 2026-08-25 18:00 A |  | 100% |  |  |  | start no earlier than 2026-08-21 09:00 | Домоводов К | 24h | 24h |
| 1658 | 5.11.1.2 | получить КП / счет договор | milestone | 0d | 2026-09-09 09:00 | 2026-09-09 09:00 | 1657FS+2d |  |  | 104.56d | 0d | start no earlier than 2026-09-09 09:00 | Домоводов К |  |  |
| 1659 | 5.11.1.3 | предоплата |  | 15min | 2026-09-10 09:00 | 2026-09-10 09:15 | 1658FS+1d |  |  | 104.56d | 0d | start no earlier than 2026-08-10 08:00 | Домоводов К | 0.25h |  |
| 1660 | 5.11.1.4 | монтаж |  | 15d | 2026-09-24 09:15 | 2026-10-15 09:15 | 1659FS+10d |  |  | 104.56d |  | start no earlier than 2026-08-10 08:00 | Подрядчик | 120h |  |
| 1661 | 5.12 | **монтаж вода в 5ц** |  | 29.12d? | 2026-08-10 08:00 A | 2026-09-17 10:00 |  | 43% | 16.5d? | 124.47d |  |  |  | 92.08h | 45.75h |
| 1662 | 5.12.1 | выяснить возможность обмена тройников 1+1/4-1/2 на 3/4-1/2 |  | 15min | 2026-09-09 09:00 | 2026-09-09 09:15 |  |  |  | 130.56d |  | start no earlier than 2026-09-09 09:00 | Зорькин В | 0.25h |  |
| 1663 | 5.12.2 | Прокнуть греющий кабель | manual | 3h | 2026-09-14 09:00 | 2026-09-14 12:00 |  |  |  |  |  |  | Некрасов А; Макаревич А | 6h |  |
| 1664 | 5.12.3 | Подключение греющего кабеля |  | 3h | 2026-09-14 12:00 | 2026-09-14 16:00 | 1663 |  |  | 124.47d | 0d | start no earlier than 2026-09-07 09:00 | Некрасов А | 3h |  |

| ID | WBS | Task | Duration | Start | Finish | Predecessors | Complete | Remaining | Total slack | Free slack | Constraint | Resources | Work | Actual work |
| --- | --- | --- | --- | --- | --- | --- | --- | --- | --- | --- | --- | --- | --- | --- |
| 1665 | 5.12.4 | **монтаж трассы по 3ц** | 4.5d | 2026-08-11 09:00 A | 2026-08-17 13:00 A |  | 100% |  |  |  |  |  | 16.5h | 16.5h |
| 1666 | 5.12.4.1 | заявка хомуты сантех - получить дату поставки | 15min | 2026-08-11 09:00 A | 2026-08-11 09:15 A |  | 100% |  |  |  | start no earlier than 2026-08-11 09:00 | Домоводов К | 0.25h | 0.25h |
| 1667 | 5.12.4.2 | контроль доставки | 15min | 2026-08-14 09:15 A | 2026-08-14 09:30 A | 1666FS+3d | 100% |  |  |  | start no earlier than 2026-08-10 08:00 | Зорькин В | 0.25h | 0.25h |
| 1668 | 5.12.4.3 | монтаж продложть | 4h | 2026-08-14 09:30 A | 2026-08-14 14:30 A | 1667 | 100% |  |  |  | start no earlier than 2026-08-10 08:00 | Некрасов А; Бундин В | 8h | 8h |
| 1669 | 5.12.4.4 | монтаж продложть | 4h | 2026-08-17 09:00 A | 2026-08-17 13:00 A | 1667 | 100% |  |  |  | start no earlier than 2026-08-17 09:00 | Некрасов А; Бобренок В | 8h | 8h |
| 1670 | 5.12.5 | **монтаж труба в земле между 3 и 4ц** | 29.12d? | 2026-08-10 08:00 A | 2026-09-17 10:00 |  | 29% | 20.6d? | 124.47d |  |  |  | 24.08h | 9h |
| 1671 | 5.12.5.1 | монтаж ф32 в ф40 | 4h | 2026-08-10 08:00 A | 2026-08-10 13:00 A |  | 100% |  |  |  | start no earlier than 2026-08-10 08:00 | Некрасов А; Макаревич А | 8h | 8h |
| 1672 | 5.12.5.2 | заявка греющий кабель внтуреннего монтажа + | 1h | 2026-08-11 09:00 A | 2026-08-11 10:00 A | 1671 | 100% |  |  |  | start no earlier than 2026-08-11 09:00 | Домоводов К | 1h | 1h |
| 1673 | 5.12.5.3 | заявка защита УЗО | 1h | 2026-08-24 09:00 | 2026-08-24 10:00 |  |  |  | 140.08d | 4.88d | start no earlier than 2026-08-24 09:00 | Шуранов Ю | 1h |  |
| 1674 | 5.12.5.4 | контоль доставка | 5min | 2026-08-31 09:00 | 2026-08-31 09:05 | 1672FS+5d, 1673 |  |  | 135.21d | 10.74d | start no earlier than 2026-08-31 09:00 | Зорькин В | 0.08h |  |
| 1675 | 5.12.5.5 | монтаж кабеля | 3h | 2026-09-14 16:00 | 2026-09-15 10:00 | 1674FS+1d, 1664 |  |  | 124.47d | 0d | start no earlier than 2026-09-07 09:00 | Некрасов А; Макаревич А | 6h |  |
| 1676 | 5.12.5.6 | монтаж щиток кабеля с УЗО | 1d? | 2026-09-16 10:00 | 2026-09-17 10:00 | 1675FS+1d |  |  | 124.47d |  | start no earlier than 2026-09-04 09:00 | Некрасов А | 8h |  |
| 1677 | 5.12.6 | **монтаж трассы по воздуху м/д 4 и 5А** | 9.5d | 2026-08-11 09:00 A | 2026-08-24 13:00 |  | 24% | 7.24d | 143.09d |  |  |  | 9.25h | 1.25h |
| 1678 | 5.12.6.1 | подготовка материал | 1h | 2026-08-11 09:00 A | 2026-08-11 10:00 A |  | 100% |  |  |  | start no earlier than 2026-08-11 09:00 | Некрасов А; Макаревич А | 1h | 1h |
| 1679 | 5.12.6.2 | контроль поставки рым 10 | 15min | 2026-08-21 09:00 A | 2026-08-21 09:15 A |  | 100% |  |  |  | start no earlier than 2026-08-21 09:00 | Зорькин В | 0.25h | 0.25h |
| 1680 | 5.12.6.3 | монтаж | 4h | 2026-08-24 09:00 | 2026-08-24 13:00 | 1679 |  |  | 143.09d |  | start no earlier than 2026-08-24 09:00 | Некрасов А; Тимофеев В | 8h |  |
| 1681 | 5.12.7 | монтаж щиток греющего кабеля по воздуху | 4h | 2026-08-24 09:00 | 2026-08-24 13:00 |  |  |  | 143.09d |  | start no earlier than 2026-08-24 09:00 | Макаревич А | 4h |  |
| 1682 | 5.12.8 | монтаж трассы по 4ц | 6h | 2026-08-18 09:00 A | 2026-08-18 16:00 A | 1667 | 100% |  |  |  | start no earlier than 2026-08-18 09:00 | Некрасов А; Макаревич А | 11h | 11h |
| 1683 | 5.12.9 | монтаж трассы по 5ц | 4h | 2026-08-19 09:00 A | 2026-08-19 13:00 A | 1682 | 100% |  |  |  | start no earlier than 2026-08-19 09:00 | Некрасов А; Макаревич А | 8h | 8h |
| 1684 | 5.12.10 | монтаж трассы по 5ц | 6h | 2026-08-24 09:00 | 2026-08-24 16:00 | 1682 |  |  | 142.84d |  | start no earlier than 2026-08-24 09:00 | Некрасов А; Макаревич А | 10h |  |
| 1685 | 5.13 | **монтаж тепловые пушки подвесные 5 цех** | 22.38d | 2026-08-21 09:00 A | 2026-09-21 12:00 |  | 32% | 15.21d | 122.22d |  |  |  | 25h | 8h |
| 1686 | 5.13.1 | составить схему монтажа | 4h | 2026-08-26 09:00 A | 2026-08-26 13:00 A |  | 100% |  |  |  | start no earlier than 2026-08-26 09:00 | Зорькин В | 4h | 4h |
| 1687 | 5.13.2 | заявка на тепловые пушки вулкан | 2h | 2026-08-21 09:00 A | 2026-08-21 11:00 A |  | 100% |  |  |  | start no earlier than 2026-08-21 09:00 | Зорькин В | 2h | 2h |
| 1688 | 5.13.3 | контроль остатки нерж труба, фтинги | 2h | 2026-09-07 09:00 A | 2026-09-07 11:00 A | 1687 | 100% |  |  |  | start no earlier than 2026-09-07 09:00 | Зорькин В | 2h | 2h |
| 1689 | 5.13.4 | контроль доставки | 1h | 2026-09-16 11:00 | 2026-09-16 12:00 | 1688FS+7d |  |  | 122.22d | 0d | start no earlier than 2026-08-10 08:00 | Зорькин В | 1h |  |
| 1690 | 5.13.5 | монтаж | 2d | 2026-09-17 12:00 | 2026-09-21 12:00 | 1689FS+1d |  |  | 122.22d |  | start no earlier than 2026-08-10 08:00 | Некрасов А | 16h |  |
| 1691 | 5.14 | замена светильника перегоревшего у Большакова в кабинете | 2h | 2026-08-06 09:00 A | 2026-08-06 11:00 A |  | 100% |  |  |  | start no earlier than 2026-08-07 09:00 | Труфанов А | 2h | 2h |
| 1692 | 5.15 | устранить утечку воды в душе | 1h | 2026-08-06 09:00 A | 2026-08-06 10:00 A |  | 100% |  |  |  | start no earlier than 2026-08-06 08:00 | Бундин В | 1h | 1h |

| ID | WBS | Task | Type | Duration | Start | Finish | Complete | Actual finish | Constraint | Resources | Work | Actual work |
| --- | --- | --- | --- | --- | --- | --- | --- | --- | --- | --- | --- | --- |
| 1693 | 5.16 | **установить унитаз на 3 этаже** |  | 3.38d? | 2026-08-04 09:00 A | 2026-08-07 12:00 A | 100% |  |  | Бобренок В | 38h | 38h |
| 1694 | 5.16.1 | заказать гофру и гибкую вставку |  | 1d? | 2026-08-04 09:00 A | 2026-08-04 18:00 A | 100% |  | start no earlier than 2026-08-04 08:00 | Шуранов Ю | 8h | 8h |
| 1695 | 5.16.2 | установка унитаза (гофротруба и гибкая подводка и коронка у Большакова) коронку вернуть Большакову |  | 3h | 2026-08-07 09:00 A | 2026-08-07 12:00 A | 100% |  | start no earlier than 2026-08-07 09:00 | Труфанов А | 3h | 3h |
| 1696 | 5.17 | монтаж свет в туалете 3 этаж (оператора дадут в помощь) | manual | 6h | 2026-08-09 09:00 A | 2026-08-09 16:00 A | 100% |  | start no earlier than 2026-08-09 09:00 | Бобренок В | 6h | 6h |
| 1697 | 5.18 | прикрутить смотровые окна на дробилке, не хватает саморезов- просыпается сырье |  | 1h | 2026-08-02 09:00 A | 2026-08-03 10:00 A | 100% |  | start no earlier than 2026-08-02 09:00 | Макаревич А | 1h | 1h |
| 1698 | 5.19 | сборка ограничиетелей на сетку №2 для сито из лазера |  | 4h | 2026-07-17 09:00 A | 2026-07-17 13:00 A | 100% |  | start no earlier than 2026-07-17 09:00 | Макаревич А | 4h | 4h |
| 1699 | 5.20 | ремонт сетки, хомуты с 5ц |  | 2h | 2026-07-15 09:00 A | 2026-07-15 11:00 A | 100% |  | start no earlier than 2026-07-15 09:00 | Бундин В | 2h | 2h |
| 1700 | 5.21 | вырезать сетку 2мм на большую дробилку |  | 2h | 2026-07-15 09:00 A | 2026-07-15 11:00 A | 100% |  | start no earlier than 2026-07-15 09:00 | Бобренок В | 2h | 2h |
| 1701 | 5.22 | заменаить ножи на мал дробилке |  | 6h | 2026-07-06 08:00 A | 2026-07-06 16:00 A | 100% |  | start no earlier than 2026-07-06 08:00 | Дедов В | 6h | 6h |
| 1702 | 5.23 | заварить хомут от деко 5 ц. в слесарке |  | 2h | 2026-07-11 09:00 A | 2026-07-13 11:00 A | 100% |  | start no earlier than 2026-07-11 09:00 | Макаревич А | 2h | 2h |
| 1703 | 5.24 | Дефектовка кнопок растаривателя, ремонт, клинит кнопку |  | 30min | 2026-07-06 08:00 A | 2026-07-06 09:30 A | 100% |  | start no earlier than 2026-07-06 08:00 | Дедов В | 0.5h | 0.5h |
| 1704 | 5.25 | сито просечка с лазера - доплнить 4шт до 6-8 уголоков ограничителей. |  | 2h | 2026-06-26 08:00 A | 2026-06-26 11:00 A | 100% |  | start no earlier than 2026-06-26 08:00 | Макаревич А | 2h | 2h |
| 1705 | 5.26 | просечки нерж. наварить уголки, чтобы не падало внутрь |  | 2h | 2026-06-25 08:00 A | 2026-06-25 11:00 A | 100% |  | start no earlier than 2026-06-25 08:00 | Макаревич А | 2h | 2h |
| 1706 | 5.27 | на поворотную кнопку реверса шнека №1 установить бокс (взять на складе) |  | 1h | 2026-06-24 09:00 A | 2026-06-24 10:00 A | 100% |  | start no earlier than 2026-06-24 09:00 | Труфанов А | 1h | 1h |
| 1707 | 5.28 | развернуть ножи на большой дробилке, если не успеваем передаем по смене |  | 3h | 2026-06-23 08:00 A | 2026-06-23 12:00 A | 100% |  | start no earlier than 2026-06-23 08:00 | Труфанов А; Макаревич А | 6h | 6h |
| 1708 | 5.29 | **протянуть все болтовые соединения: шиберы растаривателей, металлоконструкции под бункера и т.д. если нет болта - прикручиваем** |  | 3h? | 2026-06-23 09:00 A | 2026-06-23 12:00 | 100% | 2026-06-23 18:00 |  | Труфанов А | 11h | 11h |
| 1709 | 5.29.1 | заказать краску |  | 1d? | 2026-06-23 09:00 A | 2026-06-23 18:00 A | 100% |  | start no earlier than 2026-06-23 08:00 | Шуранов Ю | 8h | 8h |
| 1710 | 5.30 | проверить откуда гайку нашли на магните, растариватель-дробилка -шнеки -крепление магнитов |  | 1h | 2026-06-22 09:00 A | 2026-06-22 10:00 A | 100% |  | start no earlier than 2026-06-22 08:00 | Бундин В | 1h | 1h |
| 1711 | 5.31 | **закрепить штурвал на растаривателе 1** |  | 1d? | 2026-06-23 09:00 A | 2026-06-23 18:00 A | 100% |  |  | Бундин В | 16h | 16h |
| 1712 | 5.31.1 | заказываем растариватель |  | 1d? | 2026-06-23 09:00 A | 2026-06-23 18:00 A | 100% |  | start no earlier than 2026-06-23 09:00 | Шуранов Ю | 8h | 8h |
| 1713 | 5.32 | заварить просеиватель ближе к стеллажам и на правом (расскажу как) |  | 3h | 2026-06-11 09:00 A | 2026-06-11 12:00 A | 100% |  | start no earlier than 2026-06-11 09:00 | Бундин В | 3h | 3h |
| 1714 | 5.33 | ремонт просечку с вибросито, передать в 5ц |  | 2h | 2026-06-12 09:00 A | 2026-06-12 11:00 A | 100% |  | start no earlier than 2026-06-12 09:00 | Бундин В | 2h | 2h |
| 1715 | 5.34 | ремонт хомут с вибросито |  | 2h | 2026-06-05 09:00 A | 2026-06-05 11:00 A | 100% |  | start no earlier than 2026-06-05 08:00 | Бундин В | 2h | 2h |
| 1716 | 5.35 | заварить хомут от деко 5 ц. в слесарке |  | 2h | 2026-07-14 09:00 A | 2026-07-14 11:00 A | 100% |  | start no earlier than 2026-07-14 09:00 | Бундин В | 2h | 2h |

| ID | WBS | Task | Duration | Start | Finish | Predecessors | Complete | Remaining | Total slack | Constraint | Resources | Work | Actual work |
| --- | --- | --- | --- | --- | --- | --- | --- | --- | --- | --- | --- | --- | --- |
| 1717 | 5.36 | **востановить коробку тельфера** | 16.01d | 2026-06-04 09:00 A | 2026-06-26 09:05 |  | 59% | 6.56d | 184.58d |  |  | 5.08h | 3h |
| 1718 | 5.36.1 | найти производителя тельфера и выяснить марку коробку / найти в продаже подходящий артикул | 2h | 2026-06-04 09:00 A | 2026-06-04 11:00 A |  | 100% |  |  | start no earlier than 2026-06-04 09:00 | Шуранов Ю | 2h | 2h |
| 1719 | 5.36.2 | заявка | 1h | 2026-06-05 09:00 A | 2026-06-05 10:00 A |  | 100% |  |  | start no earlier than 2026-06-05 09:00 | Шуранов Ю | 1h | 1h |
| 1720 | 5.36.3 | доставка контроль | 5min | 2026-06-26 09:00 | 2026-06-26 09:05 |  |  |  | 184.58d | start no earlier than 2026-06-26 09:00 | Домоводов К | 0.08h |  |
| 1721 | 5.36.4 | замена | 2h | 2026-06-23 09:00 | 2026-06-23 11:00 |  |  |  | 187.34d | start no earlier than 2026-06-23 09:00 | Некрасов А | 2h |  |
| 1722 | 5.37 | замена пускатель тельфер 24дц / найти/изготовить + установить крышку контакторов / доработать крепеж кабеля к тросу | 1h | 2026-05-27 09:00 A | 2026-05-27 10:00 A |  | 100% |  |  | start no earlier than 2026-05-27 09:00 | Некрасов А; Бундин В | 2h | 2h |
| 1723 | 5.38 | проверка всех банок АКБ штабелера / замена неисправных | 2h | 2026-05-30 09:00 A | 2026-06-01 11:00 A |  | 100% |  |  | start no earlier than 2026-05-30 09:00 | Бобренок В | 2h | 2h |
| 1724 | 5.39 | посмотреть что с тельфером на дробилке | 1h | 2026-05-26 09:00 A | 2026-05-26 10:00 A |  | 100% |  |  | start no earlier than 2026-05-26 09:00 | Некрасов А | 1h | 1h |
| 1725 | 5.40 | приварить магниты на сито | 0.5h | 2026-05-26 09:00 A | 2026-05-26 09:30 A |  | 100% |  |  | start no earlier than 2026-05-26 09:00 | Некрасов А | 0.5h | 0.5h |
| 1726 | 5.41 | заварить растариватель №2 | 4h | 2026-05-25 08:00 A | 2026-05-25 13:00 A |  | 100% |  |  | start no earlier than 2026-05-25 08:00 | Тимофеев В; Некрасов А | 7h | 7h |
| 1727 | 5.42 | уложить красиво кабель в гофре зона дробилки | 1h | 2026-05-19 09:00 A | 2026-05-19 10:00 A |  | 100% |  |  | start no earlier than 2026-05-19 09:00 | Бундин В; Некрасов А | 2h | 2h |
| 1728 | 5.43 | заварить 2 просечки от сито и отправить все на 5 цех | 1h | 2026-05-19 09:00 A | 2026-05-19 10:00 A |  | 100% |  |  | start no earlier than 2026-05-19 09:00 | Бундин В | 1h | 1h |
| 1729 | 5.44 | сделать дублирующий пост (вкл. И выкл. Смесителя) на мезонине дробилки | 4h | 2026-05-18 08:00 A | 2026-05-18 13:00 A |  | 100% |  |  | start no earlier than 2026-05-18 08:00 | Дедов В | 4h | 4h |
| 1730 | 5.45 | прошприцевать сам двигатель дробилки | 1h | 2026-05-19 09:00 A | 2026-05-19 10:00 A |  | 100% |  |  | start no earlier than 2026-05-19 09:00 | Некрасов А; Бундин В | 2h | 2h |
| 1731 | 5.46 | **сборка схемы блокировки дробилки при открытом люке** | 7.25d? | 2026-05-17 09:00 A | 2026-05-27 11:00 A |  | 100% |  |  |  |  | 17h | 17h |
| 1732 | 5.46.1 | монтаж кабель | 4h | 2026-05-17 09:00 A | 2026-05-18 13:00 A |  | 100% |  |  | start no earlier than 2026-05-17 09:00 | Макаревич А | 4h | 4h |
| 1733 | 5.46.2 | сборка схема | 2h | 2026-05-27 09:00 A | 2026-05-27 11:00 A | 1732 | 100% |  |  | start no earlier than 2026-05-27 09:00 | Дедов В | 2h | 2h |
| 1734 | 5.46.3 | заказать концевики | 1d? | 2026-05-25 09:00 A | 2026-05-25 18:00 A |  | 100% |  |  | start no earlier than 2026-05-25 08:00 | Шуранов Ю | 8h | 8h |
| 1735 | 5.46.4 | доделать схему блокировки- концевики LA167-Z8/122 на складе | 3h | 2026-05-26 09:00 A | 2026-05-26 12:00 A |  | 100% |  |  | start no earlier than 2026-05-26 09:00 | Дедов В | 3h | 3h |
| 1736 | 5.47 | проверка центровки мотора после замены подшипнка + замена подшипник задний | 4h | 2026-05-12 08:00 A | 2026-05-12 13:00 A |  | 100% |  |  | start no earlier than 2026-05-12 08:00 | Тимофеев В; Бобренок В | 8h | 8h |
| 1737 | 5.48 | заварить сито | 2h | 2026-05-08 08:00 A | 2026-05-08 11:00 A |  | 100% |  |  | start no earlier than 2026-05-08 08:00 | Макаревич А | 2h | 2h |
| 1738 | 5.49 | закрепить штурвал, чтобы не болтался на растаривателе 1 | 1h | 2026-05-08 08:00 A | 2026-05-08 10:00 A |  | 100% |  |  | start no earlier than 2026-05-08 08:00 | Макаревич А | 1h | 1h |
| 1739 | 5.50 | посмотреть компрессор (если проблема в предохранителе- то взять у меня на столе)пароль8989 | 1h | 2026-05-08 08:00 A | 2026-05-08 10:00 A |  | 100% |  |  | start no earlier than 2026-05-08 08:00 | Дедов В | 1h | 1h |
| 1740 | 5.51 | проверить на 2х котлах давление в системе отопления- где нужно долить воды. И слить воду система отопления 5а цех | 2h | 2026-05-06 08:00 A | 2026-05-06 11:00 A |  | 100% |  |  | start no earlier than 2026-05-06 08:00 | Бобренок В | 2h | 2h |

| ID | WBS | Task | Type | Duration | Start | Finish | Predecessors | Complete | Actual start | Actual finish | Total slack | Constraint | Resources | Work | Actual work |
| --- | --- | --- | --- | --- | --- | --- | --- | --- | --- | --- | --- | --- | --- | --- | --- |
| 1741 | 5.52 | **ремонт сито (попробовать заклеить эпоксидкой) / ремонт у производсителя** |  | 13d | 2026-05-13 09:00 A | 2026-05-29 18:00 A |  | 100% |  |  |  |  |  | 0.75h | 0.75h |
| 1742 | 5.52.1 | отправить сито на ремонт производителю |  | 30min | 2026-05-13 09:00 A | 2026-05-13 09:30 A |  | 100% |  |  |  | start no earlier than 2026-05-13 09:00 | Шуранов Ю | 0.5h | 0.5h |
| 1743 | 5.52.2 | контроль доставки |  | 15min | 2026-05-29 17:45 A | 2026-05-29 18:00 A | 1742SF+15d | 100% |  |  |  | start no earlier than 2026-05-12 08:00 | Шуранов Ю | 0.25h | 0.25h |
| 1744 | 5.53 | зачистить приемный бункер после дробилке болгаркой |  | 1h | 2026-04-30 08:00 A | 2026-04-30 10:00 A |  | 100% |  |  |  | start no earlier than 2026-04-30 08:00 | Дедов В | 1h | 1h |
| 1745 | 5.54 | **ремонт стиральной машинки / шум подшипника** |  | 1d? | 2026-04-27 09:00 | 2026-04-27 18:00 |  |  |  |  | 227.59d |  |  | 8h |  |
| 1746 | 5.54.1 | договор |  | 1d? | 2026-04-27 09:00 | 2026-04-27 18:00 |  |  |  |  | 227.59d | start no earlier than 2026-04-27 08:00 | Шуранов Ю | 8h |  |
| 1747 | 5.55 | **ремонт утечки с системы отопления** |  | 1.12d | 2026-05-04 09:00 | 2026-05-05 10:00 |  | 100% | 2026-05-07 09:00 | 2026-05-08 10:00 |  |  |  | 10h | 10h |
| 1748 | 5.55.1 | слив воды |  | 4h | 2026-05-07 09:00 A | 2026-05-07 13:00 A |  | 100% |  |  |  | start no earlier than 2026-05-07 09:00 | Макаревич А | 4h | 4h |
| 1749 | 5.55.2 | ремонт утечки |  | 2h | 2026-05-07 13:00 A | 2026-05-07 16:00 A | 1748 | 100% |  |  |  | start no earlier than 2026-04-27 08:00 | Макаревич А | 2h | 2h |
| 1750 | 5.55.3 | заправить воду / опресовать |  | 4h | 2026-05-07 15:00 A | 2026-05-08 10:00 A | 1749 | 100% |  |  |  | start no earlier than 2026-04-27 08:00 | Макаревич А | 4h | 4h |
| 1751 | 5.56 | долить в систему отопления воды цех 5а, электрокотел не включаем. Работаем на газ котле |  | 1h | 2026-04-24 09:00 A | 2026-04-24 10:00 A |  | 100% |  |  |  | start no earlier than 2026-04-24 08:00 | Бундин В | 1h | 1h |
| 1752 | 5.57 | вывезти шнек на синий склад |  | 1h | 2026-04-23 09:00 A | 2026-04-23 10:00 A |  | 100% |  |  |  | start no earlier than 2026-04-24 09:00 | Бобренок В; Тимофеев В | 2h | 2h |
| 1753 | 5.58 | взять на зажима для троса на складе и натянуть трос на воротах 5а |  | 2h | 2026-04-25 09:00 A | 2026-04-27 11:00 A |  | 100% |  |  |  | start no earlier than 2026-04-25 09:00 | Макаревич А | 2h | 2h |
| 1754 | 5.59 | убавить температуры на газ котлах |  | 1h | 2026-04-24 09:00 A | 2026-04-24 10:00 A |  | 100% |  |  |  | start no earlier than 2026-04-24 09:00 | Шуранов Ю | 1h | 1h |
| 1755 | 5.60 | заварить сито и хомуты |  | 1h | 2026-04-24 09:00 A | 2026-04-24 10:00 A |  | 100% |  |  |  | start no earlier than 2026-04-24 09:00 | Тимофеев В | 1h | 1h |
| 1756 | 5.61 | проверка вибросит детальный осмотр с полной разборкой / ремонт трещин |  | 4h | 2026-04-21 09:00 A | 2026-04-21 13:00 A |  | 100% |  |  |  | start no earlier than 2026-04-21 09:00 | Бундин В | 4h | 4h |
| 1757 | 5.62 | протяжка анкеров стеллажей, болтается |  | 2h | 2026-04-20 09:00 A | 2026-04-20 11:00 A |  | 100% |  |  |  | start no earlier than 2026-04-20 09:00 | Макаревич А | 2h | 2h |
| 1758 | 5.63 | замена потускневших ламп в инсекютере. Мастеру сообщить кол-во. б/у складывать в коробку |  | 2h | 2026-05-06 09:00 A | 2026-05-06 11:00 A |  | 100% |  |  |  | start no earlier than 2026-05-06 09:00 | Бобренок В | 2h | 2h |
| 1759 | 5.64 | переворачиваем молотки дробилка |  | 4h | 2026-04-15 09:00 A | 2026-04-15 13:00 A |  | 100% |  |  |  | start no earlier than 2026-04-17 08:00 | Макаревич А; Тимофеев В | 8h | 8h |
| 1760 | 5.65 | завершить работы по примыканию к кровли 5А (излишки изоспан) |  | 1d? | 2026-06-19 09:00 | 2026-06-19 18:00 |  |  |  |  | 188.59d | start no earlier than 2026-06-19 09:00 | Олег | 8h |  |
| 1761 | 5.66 | монтаж тамбур для завоза навесок |  | 10d | 2026-04-16 09:00 | 2026-04-29 18:00 |  |  |  |  | 225.59d | start no earlier than 2026-04-16 08:00 | Некрасов А; Олег | 160h |  |
| 1762 | 5.67 | вырезать верхушку еврокуба возле мусорки, будет туда засыпать отсев для дворника | manual | 1h | 2026-04-18 09:00 A | 2026-04-18 10:00 A |  | 100% |  |  |  | start no earlier than 2026-04-18 09:00 | Макаревич А | 1h | 1h |
| 1763 | 5.68 | заварить хомуты и сетки от сито |  | 1h | 2026-04-14 09:00 A | 2026-04-14 10:00 A |  | 100% |  |  |  | start no earlier than 2026-04-14 08:00 | Труфанов А | 1h | 1h |
| 1764 | 5.69 | проверить дист. Воду на штабелере, если нужно долить (фото модели акб) |  | 1h | 2026-04-13 09:00 A | 2026-04-13 10:00 A |  | 100% |  |  |  | start no earlier than 2026-04-13 08:00 | Бундин В | 1h | 1h |
| 1765 | 5.70 | установка шнека отремонтированного обратно на дробилку |  | 6h | 2026-04-21 09:00 A | 2026-04-21 16:00 A |  | 100% |  |  |  | start no earlier than 2026-04-21 09:00 | Некрасов А; Труфанов А | 12h | 12h |
| 1766 | 5.71 | установка бойлера отремонтированного в туалет, а с туалета на 2 этаж, мастер выделит человека в помощь |  | 4h | 2026-04-13 09:00 A | 2026-04-13 13:00 A |  | 100% |  |  |  | start no earlier than 2026-04-13 09:00 | Труфанов А | 4h | 4h |
| 1767 | 5.72 | замена паука на расстаривателе- высокие бэги не могут поднять до конца |  | 1h | 2026-04-10 08:00 A | 2026-04-10 10:00 A |  | 100% |  |  |  | start no earlier than 2026-04-10 08:00 | Тимофеев В | 1h | 1h |

| ID | WBS | Task | Type | Duration | Start | Finish | Predecessors | Complete | Actual start | Actual finish | Constraint | Resources | Work | Actual work |
| --- | --- | --- | --- | --- | --- | --- | --- | --- | --- | --- | --- | --- | --- | --- |
| 1768 | 5.73 | **получить насос Wilo, установить на 1 газовый котел** |  | 0.12d | 2026-04-10 09:00 A | 2026-04-10 10:00 A |  | 100% |  |  |  | Бундин В | 2h | 2h |
| 1769 | 5.73.1 | проверить направление подачи воды, посмотреть по аналогии 2 котла |  | 1h | 2026-04-10 09:00 A | 2026-04-10 10:00 A |  | 100% |  |  | start no earlier than 2026-04-10 09:00 | Тимофеев В | 1h | 1h |
| 1770 | 5.74 | ремот сеток с сито |  | 2h | 2026-04-06 09:00 A | 2026-04-06 11:00 A |  | 100% |  |  | start no earlier than 2026-04-06 08:00 | Труфанов А | 2h | 2h |
| 1771 | 5.75 | на выходах из сито №1 и №2 установить сетки с бортиками |  | 2h | 2026-04-06 09:00 A | 2026-04-06 11:00 A |  | 100% |  |  | start no earlier than 2026-04-06 08:00 | Труфанов А | 2h | 2h |
| 1772 | 5.76 | сыпит сырье с дробилки (вход) |  | 2h | 2026-06-15 09:00 A | 2026-06-15 11:00 A |  | 100% |  |  | start no earlier than 2026-06-13 09:00 | Некрасов А; Труфанов А | 4h | 4h |
| 1773 | 5.77 | востановить ручной штурвал заслонки на растаривателе дробилки |  | 1h | 2026-04-02 08:00 A | 2026-04-02 10:00 A |  | 100% |  |  | start no earlier than 2026-04-02 08:00 | Бобренок В | 1h | 1h |
| 1774 | 5.78 | изготовить штурвал заслонки на растариватель вибросита у стены |  | 2h | 2026-04-13 09:00 A | 2026-04-13 11:00 A |  | 100% |  |  | start no earlier than 2026-04-13 09:00 | Труфанов А | 2h | 2h |
| 1775 | 5.79 | монтаж отбойников | manual | 6h | 2026-04-18 09:00 A | 2026-04-18 16:00 A |  | 100% |  |  | start no earlier than 2026-04-18 09:00 | Бобренок В | 6h | 6h |
| 1776 | 5.80 | **ремонт шкаф управления шнеком 1 растариватель (замена щитка взять на складе)** |  | 13.5d? | 2026-04-21 09:00 | 2026-05-07 13:00 |  | 100% | 2026-04-17 09:00 | 2026-04-29 09:30 |  |  | 91.75h | 91.75h |
| 1777 | 5.80.1 | вывод кнопки управления частотником на ШУ (если нужно замена частотника) с мастером согласовать остановку |  | 5h | 2026-04-20 09:00 A | 2026-04-20 15:00 A |  | 100% |  |  | start no earlier than 2026-04-20 09:00 | Дедов В | 5h | 5h |
| 1778 | 5.80.2 | установить кнопочный пост |  | 2h | 2026-04-21 09:00 A | 2026-04-21 11:00 A |  | 100% |  |  | start no earlier than 2026-04-21 09:00 | Дедов В | 2h | 2h |
| 1779 | 5.80.3 | заявка кнопка SB7 |  | 15min | 2026-04-21 09:00 A | 2026-04-21 09:15 A |  | 100% |  |  | start no earlier than 2026-04-21 09:00 | Зорькин В | 0.25h | 0.25h |
| 1780 | 5.80.4 | доставка |  | 5d | 2026-04-21 09:15 A | 2026-04-28 09:15 A | 1779 | 100% |  |  | start no earlier than 2026-04-20 08:00 | Карабанов | 40h | 40h |
| 1781 | 5.80.5 | замена |  | 1h | 2026-04-27 09:15 A | 2026-04-27 10:15 A | 1780 | 100% |  |  | start no earlier than 2026-04-20 08:00 | Дедов В | 1h | 1h |
| 1782 | 5.80.6 | ремонт корпус |  | 1h | 2026-04-17 09:00 A | 2026-04-17 10:00 A | 1777 | 100% |  |  | start no earlier than 2026-04-09 09:00 | Труфанов А | 1h | 1h |
| 1783 | 5.80.7 | **замена корпус** |  | 6.06d | 2026-04-21 09:00 A | 2026-04-29 09:30 A |  | 100% |  |  |  |  | 42.5h | 42.5h |
| 1784 | 5.80.7.1 | заявка |  | 30min | 2026-04-21 09:00 A | 2026-04-21 09:30 A |  | 100% |  |  | start no earlier than 2026-03-31 08:00 | Зорькин В | 0.5h | 0.5h |
| 1785 | 5.80.7.2 | доставка |  | 5d | 2026-04-21 09:30 A | 2026-04-29 09:30 A | 1784 | 100% |  |  | start no earlier than 2026-03-31 08:00 | Карабанов | 40h | 40h |
| 1786 | 5.80.7.3 | замена |  | 2h | 2026-04-28 09:30 A | 2026-04-28 11:30 A | 1785 | 100% |  |  | start no earlier than 2026-04-14 09:00 | Тимофеев В | 2h | 2h |
| 1787 | 5.81 | получить фланец на складе NMRV040 и установить мотор-редуктор на расстаривателе №1 |  | 2h | 2026-04-28 09:00 A | 2026-04-28 11:00 A |  | 100% |  |  | start no earlier than 2026-04-28 09:00 | Бундин В | 2h | 2h |
| 1788 | 5.82 | убрать красный скотч везде в дробилке, сделать крепление фильтра с малой дробилки на ленточный хомут |  | 3h | 2026-03-27 09:00 A | 2026-03-27 12:00 A |  | 100% |  |  | start no earlier than 2026-03-27 08:00 | Труфанов А | 3h | 3h |
| 1789 | 5.83 | ремонт вибросито |  | 4h | 2026-03-27 08:00 A | 2026-03-27 13:00 A |  | 100% |  |  | start no earlier than 2026-03-27 08:00 | Тимофеев В; Некрасов А | 7h | 7h |
| 1790 | 5.84 | заварить сито возле слесарки (2 шт) и деки 2 шт |  | 3h | 2026-03-26 09:00 A | 2026-03-26 12:00 A |  | 100% |  |  | start no earlier than 2026-03-26 08:00 | Труфанов А | 3h | 3h |
| 1791 | 5.85 | сделать отбойник на входную дверь |  | 1h | 2026-03-28 09:00 A | 2026-03-30 10:00 A |  | 100% |  |  | start no earlier than 2026-03-28 09:00 | Бундин В | 1h | 1h |
| 1792 | 5.86 | сделать трап в курилку |  | 3h | 2026-04-01 09:00 A | 2026-04-01 12:00 A |  | 100% |  |  | start no earlier than 2026-04-01 09:00 | Бундин В | 3h | 3h |
| 1793 | 5.87 | заварить бункер дробилки |  | 2h | 2026-03-24 09:00 A | 2026-03-24 11:00 A |  | 100% |  |  | start no earlier than 2026-03-24 09:00 | Некрасов А; Труфанов А | 4h | 4h |
| 1794 | 5.88 | перенос металл с торца стеллажа напротив ВРУ / на син склад |  | 1h | 2026-03-25 09:00 A | 2026-03-25 10:00 A |  | 100% |  |  | start no earlier than 2026-03-25 09:00 | Бобренок В | 1h | 1h |
| 1795 | 5.89 | пульт управления шибером растариватель правый демонтаж красный скотч / закрепить |  | 1h | 2026-03-22 09:00 A | 2026-03-23 10:00 A |  | 100% |  |  | start no earlier than 2026-03-22 09:00 | Бобренок В | 1h | 1h |
| 1796 | 5.90 | установить корпус на переключатель реверса шнек растаривателя правый / продуть от пыли контакты |  | 30min | 2026-03-22 09:00 A | 2026-03-23 09:30 A |  | 100% |  |  | start no earlier than 2026-03-22 09:00 | Бобренок В | 0.5h | 0.5h |
| 1797 | 5.91 | демонтаж розетки без крышки 2 этаж щиток в фае |  | 30min | 2026-03-25 09:00 A | 2026-03-25 09:30 A |  | 100% |  |  | start no earlier than 2026-03-25 09:00 | Бобренок В | 0.5h | 0.5h |
| 1798 | 5.92 | подлючить розетку для зарядки нового АКБ для штабелера Ц.5А |  | 2h | 2026-03-21 09:00 A | 2026-03-23 11:00 A |  | 100% |  |  | start no earlier than 2026-03-21 09:00 | Дедов В | 2h | 2h |

| ID | WBS | Task | Type | Duration | Start | Finish | Predecessors | Complete | Total slack | Free slack | Constraint | Resources | Work | Actual work |
| --- | --- | --- | --- | --- | --- | --- | --- | --- | --- | --- | --- | --- | --- | --- |
| 1799 | 5.93 | **ремонт шнек с дробилки** |  | 11.75d | 2026-03-17 09:00 A | 2026-04-01 16:00 A |  | 100% |  |  |  |  | 7h | 7h |
| 1800 | 5.93.1 | орг пескоструйка корпус шнека - отправить |  | 1h | 2026-03-17 09:00 A | 2026-03-17 10:00 A |  | 100% |  |  | start no earlier than 2026-03-17 08:00 | Шуранов Ю | 1h | 1h |
| 1801 | 5.93.2 | сборка шнека с ремонта |  | 6h | 2026-04-01 09:00 A | 2026-04-01 16:00 A | 1800 | 100% |  |  | start no earlier than 2026-04-01 09:00 | Некрасов А | 6h | 6h |
| 1802 | 5.94 | установить уплотнения на гофра без красн скотча |  | 4h | 2026-03-20 09:00 A | 2026-03-20 13:00 A |  | 100% |  |  | start no earlier than 2026-03-20 09:00 | Некрасов А; Труфанов А | 8h | 8h |
| 1803 | 5.95 | добавить воду в 4 газ. Котел проверить реальное давление в системе |  | 2h | 2026-03-19 08:00 A | 2026-03-19 11:00 A |  | 100% |  |  | start no earlier than 2026-03-19 08:00 | Бундин В | 2h | 2h |
| 1804 | 5.96 | сменить палярность вращения дробилки / сточило ножи |  | 1h | 2026-03-16 09:00 A | 2026-03-16 10:00 A |  | 100% |  |  | start no earlier than 2026-03-16 09:00 | Труфанов А; Некрасов А | 2h | 2h |
| 1805 | 5.97 | **устанвить ИБП на клапан газ** |  | 0.03d | 2026-03-16 09:00 A | 2026-03-16 09:15 A |  | 100% |  |  |  |  | 0.25h | 0.25h |
| 1806 | 5.97.1 | координация сроков выполнения с газовщиком |  | 15min | 2026-03-16 09:00 A | 2026-03-16 09:15 A |  | 100% |  |  | start no earlier than 2026-03-16 09:00 | Шуранов Ю | 0.25h | 0.25h |
| 1807 | 5.98 | **установить вентилятор с клапаном и фильтром** |  | 11.03d? | 2026-03-18 09:00 | 2026-04-02 09:15 |  |  | 245.56d |  |  |  | 88.25h |  |
| 1808 | 5.98.1 | получить сммету / счет |  | 15min | 2026-03-18 09:00 | 2026-03-18 09:15 |  |  | 245.56d | 0d | start no earlier than 2026-03-18 09:00 | Домоводов К | 0.25h |  |
| 1809 | 5.98.2 | изготовление поставка |  | 10d | 2026-03-18 09:15 | 2026-04-01 09:15 | 1808 |  | 245.56d | 0d | start no earlier than 2026-03-17 08:00 | оплот | 80h |  |
| 1810 | 5.98.3 | монтаж |  | 1d? | 2026-04-01 09:15 | 2026-04-02 09:15 | 1809 |  | 245.56d |  | start no earlier than 2026-03-17 08:00 | оплот | 8h |  |
| 1811 | 5.99 | закрыть отвертстие от демонтированной аспирации фильтротканью. Временно, до изг фильтра |  | 1h | 2026-03-13 08:00 A | 2026-03-13 10:00 A |  | 100% |  |  | start no earlier than 2026-03-13 08:00 | Дедов В | 1h | 1h |
| 1812 | 5.100 | **на отверстие от демонтированной оспирации установить фильтр** |  | 7.01d | 2026-03-20 09:00 A | 2026-03-31 09:05 A |  | 100% |  |  |  |  | 2.08h | 2.08h |
| 1813 | 5.100.1 | получить фильтры |  | 5min | 2026-03-31 09:00 A | 2026-03-31 09:05 A |  | 100% |  |  | start no earlier than 2026-03-31 09:00 | Шуранов Ю | 0.08h | 0.08h |
| 1814 | 5.100.2 | монтаж |  | 1h | 2026-03-20 09:00 A | 2026-03-20 10:00 A | 1813FS+1d | 100% |  |  | start no earlier than 2026-03-20 09:00 | Некрасов А; Труфанов А | 2h | 2h |
| 1815 | 5.101 | **устранить ржавчину шнека после дробилки** |  | 1d? | 2026-03-16 09:00 A | 2026-03-16 18:00 A |  | 100% |  |  |  |  | 16h | 16h |
| 1816 | 5.101.1 | полная разборка / зачистка / сборка |  | 1d? | 2026-03-16 09:00 A | 2026-03-16 18:00 A |  | 100% |  |  | start no earlier than 2026-03-16 09:00 | Труфанов А; Некрасов А | 16h | 16h |
| 1817 | 5.101.2 | согласовать чем можно покрыть шнек внутри | milestone | 0d | 2026-03-16 09:00 A | 2026-03-16 09:00 A |  | 100% |  |  | start no earlier than 2026-03-16 09:00 | Домоводов К |  |  |
| 1818 | 5.102 | заменаить гидро АКБ на насосной станции / замена мебраны и золотника |  | 2h | 2026-03-15 09:00 A | 2026-03-16 11:00 A |  | 100% |  |  | start no earlier than 2026-03-15 09:00 | Бундин В | 2h | 2h |
| 1819 | 5.103 | устарнить выдавливание материала с шнека №1 узел дробилки |  | 4h | 2026-03-13 09:00 A | 2026-03-13 13:00 A |  | 100% |  |  | start no earlier than 2026-03-13 09:00 | Тимофеев В; Бундин В | 8h | 8h |
| 1820 | 5.104 | проверить обр клапан бойлер в гардеробе. Стреляет |  | 30min | 2026-03-13 09:00 A | 2026-03-13 09:30 A |  | 100% |  |  | start no earlier than 2026-03-13 09:00 | Бундин В | 0.5h | 0.5h |
| 1821 | 5.105 | долить дистилят в АКБ штабелер свинцовый |  | 1h | 2026-03-11 09:00 A | 2026-03-11 10:00 A |  | 100% |  |  | start no earlier than 2026-03-11 09:00 | Макаревич А | 1h | 1h |
| 1822 | 5.106 | **замена бойлер туалет** |  | 16.25d | 2026-03-23 09:00 A | 2026-04-14 11:00 A |  | 100% |  |  |  |  | 82.25h | 82.25h |
| 1823 | 5.106.1 | заявка бойлер |  | 15min | 2026-03-23 09:00 A | 2026-03-23 09:15 A |  | 100% |  |  | start no earlier than 2026-03-23 09:00 | Шуранов Ю | 0.25h | 0.25h |
| 1824 | 5.106.2 | доставка |  | 10d | 2026-03-30 09:00 A | 2026-04-10 18:00 A | 1823 | 100% |  |  | start no earlier than 2026-03-29 09:00 | Карабанов | 80h | 80h |
| 1825 | 5.106.3 | монтаж |  | 2h | 2026-04-14 09:00 A | 2026-04-14 11:00 A | 1824 | 100% |  |  | start no earlier than 2026-03-12 08:00 | Тимофеев В | 2h | 2h |
| 1826 | 5.107 | ремонт хомут с вибросито |  | 1h | 2026-03-10 09:00 A | 2026-03-10 10:00 A |  | 100% |  |  | start no earlier than 2026-03-10 09:00 | Макаревич А | 1h | 1h |
| 1827 | 5.108 | Заварить деку на сито |  | 2h | 2026-03-06 09:00 A | 2026-03-06 11:00 A |  | 100% |  |  | start no earlier than 2026-03-06 09:00 | Тимофеев В | 2h | 2h |
| 1828 | 5.109 | Замена двойной розетки (созвон с Шурановым) или спросить у мастера |  | 1h | 2026-03-05 08:00 A | 2026-03-05 10:00 A |  | 100% |  |  | start no earlier than 2026-03-05 08:00 | Дедов В | 1h | 1h |
| 1829 | 5.110 | ошибка Е10 стиральная машинка |  | 1h | 2026-03-04 09:00 A | 2026-03-04 10:00 A |  | 100% |  |  | start no earlier than 2026-03-04 09:00 | Дедов В | 1h | 1h |
| 1830 | 5.111 | ремонт сито, сварка шов |  | 2h | 2026-03-03 09:00 A | 2026-03-03 11:00 A |  | 100% |  |  | start no earlier than 2026-03-03 09:00 | Макаревич А | 2h | 2h |
| 1831 | 5.112 | ремонт растариватель №1 + установить косынки |  | 2h | 2026-03-03 09:00 A | 2026-03-03 11:00 A |  | 100% |  |  | start no earlier than 2026-03-03 09:00 | Некрасов А; Труфанов А | 4h | 4h |

| ID | WBS | Task | Duration | Start | Finish | Predecessors | Complete | Remaining | Actual start | Total slack | Free slack | Constraint | Resources | Work | Actual work |
| --- | --- | --- | --- | --- | --- | --- | --- | --- | --- | --- | --- | --- | --- | --- | --- |
| 1832 | 5.113 | **ремонт растаривателя №3 - клинит заслонку** | 97.81d | 2026-04-20 09:00 A | 2026-09-02 16:30 |  | 85% | 14.46d |  | 135.78d |  |  |  | 16.92h | 14.42h |
| 1833 | 5.113.1 | установка ручной штурвал управления шибером | 2h | 2026-04-20 09:00 A | 2026-04-20 11:00 A |  | 100% |  |  |  |  | start no earlier than 2026-04-20 09:00 | Бундин В | 2h | 2h |
| 1834 | 5.113.2 | контроль поставка Зип - оплачивали или нет? | 10min | 2026-08-12 09:00 A | 2026-08-12 09:10 A |  | 100% |  |  |  |  | start no earlier than 2026-08-12 09:00 | Зорькин В | 0.17h | 0.17h |
| 1835 | 5.113.3 | получить счет | 15min | 2026-08-13 09:00 A | 2026-08-13 09:15 A |  | 100% |  |  |  |  | start no earlier than 2026-08-13 09:00 | Домоводов К | 0.25h | 0.25h |
| 1836 | 5.113.4 | контроль поставки | 15min | 2026-08-31 09:15 | 2026-08-31 09:30 | 1835FS+12d |  |  |  | 137.5d | 0d | start no earlier than 2026-08-31 09:00 | Зорькин В | 0.25h |  |
| 1837 | 5.113.5 | приемка | 15min | 2026-09-01 09:30 | 2026-09-01 09:45 | 1836FS+1d |  |  |  | 137.5d |  | start no earlier than 2026-08-31 09:00 | Зорькин В | 0.25h |  |
| 1838 | 5.113.6 | замена | 4h | 2026-09-02 09:30 A | 2026-09-02 14:30 A | 1837FS+1d | 100% |  |  |  |  | start no earlier than 2026-08-12 09:00 | Тимофеев В | 4h | 4h |
| 1839 | 5.113.7 | Ремонт паука с растаривателя, оценить состояние. | 2h | 2026-09-02 09:00 A | 2026-09-02 11:00 A |  | 100% |  |  |  |  | start no earlier than 2026-09-02 09:00 | Тимофеев В | 2h | 2h |
| 1840 | 5.113.8 | установить фланец на редуктор NMRV050 | 2h | 2026-05-18 09:00 A | 2026-05-18 11:00 A |  | 100% |  |  |  |  | start no earlier than 2026-05-20 09:00 | Бобренок В | 2h | 2h |
| 1841 | 5.113.9 | настройка тепловое реле, настройка концевиков | 2h | 2026-09-02 14:30 | 2026-09-02 16:30 | 1838, 1840 |  |  |  | 135.78d |  | start no earlier than 2026-05-08 09:00 | Дедов В | 2h |  |
| 1842 | 5.113.10 | доработка пластины, которая клинит | 4h | 2026-05-07 09:00 A | 2026-05-07 13:00 A |  | 100% |  |  |  |  | start no earlier than 2026-05-07 09:00 | Тимофеев В | 4h | 4h |
| 1843 | 5.114 | **установить курилку на раму. Изготовить лавочку** | 19.25d? | 2026-02-28 09:00 A | 2026-03-27 11:00 A |  | 100% |  |  |  |  |  |  | 27h | 27h |
| 1844 | 5.114.1 | сделать удлинители для синей платформы, на которые встанет курилка | 1d? | 2026-02-28 09:00 A | 2026-03-02 18:00 A |  | 100% |  |  |  |  | start no earlier than 2026-02-28 09:00 | Макаревич А | 8h | 8h |
| 1845 | 5.114.2 | закрыть отверстие в полу жзелезом | 1h | 2026-03-13 09:00 A | 2026-03-13 10:00 A |  | 100% |  |  |  |  | start no earlier than 2026-03-13 09:00 | Некрасов А; Труфанов А | 2h | 2h |
| 1846 | 5.114.3 | монтаж фанера на лавочку | 2h | 2026-03-27 09:00 A | 2026-03-27 11:00 A | 1845 | 100% |  |  |  |  | start no earlier than 2026-03-27 09:00 |  |  |  |
| 1847 | 5.114.4 | поворот курилки к стене, от ветра | 1h | 2026-03-20 09:00 A | 2026-03-20 10:00 A |  | 100% |  |  |  |  | start no earlier than 2026-03-20 09:00 | Некрасов А | 1h | 1h |
| 1848 | 5.114.5 | изготовить трап входной | 4h | 2026-03-20 10:00 A | 2026-03-20 15:00 A | 1847 | 100% |  |  |  |  | start no earlier than 2026-03-12 08:00 | Некрасов А | 4h | 4h |
| 1849 | 5.114.6 | изготовить лавку по периметру курилки. На железо будет потом доска или пенка. Металл с остатков 3ц или с синего склада | 1d? | 2026-03-01 09:00 A | 2026-03-02 18:00 A |  | 100% |  |  |  |  | start no earlier than 2026-03-01 09:00 | Макаревич А | 8h | 8h |
| 1850 | 5.114.7 | приготовить ручки за которые будет толпа поднимать руками курилку | 2h | 2026-03-09 09:00 A | 2026-03-09 11:00 A |  | 100% |  |  |  |  | start no earlier than 2026-03-09 09:00 | Некрасов А; Труфанов А | 4h | 4h |
| 1851 | 5.115 | ТО штабелеров - обрезать нитки. Дефектовка подшипников, указать в отчете состояние | 2h | 2026-03-01 09:00 A | 2026-03-02 11:00 A |  | 100% |  |  |  |  | start no earlier than 2026-03-01 09:00 | Макаревич А | 2h | 2h |
| 1852 | 5.116 | **штабелер - замена ролик мачты. Подшипник котка** | 0.01d | 2026-03-03 09:00 A | 2026-03-03 09:05 A |  | 100% |  |  |  |  |  |  | 0.17h | 0.17h |
| 1853 | 5.116.1 | контроль | 5min | 2026-03-03 09:00 A | 2026-03-03 09:05 A |  | 100% |  |  |  |  | start no earlier than 2026-03-03 09:00 | Зорькин В; Тракресурс | 0.17h | 0.17h |
| 1854 | 5.117 | **установить стеллажи для архив образцов** | 25.06d? | 2026-03-03 09:00 | 2026-04-07 09:30 A |  | 100% |  | 2026-03-05 09:00 |  |  |  |  | 227.25h | 227.25h |
| 1855 | 5.117.1 | монтаж освещение | 4h | 2026-03-06 09:00 A | 2026-03-06 13:00 A |  | 100% |  |  |  |  | start no earlier than 2026-03-06 09:00 | Некрасов А; Труфанов А | 8h | 8h |

| ID | WBS | Task | Duration | Start | Finish | Predecessors | Complete | Actual start | Actual finish | Constraint | Resources | Work | Actual work |
| --- | --- | --- | --- | --- | --- | --- | --- | --- | --- | --- | --- | --- | --- |
| 1856 | 5.117.2 | **покрасить стеллажи** | 12.02d | 2026-03-06 14:00 A | 2026-03-24 14:10 A | 1855 | 100% |  |  |  |  | 92.17h | 92.17h |
| 1857 | 5.117.2.1 | Заказать краску не пахнущую для радиаторов | 10min | 2026-03-06 14:00 A | 2026-03-06 14:10 A |  | 100% |  |  | start no earlier than 2026-03-03 09:00 | Зорькин В | 0.17h | 0.17h |
| 1858 | 5.117.2.2 | Доставка | 10d | 2026-03-06 14:10 A | 2026-03-24 14:10 A | 1857 | 100% |  |  | start no earlier than 2026-03-03 09:00 | Карабанов | 80h | 80h |
| 1859 | 5.117.2.3 | покраска | 4h | 2026-03-06 14:00 A | 2026-03-06 18:00 A |  | 100% |  |  | start no earlier than 2026-03-06 09:00 | Некрасов А; Труфанов А | 8h | 8h |
| 1860 | 5.117.2.4 | покраска | 4h | 2026-03-06 14:00 A | 2026-03-06 18:00 A |  | 100% |  |  | start no earlier than 2026-03-06 09:00 | Бундин В | 4h | 4h |
| 1861 | 5.117.3 | занести стеллажи в кабинеты с работниками 5ц | 4h | 2026-03-09 09:00 A | 2026-03-09 13:00 A | 1863 | 100% |  |  | start no earlier than 2026-03-09 09:00 | Бобренок В | 4h | 4h |
| 1862 | 5.117.4 | сборка стеллажей | 4h | 2026-03-13 09:00 A | 2026-03-13 13:00 A |  | 100% |  |  | start no earlier than 2026-03-13 09:00 | Труфанов А; Некрасов А | 8h | 8h |
| 1863 | 5.117.5 | монтаж доп полок с уголка | 4h | 2026-03-08 09:00 A | 2026-03-09 13:00 A | 1864 | 100% |  |  | start no earlier than 2026-03-08 09:00 | Бобренок В | 4h | 4h |
| 1864 | 5.117.6 | напилить фанеру на стеллажи | 8h | 2026-03-15 09:00 A | 2026-03-16 18:00 A |  | 100% |  |  | start no earlier than 2026-03-15 09:00 | Бундин В | 8h | 8h |
| 1865 | 5.117.7 | напилить фанеру на стеллажи | 4h | 2026-03-16 09:00 A | 2026-03-16 13:00 A |  | 100% |  |  | start no earlier than 2026-03-16 09:00 | Макаревич А; Тимофеев В | 8h | 8h |
| 1866 | 5.117.8 | **монтаж двери** | 8.06d? | 2026-03-03 09:00 | 2026-03-11 09:30 |  | 100% | 2026-03-05 09:00 | 2026-04-07 09:30 |  |  | 95.08h | 95.08h |
| 1867 | 5.117.8.1 | заявка фурнитуры | 30min | 2026-03-05 09:00 A | 2026-03-05 09:30 A |  | 100% |  |  | start no earlier than 2026-03-05 09:00 | Зорькин В | 0.5h | 0.5h |
| 1868 | 5.117.8.2 | получить коробку на дверь / контроолль поставки | 5min | 2026-03-18 09:00 A | 2026-03-18 09:05 A |  | 100% |  |  | start no earlier than 2026-03-18 09:00 | Зорькин В | 0.08h | 0.08h |
| 1869 | 5.117.8.3 | монтаж 2 двери | 4h | 2026-03-20 09:00 A | 2026-03-20 13:00 A |  | 100% |  |  | start no earlier than 2026-03-20 09:00 | Тимофеев В; Бундин В | 8h | 8h |
| 1870 | 5.117.8.4 | монтаж замка и ручек | 2h | 2026-03-24 09:00 A | 2026-03-24 11:00 A |  | 100% |  |  | start no earlier than 2026-03-24 09:00 | Тимофеев В | 2h | 2h |
| 1871 | 5.117.8.5 | **монтаж наличноков** | 10.06d | 2026-03-24 09:00 A | 2026-04-07 09:30 A |  | 100% |  |  |  |  | 84.5h | 84.5h |
| 1872 | 5.117.8.5.1 | заявка на наличинки | 30min | 2026-03-24 09:00 A | 2026-03-24 09:30 A |  | 100% |  |  | start no earlier than 2026-03-24 09:00 | Зорькин В | 0.5h | 0.5h |
| 1873 | 5.117.8.5.2 | доставка | 10d | 2026-03-24 09:30 A | 2026-04-07 09:30 A | 1872 | 100% |  |  | start no earlier than 2026-03-20 08:00 | Карабанов | 80h | 80h |
| 1874 | 5.117.8.5.3 | монтаж | 4h | 2026-04-04 09:30 A | 2026-04-06 13:00 A | 1873 | 100% |  |  | start no earlier than 2026-03-20 08:00 | Тимофеев В | 4h | 4h |
| 1875 | 5.118 | **монтаж розеток для весов** | 83d | 2026-03-02 09:00 A | 2026-06-24 18:00 A |  | 100% |  |  |  |  | 98.5h | 98.5h |
| 1876 | 5.118.1 | составить план монтажа, расчет материалов | 30min | 2026-03-02 09:00 A | 2026-03-02 09:30 A |  | 100% |  |  | start no earlier than 2026-03-02 09:00 | Некрасов А; Зорькин В; Труфанов А | 1.5h | 1.5h |
| 1877 | 5.118.2 | заявка трос/ талреп | 30min | 2026-03-02 09:30 A | 2026-03-02 10:00 A | 1876 | 100% |  |  | start no earlier than 2026-02-27 08:00 | Зорькин В | 0.5h | 0.5h |
| 1878 | 5.118.3 | доставка | 10d | 2026-03-02 10:00 A | 2026-03-16 10:00 A | 1877 | 100% |  |  | start no earlier than 2026-02-27 08:00 | Карабанов | 80h | 80h |
| 1879 | 5.118.4 | комплектация | 30min | 2026-06-01 09:00 A | 2026-06-01 09:30 A |  | 100% |  |  | start no earlier than 2026-06-01 09:00 | Зорькин В | 0.5h | 0.5h |
| 1880 | 5.118.5 | монтаж | 8h | 2026-06-24 09:00 A | 2026-06-24 18:00 A | 1878 | 100% |  |  | start no earlier than 2026-06-24 09:00 | Тимофеев В; Макаревич А | 16h | 16h |

| ID | WBS | Task | Duration | Start | Finish | Predecessors | Complete | Remaining | Actual start | Total slack | Free slack | Constraint | Resources | Work | Actual work |
| --- | --- | --- | --- | --- | --- | --- | --- | --- | --- | --- | --- | --- | --- | --- | --- |
| 1881 | 5.119 | **установить кнопочный пост вентилятора в окно в доступную зону** | 5.06d | 2026-03-03 09:00 A | 2026-03-10 09:30 |  | 1% | 5.01d |  | 262.53d |  |  |  | 44.5h | 0.5h |
| 1882 | 5.119.1 | заявка частотник 0,5-0,75квт | 30min | 2026-03-03 09:00 A | 2026-03-03 09:30 A |  | 100% |  |  |  |  | start no earlier than 2026-03-03 09:00 | Зорькин В | 0.5h | 0.5h |
| 1883 | 5.119.2 | доставка | 5d | 2026-03-03 09:30 | 2026-03-10 09:30 | 1882 |  |  |  | 262.53d |  | start no earlier than 2026-02-27 08:00 | Карабанов | 40h |  |
| 1884 | 5.119.3 | монтаж | 4h | 2026-03-03 09:00 | 2026-03-03 13:00 |  |  |  |  | 267.09d |  | start no earlier than 2026-03-03 09:00 | Дедов В | 4h |  |
| 1885 | 5.120 | замена местами бойлер с раздевали и кухня | 2h | 2026-02-27 09:00 A | 2026-02-27 11:00 A |  | 100% |  |  |  |  | start no earlier than 2026-02-27 08:00 | Бундин В; Труфанов А | 4h | 4h |
| 1886 | 5.121 | **установить калорифер на 4 котел** | 11.12d? | 2026-10-12 09:00 | 2026-10-27 10:00 |  |  |  |  | 96.47d |  |  |  | 97h |  |
| 1887 | 5.121.1 | заявка | 1h | 2026-10-12 09:00 | 2026-10-12 10:00 |  |  |  |  | 96.47d | 0d | start no earlier than 2026-10-12 09:00 | Зорькин В | 1h |  |
| 1888 | 5.121.2 | доставка | 10d | 2026-10-12 10:00 | 2026-10-26 10:00 | 1887 |  |  |  | 96.47d | 0d | start no earlier than 2026-02-27 08:00 | Карабанов | 80h |  |
| 1889 | 5.121.3 | монтаж | 1d? | 2026-10-26 10:00 | 2026-10-27 10:00 | 1888 |  |  |  | 96.47d |  | start no earlier than 2026-02-27 08:00 | Некрасов А; Труфанов А | 16h |  |
| 1890 | 5.122 | **изготовить бункер нерж** | 75d | 2026-06-06 09:00 | 2026-09-16 18:00 |  | 84% | 12.31d | 2026-03-16 09:00 |  |  |  |  | 97.5h | 81.5h |
| 1891 | 5.122.1 | составить чертеж | 1h | 2026-03-16 09:00 A | 2026-03-16 10:00 A |  | 100% |  |  |  |  | start no earlier than 2026-03-16 09:00 | Зорькин В | 1h | 1h |
| 1892 | 5.122.2 | заявка на нерж | 30min | 2026-03-16 10:00 A | 2026-03-16 10:30 A | 1891 | 100% |  |  |  |  | start no earlier than 2026-02-27 08:00 | Зорькин В | 0.5h | 0.5h |
| 1893 | 5.122.3 | доставка | 10d | 2026-04-23 09:00 A | 2026-05-06 18:00 A | 1892 | 100% |  |  |  |  | start no earlier than 2026-04-23 09:00 | Карабанов | 80h | 80h |
| 1894 | 5.122.4 | сборка | 2d | 2026-06-08 09:00 | 2026-06-09 18:00 | 1893 |  |  |  | 196.59d |  | start no earlier than 2026-06-06 09:00 | Некрасов А | 16h |  |
| 1895 | 5.123 | аудит по взрывоопасности 5ц | 1d? | 2025-09-03 09:00 | 2025-09-03 18:00 |  |  |  |  | 395.59d |  | start no earlier than 2025-09-03 09:00 |  |  |  |
| 1896 | 5.124 | **расширить прорем для проезда погрузчика** | 3d? | 2024-05-27 09:00 | 2024-05-29 18:00 |  |  |  |  | 725.59d |  |  |  | 24h |  |
| 1897 | 5.124.1 | перенос канализ трубы | 1d? | 2024-05-27 09:00 | 2024-05-27 18:00 |  |  |  |  | 725.59d | 0d | start no earlier than 2024-05-27 09:00 | Некрасов А | 8h |  |
| 1898 | 5.124.2 | монтаж закладных в прорем +400мм | 1d? | 2024-05-28 09:00 | 2024-05-28 18:00 | 1897 |  |  |  | 725.59d | 0d | start no earlier than 2024-05-17 09:00 | Некрасов А | 8h |  |
| 1899 | 5.124.3 | демонтаж /расширение | 1d? | 2024-05-29 09:00 | 2024-05-29 18:00 | 1898 |  |  |  | 725.59d |  | start no earlier than 2024-05-17 09:00 | Некрасов А | 8h |  |
| 1900 | 5.125 | подключить концевые выключатели шибера растаривателя | 2h | 2023-06-21 09:00 | 2023-06-21 11:00 |  |  |  |  | 971.34d |  | start no earlier than 2023-06-21 09:00 | Дедов В | 2h |  |
| 1901 | 5.126 | **установить сирену при включении тельфера** | 119d? | 2023-05-29 09:00 A | 2023-11-09 18:00 |  |  | 118.79d? |  | 869.59d |  |  |  | 48.08h | 0.08h |
| 1902 | 5.126.1 | заявка на сирену и кабель | 5min | 2023-05-29 09:00 A | 2023-05-29 09:05 A |  | 100% |  |  |  |  | start no earlier than 2023-05-29 09:00 | Лобанов И | 0.08h | 0.08h |
| 1903 | 5.126.2 | доставка | 5d | 2023-05-29 09:05 | 2023-06-05 09:05 | 1902 |  |  |  | 982.58d | 112.99d | start no earlier than 2023-05-22 09:00 | Малинина М | 40h |  |
| 1904 | 5.126.3 | монтаж | 1d? | 2023-11-09 09:00 | 2023-11-09 18:00 | 1903 |  |  |  | 869.59d |  | start no earlier than 2023-11-09 09:00 | Дедов В | 8h |  |
| 1905 | 5.127 | держак мешка для сбора отработанного корма лопатой, что бы второй не держал мешок | 1d? | 2026-05-04 09:00 | 2026-05-04 18:00 |  |  |  |  | 222.59d |  | start no earlier than 2026-05-04 09:00 | Тимофеев В | 8h |  |

| ID | WBS | Task | Duration | Start | Finish | Predecessors | Complete | Remaining | Total slack | Constraint | Resources | Work | Actual work |
| --- | --- | --- | --- | --- | --- | --- | --- | --- | --- | --- | --- | --- | --- |
| 1906 | 5.128 | **Замена насосной станции** | 10.25d | 2026-09-01 09:00 A | 2026-09-14 11:00 |  | 46% | 5.52d | 127.34d |  |  | 4.33h | 2h |
| 1907 | 5.128.1 | Замена насоса | 2h | 2026-09-01 09:00 A | 2026-09-01 11:00 A |  | 100% |  |  | start no earlier than 2026-09-01 09:00 | Бундин В | 2h | 2h |
| 1908 | 5.128.2 | Заявка на станцию | 15min | 2026-09-02 09:00 | 2026-09-02 09:15 |  |  |  | 136.56d | start no earlier than 2026-09-02 08:00 | Зорькин В | 0.25h |  |
| 1909 | 5.128.3 | контроль доставки | 5min | 2026-09-11 09:00 | 2026-09-11 09:05 |  |  |  | 128.58d | start no earlier than 2026-09-11 09:00 | Зорькин В | 0.08h |  |
| 1910 | 5.128.4 | установка новой насосной станции | 2h | 2026-09-14 09:00 | 2026-09-14 11:00 |  |  |  | 127.34d | start no earlier than 2026-09-14 09:00 | Некрасов А | 2h |  |
| 1911 | 5.129 | Попытаться заварить деки и хомуты той проволокой по нерже, что есть у нас | 3h | 2026-07-28 08:00 A | 2026-07-28 12:00 A |  | 100% |  |  | start no earlier than 2026-07-28 08:00 | Макаревич А | 3h | 3h |
| 1912 | 5.130 | **5 цех** | 0.25d | 2026-04-07 09:00 A | 2026-04-07 11:00 A |  | 100% |  |  |  |  | 3.5h | 3.5h |
| 1913 | 5.130.1 | Установка сеток на сито | 1h | 2026-04-07 09:00 A | 2026-04-07 10:00 A |  | 100% |  |  | start no earlier than 2026-04-07 08:00 | Бундин В | 1h | 1h |
| 1914 | 5.130.2 | **2 цех** | 0.25d | 2026-04-07 09:00 A | 2026-04-07 11:00 A |  | 100% |  |  |  |  | 2.5h | 2.5h |
| 1915 | 5.130.2.1 | Взять шланг с мойки зона экструдера, установить на складе навесок цех 2, для набора воды в кубы | 30min | 2026-04-07 09:00 A | 2026-04-07 09:30 A |  | 100% |  |  | start no earlier than 2026-04-07 08:00 | Бундин В | 0.5h | 0.5h |
| 1916 | 5.130.2.2 | Посмотреть подачу воды на поломоечной машинке | 2h | 2026-04-07 09:00 A | 2026-04-07 11:00 A |  | 100% |  |  | start no earlier than 2026-04-07 08:00 | Бундин В | 2h | 2h |
| 1917 | 6 | **модернизация** | 976.5d? | 2023-06-07 09:00 A | 2027-03-03 13:00 |  | 48% | 506.76d? | 5.09d |  |  | 3394.67h | 2640.67h |
| 1918 | 6.1 | доработка нерж труб для парогенератора (антиэлектрод) | 1h | 2026-07-06 09:00 | 2026-07-06 10:00 |  |  |  | 178.47d | start no earlier than 2026-07-06 09:00 | Тимофеев В | 1h |  |
| 1919 | 6.2 | **Дражжировка 2 линия 1 цех** | 0.25d | 2026-07-29 08:00 A | 2026-07-29 11:00 A |  | 100% |  |  |  |  | 2h | 2h |
| 1920 | 6.2.1 | установка трубки с отверстиями, эксперимент | 2h | 2026-07-29 08:00 A | 2026-07-29 11:00 A |  | 100% |  |  | start no earlier than 2026-07-29 08:00 | Тимофеев В | 2h | 2h |
| 1921 | 6.3 | **поточные весы на входе в барабан жира** | 0.12d | 2026-06-15 09:00 A | 2026-06-15 10:00 A |  | 100% |  |  |  |  | 1h | 1h |
| 1922 | 6.3.1 | запрос КП у НОТИС - весы с дозатором / бункеры | 1h | 2026-06-15 09:00 A | 2026-06-15 10:00 A |  | 100% |  |  | start no earlier than 2026-06-15 09:00 | Зорькин В | 1h | 1h |
| 1923 | 6.4 | **устройство загрузки в смесители** | 0.12d | 2026-03-31 09:00 | 2026-03-31 10:00 |  |  |  | 247.47d |  |  | 1h |  |
| 1924 | 6.4.1 | подбор оборудования, запрос КП | 1h | 2026-03-31 09:00 | 2026-03-31 10:00 |  |  |  | 247.47d | start no earlier than 2026-03-31 08:00 | Зорькин В | 1h |  |
| 1925 | 6.5 | **определить параметры сушки гранулы лаб испытанием** | 6d | 2024-09-09 09:00 A | 2024-09-16 18:00 A |  | 100% |  |  |  |  | 16h | 16h |
| 1926 | 6.5.1 | изучить метод материал, физ законы процесса сушки. | 4h | 2024-09-09 09:00 A | 2024-09-09 13:00 A |  | 100% |  |  | start no earlier than 2024-09-09 09:00 | Зорькин В | 4h | 4h |
| 1927 | 6.5.2 | Определить набор средств измерения и оборыдования для лаб работы. | 4h | 2024-09-09 14:00 A | 2024-09-09 18:00 A | 1926 | 100% |  |  | start no earlier than 2024-09-09 09:00 | Зорькин В | 4h | 4h |
| 1928 | 6.5.3 | разрабоать пошаговый план лаб работы сушки 1кг продукта в термошкафу | 4h | 2024-09-16 09:00 A | 2024-09-16 13:00 A | 1927 | 100% |  |  | start no earlier than 2024-09-16 09:00 | Зорькин В | 4h | 4h |
| 1929 | 6.5.4 | определить зависимость времени сушки от температуры и влажности среды. | 4h | 2024-09-16 14:00 A | 2024-09-16 18:00 A | 1928 | 100% |  |  | start no earlier than 2024-09-06 08:00 | Зорькин В | 4h | 4h |

| ID | WBS | Task | Type | Duration | Start | Finish | Predecessors | Complete | Remaining | Total slack | Constraint | Resources | Work | Actual work |
| --- | --- | --- | --- | --- | --- | --- | --- | --- | --- | --- | --- | --- | --- | --- |
| 1930 | 6.6 | **станция фильтрации гидролизат с еврокуба в промежут емкость. Фильтр + насос** |  | 27.25d | 2026-03-13 09:00 A | 2026-04-21 11:00 A |  | 100% |  |  |  |  | 8h | 8h |
| 1931 | 6.6.1 | составить схему размещения насос / фильтр |  | 1h | 2026-03-13 09:00 A | 2026-03-13 10:00 A |  | 100% |  |  | start no earlier than 2026-03-13 09:00 | Зорькин В | 1h | 1h |
| 1932 | 6.6.2 | заявка фильтр 5" коллона + фитинги РР |  | 1h | 2026-03-13 10:00 A | 2026-03-13 11:00 A | 1931 | 100% |  |  | start no earlier than 2026-03-12 08:00 | Зорькин В | 1h | 1h |
| 1933 | 6.6.3 | доставка |  | 10d | 2026-03-13 11:00 A | 2026-03-27 11:00 A | 1932 | 100% |  |  | start no earlier than 2026-03-12 08:00 |  |  |  |
| 1934 | 6.6.4 | сборка насосная станция с фильром в 1ц |  | 4h | 2026-04-20 09:00 A | 2026-04-20 13:00 A | 1933 | 100% |  |  | start no earlier than 2026-04-20 09:00 | Тимофеев В | 4h | 4h |
| 1935 | 6.6.5 | оформление протокол испытаний |  | 2h | 2026-04-21 09:00 A | 2026-04-21 11:00 A |  | 100% |  |  | start no earlier than 2026-04-21 09:00 | Зорькин В | 2h | 2h |
| 1936 | 6.7 | **тест форсунки на гидролизат фильтрованный гидролизат** |  | 95.25d | 2026-04-21 11:00 A | 2026-09-01 13:00 | 1930 | 72% | 26.28d | 137.09d |  |  | 19h | 15h |
| 1937 | 6.7.1 | подготовить переходник |  | 2h | 2026-04-21 11:00 A | 2026-04-21 13:00 A |  | 100% |  |  | start no earlier than 2026-03-12 08:00 | Тимофеев В | 2h | 2h |
| 1938 | 6.7.2 | тестирование разных форсунок |  | 2h | 2026-04-21 13:00 A | 2026-04-21 16:00 A | 1937 | 100% |  |  | start no earlier than 2026-03-12 08:00 | Тимофеев В; Зорькин В | 4h | 4h |
| 1939 | 6.7.3 | контроль наличия фитингов для подключения насосной фильтровальной станции к еврокубу |  | 30min | 2026-04-24 08:00 A | 2026-04-24 09:30 A |  | 100% |  |  | start no earlier than 2026-04-24 08:00 | Зорькин В; Тимофеев В | 1h | 1h |
| 1940 | 6.7.4 | тест - наполнить канистру с куба гидролизатом через станцию+фильтр |  | 2h | 2026-04-27 09:00 A | 2026-04-27 11:00 A |  | 100% |  |  | start no earlier than 2026-04-27 09:00 | Зорькин В; Тимофеев В | 3h | 3h |
| 1941 | 6.7.5 | фильтрованный гдз распылить форсунками штатным насосом - забивакет |  | 4h | 2026-05-13 09:00 A | 2026-05-13 13:00 A | 1940 | 100% |  |  | start no earlier than 2026-05-13 09:00 | Зорькин В; Тимофеев В | 5h | 5h |
| 1942 | 6.7.6 | проект распыление моторчиком |  | 4h | 2026-09-01 09:00 | 2026-09-01 13:00 |  |  |  | 137.09d | start no earlier than 2026-09-01 09:00 | Домоводов К | 4h |  |
| 1943 | 6.8 | **станция фильтраци куринный жир с еврокуба в промежут емкость. Насос + фильтр** |  | 36.75d? | 2026-03-05 09:00 A | 2026-04-24 16:00 A |  | 100% |  |  |  |  | 46h | 46h |
| 1944 | 6.8.1 | подбор производительный насос и фильтр для жира. Закачка с еврокуба, перекачка через фильтр |  | 1d? | 2026-03-05 09:00 A | 2026-03-05 18:00 A |  | 100% |  |  | start no earlier than 2026-03-05 09:00 | Домоводов К; Зорькин В | 16h | 16h |
| 1945 | 6.8.2 | заявка материалы |  | 1d? | 2026-03-06 09:00 A | 2026-03-06 18:00 A | 1944 | 100% |  |  | start no earlier than 2026-02-27 08:00 | Зорькин В | 8h | 8h |
| 1946 | 6.8.3 | тест насосной станцией с фильтром |  | 1d? | 2026-04-20 09:00 A | 2026-04-20 18:00 A |  | 100% |  |  | start no earlier than 2026-04-20 09:00 | Зорькин В; Тимофеев В | 16h | 16h |
| 1947 | 6.8.4 | сборка второй станции для жира на БГ11А |  | 6h | 2026-04-24 08:00 A | 2026-04-24 16:00 A |  | 100% |  |  | start no earlier than 2026-04-24 08:00 | Тимофеев В | 6h | 6h |
| 1948 | 6.9 | **мешалка гидролизата** |  | 131.12d | 2026-03-03 09:00 A | 2026-09-02 10:00 A |  | 100% |  |  |  |  | 37.08h | 37.08h |
| 1949 | 6.9.1 | определить диаметр вала / где инструкция? Выяснить |  | 20min | 2026-08-28 09:00 A | 2026-08-28 09:20 A |  | 100% |  |  | start no earlier than 2026-08-28 09:00 | Зорькин В | 0.33h | 0.33h |
| 1950 | 6.9.2 | согласовать договор /оплата счет |  | 1h | 2026-03-03 09:00 A | 2026-03-03 10:00 A |  | 100% |  |  | start no earlier than 2026-03-03 09:00 | Домоводов К | 1h | 1h |
| 1951 | 6.9.3 | доставка | milestone | 0d | 2026-08-10 08:00 A | 2026-08-10 08:00 A |  | 100% |  |  | start no earlier than 2026-08-10 08:00 |  |  |  |
| 1952 | 6.9.4 | планирование технологии работы / какие нужны доработки |  | 15min | 2026-08-12 09:00 A | 2026-08-12 09:15 A |  | 100% |  |  | start no earlier than 2026-08-12 09:00 | Домоводов К | 0.25h | 0.25h |
| 1953 | 6.9.5 | сборка и тест с операторами в 1ц. Можно приварить кронштейны под штабелер |  | 4h | 2026-08-12 09:00 A | 2026-08-12 13:00 A |  | 100% |  |  | start no earlier than 2026-08-12 09:00 | Макаревич А | 4h | 4h |
| 1954 | 6.9.6 | составить чертеж кронштейна |  | 1h | 2026-08-17 09:00 A | 2026-08-17 10:00 A |  | 100% |  |  | start no earlier than 2026-08-17 09:00 | Шуранов Ю | 1h | 1h |
| 1955 | 6.9.7 | заявка на лебедка |  | 15min | 2026-08-17 10:00 A | 2026-08-17 10:15 A | 1954 | 100% |  |  | start no earlier than 2026-08-14 09:00 | Шуранов Ю | 0.25h | 0.25h |
| 1956 | 6.9.8 | конроль доставки |  | 15min | 2026-08-22 10:15 A | 2026-08-24 09:15 A | 1955FS+5d | 100% |  |  | start no earlier than 2026-08-14 09:00 | Шуранов Ю | 0.25h | 0.25h |
| 1957 | 6.9.9 | монтаж лебедка |  | 6h | 2026-08-31 09:00 A | 2026-08-31 16:00 A | 1956FS+1d | 100% |  |  | start no earlier than 2026-08-31 09:00 | Некрасов А; Труфанов А | 12h | 12h |
| 1958 | 6.9.10 | монтаж кронштейн под лебедку |  | 6h | 2026-08-31 16:00 A | 2026-09-01 13:00 A | 1957 | 100% |  |  | start no earlier than 2026-08-31 09:00 | Некрасов А; Труфанов А | 12h | 12h |
| 1959 | 6.9.11 | Установить 3-х фазную вилку для мешалки рядом с частотником |  | 2h | 2026-08-31 08:00 A | 2026-08-31 11:00 A |  | 100% |  |  | start no earlier than 2026-08-31 08:00 | Дедов В | 2h | 2h |
| 1960 | 6.9.12 | Установить розетку для электротали, проложить кабель к розетке возле мухобойки |  | 3h | 2026-08-31 08:00 A | 2026-08-31 12:00 A |  | 100% |  |  | start no earlier than 2026-08-31 08:00 | Дедов В | 3h | 3h |
| 1961 | 6.9.13 | Подключить таль к розетке, проложить гофру |  | 1h | 2026-09-02 09:00 A | 2026-09-02 10:00 A |  | 100% |  |  | start no earlier than 2026-09-02 09:00 | Бундин В | 1h | 1h |

| ID | WBS | Task | Duration | Start | Finish | Predecessors | Complete | Remaining | Total slack | Constraint | Resources | Work | Actual work |
| --- | --- | --- | --- | --- | --- | --- | --- | --- | --- | --- | --- | --- | --- |
| 1962 | 6.10 | **качественное нанесение жира тесты** | 263.5d? | 2026-03-02 09:00 A | 2027-03-03 13:00 A |  | 100% |  |  |  |  | 2102h | 2102h |
| 1963 | 6.10.1 | **испытания форсунка 2х фазная 1ц** | 2.25d | 2026-03-02 09:00 A | 2026-03-04 11:00 A |  | 100% |  |  |  |  | 5.5h | 5.5h |
| 1964 | 6.10.1.1 | подготовить кронштейн крепления форсунки к конвейеру | 2h | 2026-03-02 09:00 A | 2026-03-02 11:00 A |  | 100% |  |  | start no earlier than 2026-03-02 09:00 | Тимофеев В | 2h | 2h |
| 1965 | 6.10.1.2 | подготовить пневморедуктор, временно с НОТИС 3ц | 1h | 2026-03-02 11:00 A | 2026-03-02 12:00 A | 1964 | 100% |  |  | start no earlier than 2026-02-27 08:00 | Тимофеев В | 1h | 1h |
| 1966 | 6.10.1.3 | подготовить фильтр 1шт | 30min | 2026-03-02 12:00 A | 2026-03-02 12:30 A | 1965 | 100% |  |  | start no earlier than 2026-02-27 08:00 | Тимофеев В | 0.5h | 0.5h |
| 1967 | 6.10.1.4 | Тест форсунки на жирах, скооперироваться с технологами | 2h | 2026-03-04 09:00 A | 2026-03-04 11:00 A |  | 100% |  |  | start no earlier than 2026-03-04 09:00 | Тимофеев В | 2h | 2h |
| 1968 | 6.10.2 | **монтаж форсунки в линию** | 256.5d? | 2026-03-11 09:00 A | 2027-03-03 13:00 A |  | 100% |  |  |  | Тимофеев В | 2096.5h | 2096.5h |
| 1969 | 6.10.2.1 | **тест однофазная форсунка** | 30.25d? | 2026-03-11 09:00 A | 2026-04-22 11:00 A |  | 100% |  |  |  |  | 52.5h | 52.5h |
| 1970 | 6.10.2.1.1 | заявка пневморедуктор, фитинги насос - кран - 3х ходовой | 30min | 2026-03-11 09:00 A | 2026-03-11 09:30 A |  | 100% |  |  | start no earlier than 2026-03-11 09:00 | Зорькин В | 0.5h | 0.5h |
| 1971 | 6.10.2.1.2 | проект рама для монтаж фильтров, редуктор, кронштейн форсунки | 1d? | 2026-03-11 09:30 A | 2026-03-12 09:30 A | 1970 | 100% |  |  | start no earlier than 2026-02-27 08:00 | Домоводов К | 8h | 8h |
| 1972 | 6.10.2.1.3 | доставка | 5d | 2026-03-30 09:00 A | 2026-04-03 18:00 A |  | 100% |  |  | start no earlier than 2026-03-30 09:00 | Карабанов | 40h | 40h |
| 1973 | 6.10.2.1.4 | сборка рама, покраска | 2h | 2026-04-22 09:00 A | 2026-04-22 11:00 A | 1971 | 100% |  |  | start no earlier than 2026-04-22 09:00 | Тимофеев В | 2h | 2h |
| 1974 | 6.10.2.1.5 | монтаж 0,3 форсунки | 2h | 2026-04-22 09:00 A | 2026-04-22 11:00 A | 1972 | 100% |  |  | start no earlier than 2026-04-22 09:00 | Тимофеев В | 2h | 2h |
| 1975 | 6.11 | **тест однофазная форсунка** | 0.02d | 2026-03-16 09:00 A | 2026-03-16 09:10 A |  | 100% |  |  |  |  | 0.17h | 0.17h |
| 1976 | 6.11.1 | получить счет | 10min | 2026-03-16 09:00 A | 2026-03-16 09:10 A |  | 100% |  |  | start no earlier than 2026-03-16 09:00 | Домоводов К | 0.17h | 0.17h |
| 1977 | 6.12 | **установить фильтры жир на 1 и 2 линию** | 71.25d | 2026-03-17 09:00 A | 2026-06-24 11:00 |  | 83% | 11.88d | 186.34d |  |  | 14h | 12h |
| 1978 | 6.12.1 | сборка система фильтров 2 фильтра на 2 линии подготовиь + рама | 4h | 2026-03-17 09:00 A | 2026-03-17 13:00 A |  | 100% |  |  | start no earlier than 2026-03-17 09:00 | Тимофеев В | 4h | 4h |
| 1979 | 6.12.2 | монтаж стационарно рама под фильтры | 4h | 2026-04-22 09:00 A | 2026-04-22 13:00 A | 1978 | 100% |  |  | start no earlier than 2026-04-22 09:00 | Тимофеев В | 4h | 4h |
| 1980 | 6.12.3 | калибровка PID регулятора подачи жира | 2h | 2026-05-13 09:00 A | 2026-05-13 11:00 A |  | 100% |  |  | start no earlier than 2026-05-13 09:00 | Зорькин В; Домоводов К | 4h | 4h |
| 1981 | 6.12.4 | подготовка для установить на 1 линию | 2h | 2026-06-24 09:00 | 2026-06-24 11:00 |  |  |  | 186.34d | start no earlier than 2026-06-24 09:00 | Тимофеев В | 2h |  |
| 1982 | 6.13 | **ТЕКО 0,4 или 1,5 поставить пленку с БЕСТРОМА 620мм** | 6.09d | 2026-03-13 09:00 A | 2026-03-23 09:45 A |  | 100% |  |  |  |  | 0.75h | 0.75h |
| 1983 | 6.13.1 | запрос возможности в ТЕКО | 30min | 2026-03-13 09:00 A | 2026-03-13 09:30 A |  | 100% |  |  | start no earlier than 2026-03-13 09:00 | Зорькин В | 0.5h | 0.5h |
| 1984 | 6.13.2 | контроль ответ | 15min | 2026-03-23 09:30 A | 2026-03-23 09:45 A | 1983FS+10d | 100% |  |  | start no earlier than 2026-03-12 08:00 | Зорькин В | 0.25h | 0.25h |
| 1985 | 6.14 | **фильера с вставками для 2ц** | 0.02d | 2025-02-21 09:00 A | 2025-02-21 09:10 A |  | 100% |  |  |  |  | 0.17h | 0.17h |
| 1986 | 6.14.1 | контроль изготовления | 10min | 2025-02-21 09:00 A | 2025-02-21 09:10 A |  | 100% |  |  | start no earlier than 2025-02-21 09:00 | Шуранов Ю | 0.17h | 0.17h |

| ID | WBS | Task | Duration | Start | Finish | Predecessors | Complete | Total slack | Free slack | Constraint | Resources | Work | Actual work |
| --- | --- | --- | --- | --- | --- | --- | --- | --- | --- | --- | --- | --- | --- |
| 1987 | 6.15 | **ручка для экструдера крутиьт мотор на 1 и 2 линию** | 138d? | 2024-08-09 09:00 | 2025-02-18 18:00 |  |  | 536.59d |  |  |  | 9h |  |
| 1988 | 6.15.1 | изготовление | 1d? | 2025-02-18 09:00 | 2025-02-18 18:00 |  |  | 536.59d |  | start no earlier than 2025-02-18 09:00 | Черепанов И | 8h |  |
| 1989 | 6.15.2 | составить чертежи / разместить изготовление | 1h | 2024-08-09 09:00 | 2024-08-09 10:00 |  |  | 674.47d |  | start no earlier than 2024-08-09 09:00 | Шуранов Ю | 1h |  |
| 1990 | 6.16 | **охлаждение шкафов управления печью 1 2 3 линия** | 5d? | 2024-04-18 09:00 | 2024-04-24 18:00 |  |  | 750.59d |  |  |  | 40h |  |
| 1991 | 6.16.1 | выбор и заявка кондиционеры для щитов управления | 1d? | 2024-04-18 09:00 | 2024-04-18 18:00 |  |  | 750.59d | 0d | start no earlier than 2024-04-18 09:00 | Домоводов К | 8h |  |
| 1992 | 6.16.2 | оплата / доставка | 1d? | 2024-04-19 09:00 | 2024-04-19 18:00 | 1991 |  | 750.59d | 0d | start no earlier than 2024-04-04 09:00 | Мультан | 8h |  |
| 1993 | 6.16.3 | монтаж | 3d | 2024-04-22 09:00 | 2024-04-24 18:00 | 1992 |  | 750.59d |  | start no earlier than 2024-04-11 09:00 | Некрасов А | 24h |  |
| 1994 | 6.17 | **подача гидролизат в смеситель насосом** | 25d? | 2024-03-25 09:00 | 2024-04-26 18:00 |  |  | 748.59d |  |  |  | 200h |  |
| 1995 | 6.17.1 | выбор насоса / заявка на насос | 1d? | 2024-03-25 09:00 | 2024-03-25 18:00 |  |  | 748.59d | 0d | start no earlier than 2024-03-25 09:00 | Домоводов К | 8h |  |
| 1996 | 6.17.2 | проректирование автоматика, монтажная часть / заявка | 1d? | 2024-03-26 09:00 | 2024-03-26 18:00 | 1995 |  | 748.59d | 0d | start no earlier than 2024-03-22 09:00 | Домоводов К | 8h |  |
| 1997 | 6.17.3 | поставка оборудования | 20d | 2024-03-27 09:00 | 2024-04-23 18:00 | 1996 |  | 748.59d | 0d | start no earlier than 2024-03-22 09:00 | Мультан | 160h |  |
| 1998 | 6.17.4 | монтаж электрика | 1d? | 2024-04-24 09:00 | 2024-04-24 18:00 | 1997 |  | 748.59d | 0d | start no earlier than 2024-03-22 09:00 | Некрасов А | 8h |  |
| 1999 | 6.17.5 | монтаж трубопровод | 1d? | 2024-04-25 09:00 | 2024-04-25 18:00 | 1998 |  | 748.59d | 0d | start no earlier than 2024-03-22 09:00 | Некрасов А | 8h |  |
| 2000 | 6.17.6 | монтаж автоматика | 1d? | 2024-04-26 09:00 | 2024-04-26 18:00 | 1999 |  | 748.59d |  | start no earlier than 2024-03-22 09:00 | Некрасов А | 8h |  |
| 2001 | 6.18 | **установить форсунки на подачу жир и гидролизат** | 106.38d | 2024-03-26 09:00 A | 2024-08-21 12:00 A |  | 100% |  |  |  |  | 187h | 187h |
| 2002 | 6.18.1 | выбор тип форсунок, заявка | 1d | 2024-03-26 09:00 A | 2024-03-26 18:00 A |  | 100% |  |  | start no earlier than 2024-03-26 09:00 | Домоводов К | 8h | 8h |
| 2003 | 6.18.2 | проректирование / заявка на пневматику и электрику для управления форсунками | 1d | 2024-03-27 09:00 A | 2024-03-27 18:00 A | 2002 | 100% |  |  | start no earlier than 2024-03-22 09:00 | Домоводов К | 8h | 8h |
| 2004 | 6.18.3 | тех решение / чертеж крепления форсунок | 1d | 2024-03-28 09:00 A | 2024-03-28 18:00 A | 2003 | 100% |  |  | start no earlier than 2024-03-22 09:00 | Домоводов К | 8h | 8h |
| 2005 | 6.18.4 | доставка | 20d | 2024-03-29 09:00 A | 2024-04-25 18:00 A | 2002, 2004 | 100% |  |  | start no earlier than 2024-03-22 09:00 | Мультан | 160h | 160h |
| 2006 | 6.18.5 | монтаж механника | 2h | 2024-08-21 09:00 A | 2024-08-21 11:00 A | 2005 | 100% |  |  | start no earlier than 2024-08-21 09:00 | Тимофеев В | 2h | 2h |
| 2007 | 6.18.6 | монтаж пневматика | 1h | 2024-08-21 11:00 A | 2024-08-21 12:00 A | 2006 | 100% |  |  | start no earlier than 2024-03-22 09:00 | Тимофеев В | 1h | 1h |
| 2008 | 6.19 | **модернизация откидной воронка загрузки в барабан дрожировки** | 10.62d | 2024-05-14 09:00 A | 2024-05-28 15:00 A |  | 100% |  |  |  |  | 89h | 89h |
| 2009 | 6.19.1 | составить эскиз / заказ шарниры (при остановке экструдера) | 1h | 2024-05-14 09:00 A | 2024-05-14 10:00 A |  | 100% |  |  | start no earlier than 2024-05-14 09:00 | Шуранов Ю | 1h | 1h |
| 2010 | 6.19.2 | доставка | 10d | 2024-05-14 10:00 A | 2024-05-28 10:00 A | 2009 | 100% |  |  | start no earlier than 2024-03-14 09:00 | Мультан | 80h | 80h |
| 2011 | 6.19.3 | монгтаж | 4h | 2024-05-28 10:00 A | 2024-05-28 15:00 A | 2010 | 100% |  |  | start no earlier than 2024-05-14 09:00 | Макаревич А; Некрасов А | 8h | 8h |
| 2012 | 6.20 | модернизация ножевого узла | 1d? | 2023-12-28 09:00 | 2023-12-28 18:00 |  |  | 834.59d |  | start no earlier than 2023-12-28 09:00 |  |  |  |

| ID | WBS | Task | Duration | Start | Finish | Predecessors | Complete | Remaining | Total slack | Free slack | Constraint | Resources | Work | Actual work |
| --- | --- | --- | --- | --- | --- | --- | --- | --- | --- | --- | --- | --- | --- | --- |
| 2013 | 6.21 | **модернизация дозации воды в прекондиционер** | 0.62d | 2023-12-25 09:00 A | 2023-12-25 15:00 A |  | 100% |  |  |  |  |  | 5h | 5h |
| 2014 | 6.21.1 | установить балансировочный кран 2 линия | 1h | 2023-12-25 09:00 A | 2023-12-25 10:00 A |  | 100% |  |  |  | start no earlier than 2023-12-25 09:00 | Дедов В | 1h | 1h |
| 2015 | 6.21.2 | установить расходомер 2 линия | 2h | 2023-12-25 10:00 A | 2023-12-25 12:00 A | 2014 | 100% |  |  |  | start no earlier than 2023-12-20 09:00 | Дедов В | 2h | 2h |
| 2016 | 6.21.3 | установить расходомер 2 линия | 2h | 2023-12-25 12:00 A | 2023-12-25 15:00 A | 2015 | 100% |  |  |  | start no earlier than 2023-12-20 09:00 | Дедов В | 2h | 2h |
| 2017 | 6.22 | **заменить шланг на высоктемпературный на жир** | 1.62d? | 2024-05-14 09:00 A | 2024-05-15 15:00 A |  | 100% |  |  |  |  |  | 13h | 13h |
| 2018 | 6.22.1 | заявка / подбор | 1h | 2024-05-14 09:00 A | 2024-05-14 10:00 A |  | 100% |  |  |  | start no earlier than 2024-05-14 09:00 | Шуранов Ю | 1h | 1h |
| 2019 | 6.22.2 | доставка | 1d? | 2024-05-14 10:00 A | 2024-05-15 10:00 A | 2018 | 100% |  |  |  | start no earlier than 2023-12-13 08:00 | Малинина М | 8h | 8h |
| 2020 | 6.22.3 | замена | 4h | 2024-05-15 10:00 A | 2024-05-15 15:00 A | 2019 | 100% |  |  |  | start no earlier than 2024-01-15 09:00 | Тимофеев В | 4h | 4h |
| 2021 | 6.23 | **тепловая защита электромоторов мехнизмов** | 108.75d | 2023-12-28 09:00 A | 2024-05-28 16:00 |  | 2% | 106.58d | 726.84d |  |  |  | 100h | 2h |
| 2022 | 6.23.1 | **составить список эл моторов (нужен ток ) без теплового реле - от вибросита - до упаковки вся технология** | 75.25d | 2024-01-30 09:00 A | 2024-05-14 11:00 |  | 17% | 62.71d | 737.34d |  |  |  | 12h | 2h |
| 2023 | 6.23.1.1 | 5 цех | 2h | 2024-01-30 09:00 A | 2024-01-30 11:00 A |  | 100% |  |  |  | start no earlier than 2024-01-30 09:00 | Дедов В | 2h | 2h |
| 2024 | 6.23.1.2 | 1 цех | 4h | 2024-01-30 09:00 | 2024-01-30 13:00 |  |  |  | 812.09d |  | start no earlier than 2024-01-30 09:00 | Дедов В | 4h |  |
| 2025 | 6.23.1.3 | 2 цех | 4h | 2024-01-30 09:00 | 2024-01-30 13:00 |  |  |  | 812.09d |  | start no earlier than 2024-01-30 09:00 | Дедов В | 4h |  |
| 2026 | 6.23.1.4 | заполнитьт таблицу для заявки место-двиг-ток | 2h | 2024-05-14 09:00 | 2024-05-14 11:00 |  |  |  | 737.34d |  | start no earlier than 2024-05-14 09:00 | Шуранов Ю | 2h |  |
| 2027 | 6.23.2 | переписать список мотор-редукторов | 2h | 2023-12-28 09:00 | 2023-12-28 11:00 |  |  |  | 823.59d | 96.75d | start no earlier than 2023-12-28 09:00 | Дедов В | 2h |  |
| 2028 | 6.23.3 | заявка тепл реле | 2h | 2024-05-14 09:00 | 2024-05-14 11:00 | 2027FS+1d |  |  | 726.84d | 0d | start no earlier than 2024-05-14 09:00 | Шуранов Ю | 2h |  |
| 2029 | 6.23.4 | дост авка | 10d | 2024-05-14 11:00 | 2024-05-28 11:00 | 2028 |  |  | 726.84d | 0d | start no earlier than 2023-12-13 08:00 | Малинина М | 80h |  |
| 2030 | 6.23.5 | монтаж конвейер 2ц | 2h | 2024-05-28 11:00 | 2024-05-28 13:00 | 2028, 2029 |  |  | 726.84d | 0d | start no earlier than 2024-01-19 09:00 | Дедов В | 2h |  |
| 2031 | 6.23.6 | монтаж составить список | 2h | 2024-05-28 14:00 | 2024-05-28 16:00 | 2030 |  |  | 726.84d |  | start no earlier than 2023-12-13 08:00 | Домоводов К | 2h |  |
| 2032 | 6.24 | **устройство контроля уровня сырья в большом бункере** | 14.03d | 2023-08-16 09:00 A | 2023-09-05 09:15 |  |  | 14d | 917.56d |  |  |  | 192.25h | 0.25h |
| 2033 | 6.24.1 | заявка на датчик | 15min | 2023-08-16 09:00 A | 2023-08-16 09:15 A |  | 100% |  |  |  | start no earlier than 2023-08-14 09:00 | Лобанов И | 0.25h | 0.25h |
| 2034 | 6.24.2 | доставка | 10d | 2023-08-16 09:15 | 2023-08-30 09:15 | 2033 |  |  | 917.56d | 0d | start no earlier than 2023-03-10 09:00 | Малинина М; Домоводов К | 160h |  |
| 2035 | 6.24.3 | выполнение монажных работ | 4d | 2023-08-30 09:15 | 2023-09-05 09:15 | 2034 |  |  | 917.56d |  | start no earlier than 2023-03-10 09:00 | Подрядчик | 32h |  |
| 2036 | 6.25 | **конвейер с охладителя регулировка ленты - модернизация** | 6.25d | 2024-05-14 09:00 A | 2024-05-22 11:00 A |  | 100% |  |  |  |  |  | 50h | 50h |
| 2037 | 6.25.1 | выбор и заявка натяжные буксы | 2h | 2024-05-14 09:00 A | 2024-05-14 11:00 A |  | 100% |  |  |  | start no earlier than 2024-05-14 09:00 | Шуранов Ю | 2h | 2h |
| 2038 | 6.25.2 | доставка | 5d | 2024-05-14 11:00 A | 2024-05-21 11:00 A | 2037 | 100% |  |  |  | start no earlier than 2023-10-30 09:00 | Малинина М | 40h | 40h |
| 2039 | 6.25.3 | монтаж | 1d | 2024-05-21 11:00 A | 2024-05-22 11:00 A | 2038 | 100% |  |  |  | start no earlier than 2023-12-01 09:00 | Тимофеев В | 8h | 8h |

| ID | WBS | Task | Duration | Start | Finish | Predecessors | Complete | Remaining | Actual start | Total slack | Free slack | Constraint | Resources | Work | Actual work |
| --- | --- | --- | --- | --- | --- | --- | --- | --- | --- | --- | --- | --- | --- | --- | --- |
| 2040 | 6.26 | **прекондиционер забивается отслоением слипшегося сырья** | 204d? | 2023-08-03 09:00 | 2024-05-14 18:00 |  |  |  |  | 0d |  |  |  | 24h |  |
| 2041 | 6.26.1 | **решение тех совет** | 1d? | 2023-08-03 09:00 | 2023-08-03 18:00 |  |  |  |  |  |  |  |  | 24h |  |
| 2042 | 6.26.1.1 | вар1 - доп лопатки на выходе | 1d? | 2024-05-14 09:00 | 2024-05-14 18:00 |  |  |  |  | 736.59d |  | start no earlier than 2024-05-14 09:00 | Шуранов Ю | 8h |  |
| 2043 | 6.26.1.2 | вар 2 - вертикальные ворошители | 1d? | 2024-05-14 09:00 | 2024-05-14 18:00 |  |  |  |  | 736.59d |  | start no earlier than 2024-05-14 09:00 | Шуранов Ю | 8h |  |
| 2044 | 6.26.1.3 | вар 3 - подача пара | 1d? | 2024-05-14 09:00 | 2024-05-14 18:00 |  |  |  |  | 736.59d |  | start no earlier than 2024-05-14 09:00 | Шуранов Ю | 8h |  |
| 2045 | 6.27 | **фильтры на баки жиров перед насосами** | 439.12d | 2023-07-20 09:00 A | 2025-03-26 10:00 A |  | 100% |  |  |  |  |  |  | 4.75h | 4.75h |
| 2046 | 6.27.1 | утвердить тех решение | 1h | 2023-07-20 09:00 A | 2023-07-20 10:00 A |  | 100% |  |  |  |  | start no earlier than 2023-07-20 09:00 | Лобанов И; Домоводов К; Сапелин С | 3h | 3h |
| 2047 | 6.27.2 | купить сетку в корпусе | 30min | 2024-05-14 09:00 A | 2024-05-14 09:30 A |  | 100% |  |  |  |  | start no earlier than 2024-05-14 09:00 | Шуранов Ю | 0.5h | 0.5h |
| 2048 | 6.27.3 | купить 1/2 муфта для установки фитингов | 15min | 2025-03-26 09:00 A | 2025-03-26 09:15 A |  | 100% |  |  |  |  | start no earlier than 2025-03-26 08:00 | Шуранов Ю | 0.25h | 0.25h |
| 2049 | 6.27.4 | проверка фитингов | 1h | 2025-03-26 09:00 A | 2025-03-26 10:00 A |  | 100% |  |  |  |  | start no earlier than 2025-03-26 08:00 | Зорькин В | 1h | 1h |
| 2050 | 6.28 | **защита редутора шнеков при отказе маслянного насоса** | 20.12d? | 2023-08-02 09:00 | 2023-08-30 10:00 |  | 33% | 13.52d? | 2023-07-28 09:00 |  |  |  |  | 126.5h | 41.5h |
| 2051 | 6.28.1 | поиск фитинг для замера реле давления | 30min | 2023-07-28 09:00 A | 2023-07-28 09:30 A |  | 100% |  |  |  |  | start no earlier than 2023-07-28 09:00 | Тимофеев В | 0.5h | 0.5h |
| 2052 | 6.28.2 | заявка на фитинг | 1h | 2023-07-31 09:00 A | 2023-07-31 10:00 A | 2051 | 100% |  |  |  |  | start no earlier than 2023-07-31 09:00 | Лобанов И | 1h | 1h |
| 2053 | 6.28.3 | доставка | 5d | 2023-07-31 10:00 A | 2023-08-07 10:00 A | 2052 | 100% |  |  |  |  | start no earlier than 2023-07-31 09:00 | Малинина М | 40h | 40h |
| 2054 | 6.28.4 | заявка реле потока 1/2 или 3/4 | 1h | 2026-03-19 09:00 | 2026-03-19 10:00 |  |  |  |  | 244.97d | 0d | start no earlier than 2026-03-19 09:00 | Шуранов Ю | 1h |  |
| 2055 | 6.28.5 | доставка | 10d | 2026-03-19 10:00 | 2026-04-02 10:00 | 2054 |  |  |  | 244.97d | 1.88d | start no earlier than 2026-03-12 08:00 | Карабанов | 80h |  |
| 2056 | 6.28.6 | монтаж гидравлика | 2h | 2026-04-06 09:00 | 2026-04-06 11:00 | 2055 |  |  |  | 243.09d | 0d | start no earlier than 2026-04-06 09:00 | Тимофеев В | 2h |  |
| 2057 | 6.28.7 | монтаж электрика схема защиты + привязка к частотному приводу | 2h | 2026-04-06 11:00 | 2026-04-06 13:00 | 2056 |  |  |  | 243.09d |  | start no earlier than 2023-07-20 09:00 | Тимофеев В | 2h |  |
| 2058 | 6.29 | **подача сырья в упаковщки 1 цех** | 199.5d? | 2023-06-07 09:00 A | 2024-03-12 13:00 |  | 12% | 175.32d? |  | 782.09d |  |  |  | 37h | 8h |
| 2059 | 6.29.1 | испытание пневмотранспорта напорная магистраль | 4h | 2024-03-12 09:00 A | 2024-03-12 13:00 A |  | 100% |  |  |  |  | start no earlier than 2024-03-12 09:00 | Бобренок В; Некрасов А | 8h | 8h |
| 2060 | 6.29.2 | технологическая схема подачи продукта в упаковщики | 1d? | 2023-06-19 09:00 | 2023-06-19 18:00 |  |  |  |  | 972.59d |  | start no earlier than 2023-06-19 09:00 | Технолог | 8h |  |
| 2061 | 6.29.3 | поиск / запрорс цен на диверторы | 2h | 2023-06-07 09:00 | 2023-06-07 11:00 |  |  |  |  | 978.97d | 0d | start no earlier than 2023-06-07 09:00 | Домоводов К | 2h |  |
| 2062 | 6.29.4 | поиск / запрос цены на эжекторный приемник | 2h | 2023-06-07 11:00 | 2023-06-07 13:00 | 2061 |  |  |  | 978.97d | 0d | start no earlier than 2023-05-10 08:00 | Домоводов К | 2h |  |
| 2063 | 6.29.5 | расчет трассы | 2d | 2023-06-07 14:00 | 2023-06-09 13:00 | 2062 |  |  |  | 978.97d | 0d | start no earlier than 2023-05-10 08:00 | Домоводов К | 16h |  |
| 2064 | 6.29.6 | подбор приобритение вентилятора | 1h | 2023-06-09 14:00 | 2023-06-09 15:00 | 2063 |  |  |  | 978.97d |  | start no earlier than 2023-04-27 09:00 | Домоводов К | 1h |  |

| ID | WBS | Task | Type | Duration | Start | Finish | Predecessors | Complete | Remaining | Total slack | Free slack | Constraint | Resources | Work | Actual work |
| --- | --- | --- | --- | --- | --- | --- | --- | --- | --- | --- | --- | --- | --- | --- | --- |
| 2065 | 6.30 | **защита тэн печи при отключении вентиляторов** |  | 160.25d? | 2023-06-09 09:00 | 2024-01-19 11:00 |  |  |  | 819.34d |  |  |  | 66h |  |
| 2066 | 6.30.1 | устиановить защиту на пускателе 380 1 линия |  | 2h | 2024-01-19 09:00 | 2024-01-19 11:00 |  |  |  | 819.34d |  | start no earlier than 2024-01-19 09:00 | Тимофеев В | 2h |  |
| 2067 | 6.30.2 | составить схему защиты |  | 1d? | 2023-06-09 09:00 | 2023-06-09 18:00 |  |  |  | 971.59d | 0d | start no earlier than 2023-06-09 09:00 | Домоводов К | 8h |  |
| 2068 | 6.30.3 | заявка |  | 1d? | 2023-06-12 09:00 | 2023-06-12 18:00 | 2067 |  |  | 971.59d | 0d | start no earlier than 2023-04-25 09:00 | Домоводов К | 8h |  |
| 2069 | 6.30.4 | оплата поставка |  | 5d | 2023-06-13 09:00 | 2023-06-19 18:00 | 2068 |  |  | 971.59d | 5d | start no earlier than 2023-05-02 09:00 | Малинина М | 40h |  |
| 2070 | 6.30.5 | сборка и монтаж |  | 1d? | 2023-06-27 09:00 | 2023-06-27 18:00 | 2069 |  |  | 966.59d |  | start no earlier than 2023-06-27 09:00 | Бобренок В | 8h |  |
| 2071 | 6.31 | Настройка даты на пробнике, нужно приподнять на 3-5 мм (ждем решение технологов, информация поменялась, читать письмо от 01.09.2026) |  | 3h | 2026-09-11 09:00 | 2026-09-11 12:00 |  |  |  | 128.22d |  | start no earlier than 2026-09-11 09:00 | Тимофеев В | 3h |  |
| 2072 | 7 | **техника** |  | 631.03d? | 2024-05-14 09:00 A | 2026-10-13 09:15 |  | 98% | 14.74d? | 106.56d |  |  |  | 52.5h | 51.25h |
| 2073 | 7.1 | не заводится TRF, сломана шпилька колесо. Контроль приезда приемка работ |  | 1h | 2026-08-17 09:00 A | 2026-08-17 10:00 A |  | 100% |  |  |  | start no earlier than 2026-08-17 09:00 | Шуранов Ю | 1h | 1h |
| 2074 | 7.2 | **капремонт погрузчика коматсу короткий** |  | 44.03d | 2026-08-13 09:00 A | 2026-10-13 09:15 |  | 91% | 4d | 106.56d |  |  |  | 2.75h | 2.5h |
| 2075 | 7.2.1 | заявка получить цену в тракресурс |  | 15min | 2026-08-13 09:00 A | 2026-08-13 09:15 A |  | 100% |  |  |  | start no earlier than 2026-08-13 09:00 | Домоводов К | 0.25h | 0.25h |
| 2076 | 7.2.2 | заявка получить цену в форклифт |  | 15min | 2026-08-13 09:15 A | 2026-08-13 09:30 A | 2075 | 100% |  |  |  | start no earlier than 2026-08-13 09:00 | Домоводов К | 0.25h | 0.25h |
| 2077 | 7.2.3 | получить КП 2 | milestone | 0d | 2026-08-17 09:00 A | 2026-08-17 09:00 A |  | 100% |  |  |  | start no earlier than 2026-08-17 09:00 | Домоводов К |  |  |
| 2078 | 7.2.4 | решение о дате | milestone | 0d | 2026-09-07 09:00 A | 2026-09-07 09:00 A | 2076FS+1d | 100% |  |  |  | start no earlier than 2026-09-07 09:00 | Домоводов К |  |  |
| 2079 | 7.2.5 | орг отправить погрузчик в ремонт / составить акт |  | 2h | 2026-09-01 09:00 A | 2026-09-01 11:00 A | 2076, 2078FS+1d | 100% |  |  |  | start no earlier than 2026-08-26 09:00 | Шуранов Ю | 2h | 2h |
| 2080 | 7.2.6 | контроль сроков ремонта |  | 15min | 2026-10-13 09:00 | 2026-10-13 09:15 | 2079FS+20d |  |  | 106.56d |  | start no earlier than 2026-10-13 09:00 | Зорькин В | 0.25h |  |
| 2081 | 7.3 | заказать по комплекту воздушных фильтров для погрузчиков |  | 1h | 2026-08-18 09:00 A | 2026-08-18 10:00 A |  | 100% |  |  |  | start no earlier than 2026-08-18 09:00 | Шуранов Ю | 1h | 1h |
| 2082 | 7.4 | провкрить моточасы для проведения ТО |  | 1h | 2026-08-18 09:00 A | 2026-08-18 10:00 A |  | 100% |  |  |  | start no earlier than 2026-08-18 09:00 | Шуранов Ю | 1h | 1h |
| 2083 | 7.5 | не заводиться trf погрузчик, посмотреть подачу топлива |  | 1h | 2026-05-25 08:00 A | 2026-05-25 10:00 A |  | 100% |  |  |  | start no earlier than 2026-05-25 08:00 | Тимофеев В; Шуранов Ю | 2h | 2h |
| 2084 | 7.6 | ТО карбюратора ТРФ организовать |  | 1h | 2026-05-27 09:00 A | 2026-05-27 10:00 A |  | 100% |  |  |  | start no earlier than 2026-05-27 09:00 | Шуранов Ю | 1h | 1h |
| 2085 | 7.7 | ренгулировка ремня погрузчик желтый №209490 контроль |  | 1h | 2026-05-14 09:00 A | 2026-05-14 10:00 A |  | 100% |  |  |  | start no earlier than 2026-05-14 09:00 | Шуранов Ю | 1h | 1h |
| 2086 | 7.8 | ремонт генераторов -найти фирму |  | 1d? | 2026-05-07 09:00 A | 2026-05-07 18:00 A |  | 100% |  |  |  | start no earlier than 2026-05-07 09:00 | Шуранов Ю | 8h | 8h |
| 2087 | 7.9 | греется мотор сменный погрузчик (вероятно помпа). Орг визит |  | 15min | 2026-04-27 09:00 A | 2026-04-27 09:15 A |  | 100% |  |  |  | start no earlier than 2026-04-27 08:00 | Шуранов Ю | 0.25h | 0.25h |
| 2088 | 7.10 | установить вентиляторы на погрузчики |  | 2h | 2026-04-27 08:00 A | 2026-04-27 11:00 A |  | 100% |  |  |  | start no earlier than 2026-04-27 08:00 | Тимофеев В | 2h | 2h |
| 2089 | 7.11 | заменить шланги гидравлики погрузчик ТРФ |  | 1d? | 2026-04-21 09:00 A | 2026-04-21 18:00 A |  | 100% |  |  |  | start no earlier than 2026-04-21 09:00 |  |  |  |
| 2090 | 7.12 | пригласить тракресурс |  | 1h | 2026-04-21 09:00 A | 2026-04-21 10:00 A |  | 100% |  |  |  | start no earlier than 2026-04-21 09:00 | Шуранов Ю | 1h | 1h |
| 2091 | 7.13 | проварить ковш трактора в слесарке |  | 4h | 2026-03-24 08:00 A | 2026-03-24 13:00 A |  | 100% |  |  |  | start no earlier than 2026-03-24 08:00 | Бобренок В | 4h | 4h |
| 2092 | 7.14 | контроль доставки / приемка погрузчи коматсу |  | 1h | 2026-03-13 09:00 A | 2026-03-13 10:00 A |  | 100% |  |  |  | start no earlier than 2026-03-13 09:00 | Шуранов Ю | 1h | 1h |
| 2093 | 7.15 | ремонт штабелер 5 цех ролик и опрное колесо. Контроль |  | 30min | 2026-03-13 09:00 A | 2026-03-13 09:30 A |  | 100% |  |  |  | start no earlier than 2026-03-13 09:00 | Шуранов Ю | 0.5h | 0.5h |
| 2094 | 7.16 | ремонт ковш трактор |  | 6h | 2026-03-03 09:00 A | 2026-03-03 16:00 A |  | 100% |  |  |  | start no earlier than 2026-03-03 08:00 | Некрасов А; Труфанов А | 12h | 12h |

| ID | WBS | Task | Type | Duration | Start | Finish | Predecessors | Complete | Remaining | Total slack | Constraint | Resources | Work | Actual work |
| --- | --- | --- | --- | --- | --- | --- | --- | --- | --- | --- | --- | --- | --- | --- |
| 2095 | 7.17 | **ремонт цепи желтый вилочный + ручник** |  | 0.16d | 2025-07-28 09:00 A | 2025-07-28 10:15 A |  | 100% |  |  |  |  | 1.25h | 1.25h |
| 2096 | 7.17.1 | контроль даты визита |  | 15min | 2025-07-28 09:00 A | 2025-07-28 09:15 A |  | 100% |  |  | start no earlier than 2025-07-28 09:00 | Шуранов Ю | 0.25h | 0.25h |
| 2097 | 7.17.2 | ремонт контроль \принять работы |  | 1h | 2025-07-28 09:15 A | 2025-07-28 10:15 A | 2096 | 100% |  |  | start no earlier than 2025-07-23 09:00 | Шуранов Ю | 1h | 1h |
| 2098 | 7.18 | реморнт педаль газ на 3d принтере |  | 1h | 2025-07-23 09:00 A | 2025-07-23 10:00 A |  | 100% |  |  | start no earlier than 2025-07-23 09:00 | Шуранов Ю | 1h | 1h |
| 2099 | 7.19 | реморнт педаль газ на 3d принтере |  | 1h | 2026-09-01 09:00 | 2026-09-01 10:00 |  |  |  | 137.47d | start no earlier than 2026-09-01 09:00 | Домоводов К | 1h |  |
| 2100 | 7.20 | ТО штабелеры кайтымовская орг |  | 1h | 2025-07-23 09:00 A | 2025-07-23 10:00 A |  | 100% |  |  | start no earlier than 2025-07-23 09:00 | Шуранов Ю | 1h | 1h |
| 2101 | 7.21 | заявка доводчик двери желт коматсу |  | 15min | 2024-05-14 09:00 A | 2024-05-14 09:15 A |  | 100% |  |  | start no earlier than 2024-05-14 09:00 | Шуранов Ю | 0.25h | 0.25h |
| 2102 | 7.22 | **ошибка 02а22 штабелер PS16N 414** |  | 0.12d | 2024-05-14 09:00 A | 2024-05-14 10:00 A |  | 100% |  |  |  |  | 1h | 1h |
| 2103 | 7.22.1 | составить рекламацию / вызов специалистов |  | 1h | 2024-05-14 09:00 A | 2024-05-14 10:00 A |  | 100% |  |  | start no earlier than 2024-05-14 09:00 | Шуранов Ю | 1h | 1h |
| 2104 | 7.23 | **неисправна кнопка стоп штабелер 5 цех** |  | 0.19d | 2024-05-14 09:00 A | 2024-05-14 10:30 A |  | 100% |  |  |  |  | 1.5h | 1.5h |
| 2105 | 7.23.1 | орг работы по замене калеса штабелера |  | 1h | 2024-05-14 09:00 A | 2024-05-14 10:00 A |  | 100% |  |  | start no earlier than 2024-05-14 09:00 | Шуранов Ю | 1h | 1h |
| 2106 | 7.23.2 | орг забор штабелера на ремонт гидроциондра. Договор с сервисной компанией о дате, обменть штабелер с 2 цеха |  | 30min | 2024-05-14 10:00 A | 2024-05-14 10:30 A | 2105 | 100% |  |  | start no earlier than 2024-05-14 09:00 | Шуранов Ю | 0.5h | 0.5h |
| 2107 | 7.24 | **ремонт стеклоочиститель вилочного** |  | 0.5d | 2024-05-14 09:00 A | 2024-05-14 13:00 A |  | 100% |  |  |  |  | 5h | 5h |
| 2108 | 7.24.1 | осмотр механизма чтто сломалось |  | 4h | 2024-05-14 09:00 A | 2024-05-14 13:00 A |  | 100% |  |  | start no earlier than 2024-05-14 09:00 | Шуранов Ю | 4h | 4h |
| 2109 | 7.24.2 | заявка на покупку стеклоочист |  | 1h | 2024-05-14 09:00 A | 2024-05-14 10:00 A |  | 100% |  |  | start no earlier than 2024-05-14 09:00 | Шуранов Ю | 1h | 1h |
| 2110 | 7.25 | купить ремень на генератор |  | 2h | 2024-05-14 09:00 A | 2024-05-14 11:00 A |  | 100% |  |  | start no earlier than 2024-05-14 09:00 | Шуранов Ю | 2h | 2h |
| 2111 | 8 | **Лаборатория** |  | 0.06d | 2026-04-20 09:00 A | 2026-04-20 09:30 A |  | 100% |  |  |  |  | 1h | 1h |
| 2112 | 8.1 | Отнести старый бульбулятор в архив |  | 30min | 2026-04-20 09:00 A | 2026-04-20 09:30 A |  | 100% |  |  | start no earlier than 2026-04-20 09:00 | Тимофеев В | 0.5h | 0.5h |
| 2113 | 8.2 | Отнести короб от нового бульбулятора тоже в архив |  | 30min | 2026-04-20 09:00 A | 2026-04-20 09:30 A |  | 100% |  |  | start no earlier than 2026-04-20 09:00 | Тимофеев В | 0.5h | 0.5h |
| 2114 | 9 | **слесарное помещение** |  | 57d? | 2026-06-11 09:00 A | 2026-08-30 10:00 |  | 96% | 2.28d? | 138.59d |  |  | 13.5h | 12h |
| 2115 | 9.1 | отвезти паллет возле слесарки в синий | manual | 1h | 2026-08-30 09:00 A | 2026-08-30 10:00 A |  | 100% |  |  | start no earlier than 2026-08-30 09:00 | Бундин В | 1h | 1h |
| 2116 | 9.2 | заварить хомут от деко 5 ц. |  | 2h | 2026-07-02 09:00 A | 2026-07-02 11:00 A |  | 100% |  |  | start no earlier than 2026-07-02 09:00 | Тимофеев В | 2h | 2h |
| 2117 | 9.3 | доставить временно наш компрессор на 3 склад для обдува погрузчиков | manual | 1h | 2026-06-29 09:00 A | 2026-06-29 10:00 A |  | 100% |  |  | start no earlier than 2026-06-29 09:00 | Тимофеев В | 1h | 1h |
| 2118 | 9.4 | ремонт 2-х ручных запайщиков- запчасти на складе (нагревательные блоки, тены) | manual | 2h | 2026-06-27 09:00 A | 2026-06-27 11:00 A |  | 100% |  |  | start no earlier than 2026-06-27 09:00 | Дедов В | 2h | 2h |
| 2119 | 9.5 | оставляем порядок после своей смены в слесарке |  | 0.5h | 2026-06-12 09:00 | 2026-06-12 09:30 |  |  |  | 194.53d | start no earlier than 2026-06-12 09:00 | Дедов В; Бобренок В; Бундин В | 1.5h |  |
| 2120 | 9.6 | Проверка напольных весов, почему не работают, возможно отошел контакт |  | 2h | 2026-07-24 09:00 A | 2026-07-24 11:00 A |  | 100% |  |  | start no earlier than 2026-07-24 09:00 | Бундин В | 2h | 2h |
| 2121 | 9.7 | уборка |  | 0.25d? | 2026-06-11 09:00 A | 2026-06-11 11:00 A |  | 100% |  |  |  | Труфанов А | 2h | 2h |
| 2122 | 9.8 | проверить весы настольные (показывают вес больше, если получится калибровать) |  | 2h | 2026-06-11 09:00 A | 2026-06-11 11:00 A |  | 100% |  |  | start no earlier than 2026-06-11 09:00 | Дедов В | 2h | 2h |

| ID | WBS | Task | Type | Duration | Start | Finish | Predecessors | Complete | Remaining | Actual start | Actual finish | Total slack | Free slack | Constraint | Resources | Work | Actual work |
| --- | --- | --- | --- | --- | --- | --- | --- | --- | --- | --- | --- | --- | --- | --- | --- | --- | --- |
| 2123 | 10 | **ЗИП ремонт** |  | 628.11d? | 2024-05-09 09:00 A | 2026-10-05 09:55 |  | 53% | 292.18d? |  |  | 112.48d |  |  |  | 830.17h | 394.58h |
| 2124 | 10.1 | **ремонт редутор печи №?** |  | 14.31d | 2026-09-05 09:00 A | 2026-09-24 11:30 |  | 42% | 8.29d |  |  | 119.28d |  |  |  | 4.75h | 2h |
| 2125 | 10.1.1 | дефектовка редуктора печи 2 цех, лежит в слесарке |  | 2h | 2026-09-05 09:00 A | 2026-09-05 11:00 A |  | 100% |  |  |  |  |  | start no earlier than 2026-09-05 09:00 | Макаревич А | 2h | 2h |
| 2126 | 10.1.2 | возможно ли установить тавотницу на подшипник червяка? |  | 15min | 2026-09-10 09:00 | 2026-09-10 09:15 |  |  |  |  |  | 129.56d |  | start no earlier than 2026-09-10 09:00 | Тимофеев В | 0.25h |  |
| 2127 | 10.1.3 | заказ шестерни червя в ЗИП - отправить курьера |  | 15min | 2026-09-09 09:00 | 2026-09-09 09:15 | 2125 |  |  |  |  | 119.28d | 0d | start no earlier than 2026-09-09 09:00 | Зорькин В | 0.25h |  |
| 2128 | 10.1.4 | контроль изг шетесиерен |  | 15min | 2026-09-23 09:15 | 2026-09-23 09:30 | 2127FS+10d |  |  |  |  | 119.28d | 0d | start no earlier than 2026-09-08 08:00 | Зорькин В | 0.25h |  |
| 2129 | 10.1.5 | сборка редутор венец |  | 2h | 2026-09-24 09:30 | 2026-09-24 11:30 | 2128FS+1d |  |  |  |  | 119.28d |  | start no earlier than 2026-09-08 08:00 | Макаревич А | 2h |  |
| 2130 | 10.2 | ремонт оборотные сетки-поддоны от печи от 2ц |  | 2h | 2026-09-03 09:00 | 2026-09-03 11:00 |  |  |  |  |  | 135.34d |  | start no earlier than 2026-09-03 08:00 | Бобренок В | 2h |  |
| 2131 | 10.3 | подготовить электродную группу для 2 цеха |  | 3h | 2026-08-25 09:00 A | 2026-08-25 12:00 A |  | 100% |  |  |  |  |  | start no earlier than 2026-08-25 08:00 | Бундин В | 3h | 3h |
| 2132 | 10.4 | пепенос трубы нерж с 3ц на синий склад |  | 1h | 2026-08-24 09:00 | 2026-08-24 10:00 |  |  |  |  |  | 143.47d |  | start no earlier than 2026-08-24 09:00 | Некрасов А; Тимофеев В | 2h |  |
| 2133 | 10.5 | ремонт электрод парогенертора для 2ц |  | 4h | 2026-08-18 09:00 A | 2026-08-18 13:00 A |  | 100% |  |  |  |  |  | start no earlier than 2026-08-18 09:00 | Бобренок В | 4h | 4h |
| 2134 | 10.6 | перевоз батареи свинец от погрузчика на синий склад |  | 30min | 2026-08-12 09:00 A | 2026-08-12 09:30 A |  | 100% |  |  |  |  |  | start no earlier than 2026-08-12 09:00 | Макаревич А | 0.5h | 0.5h |
| 2135 | 10.7 | **заточка ножей** |  | 6.03d | 2026-08-13 09:00 A | 2026-08-21 09:15 A |  | 100% |  |  |  |  |  |  |  | 0.5h | 0.5h |
| 2136 | 10.7.1 | разместить ЛТ70 курьеру, отметиь журнал |  | 15min | 2026-08-13 09:00 A | 2026-08-13 09:15 A |  | 100% |  |  |  |  |  | start no earlier than 2026-08-13 09:00 | Зорькин В | 0.25h | 0.25h |
| 2137 | 10.7.2 | контроль, орг забрать |  | 15min | 2026-08-21 09:00 A | 2026-08-21 09:15 A |  | 100% |  |  |  |  |  | start no earlier than 2026-08-21 09:00 | Шуранов Ю | 0.25h | 0.25h |
| 2138 | 10.8 | **ножевой узел для 1ц** |  | 0.03d | 2026-08-13 09:00 A | 2026-08-13 09:15 A |  | 100% |  |  |  |  |  |  |  | 0.25h | 0.25h |
| 2139 | 10.8.1 | контроль поставки |  | 15min | 2026-08-13 09:00 A | 2026-08-13 09:15 A |  | 100% |  |  |  |  |  | start no earlier than 2026-08-13 09:00 | Домоводов К | 0.25h | 0.25h |
| 2140 | 10.9 | подготовить электроды для парогенератора цех 1 |  | 4h | 2026-08-05 08:00 A | 2026-08-05 13:00 A |  | 100% |  |  |  |  |  | start no earlier than 2026-08-05 08:00 | Макаревич А | 4h | 4h |
| 2141 | 10.10 | восстановить голову насоса гидрализата (в слесарке) подписать | manual | 2h | 2026-08-01 09:00 A | 2026-08-01 11:00 A |  | 100% |  |  |  |  |  | start no earlier than 2026-08-01 09:00 | Бундин В | 2h | 2h |
| 2142 | 10.11 | **восстановить сетку спечи (она в слесарке)** |  | 1d? | 2026-08-14 09:00 | 2026-08-14 18:00 |  | 100% |  | 2026-08-03 09:00 | 2026-08-03 18:00 |  |  |  |  | 8h | 8h |
| 2143 | 10.11.1 | заказать сверла по нерж. М5 и М6 |  | 1d? | 2026-08-03 09:00 A | 2026-08-03 18:00 A |  | 100% |  |  |  |  |  | start no earlier than 2026-08-03 08:00 | Шуранов Ю | 8h | 8h |
| 2144 | 10.12 | подготовить антиэлектроды по аналогии с нашими (все на складе) | manual | 5h | 2026-08-01 09:00 A | 2026-08-01 15:00 A |  | 100% |  |  |  |  |  | start no earlier than 2026-08-01 09:00 | Бундин В | 5h | 5h |
| 2145 | 10.13 | подготовить электродную группу для парогенератора |  | 3h | 2026-06-12 09:00 A | 2026-06-12 12:00 A |  | 100% |  |  |  |  |  | start no earlier than 2026-06-12 09:00 | Бундин В | 3h | 3h |
| 2146 | 10.14 | собрать 2 стула для ИТР |  | 2h | 2026-06-07 09:00 A | 2026-06-08 11:00 A |  | 100% |  |  |  |  |  | start no earlier than 2026-06-07 09:00 | Бобренок В | 2h | 2h |

| ID | WBS | Task | Type | Duration | Start | Finish | Predecessors | Complete | Constraint | Resources | Work | Actual work |
| --- | --- | --- | --- | --- | --- | --- | --- | --- | --- | --- | --- | --- |
| 2147 | 10.15 | **покрасить швейлеры возле слесарки(грунтовка, затем серый цвет)** |  | 0.25d | 2026-06-12 09:00 A | 2026-06-12 11:00 A |  | 100% |  | Бобренок В | 4h | 4h |
| 2148 | 10.15.1 | болгаркой убрать сварочные сопли и покрасить |  | 2h | 2026-06-12 09:00 A | 2026-06-12 11:00 A |  | 100% | start no earlier than 2026-06-12 09:00 | Бундин В | 2h | 2h |
| 2149 | 10.16 | подготовить фильтры для кондиционеров, замена фильтр ткани. Находятся в слесарке | manual | 2h | 2026-06-14 09:00 A | 2026-06-14 11:00 A |  | 100% | start no earlier than 2026-06-14 09:00 | Бундин В | 2h | 2h |
| 2150 | 10.17 | **заявка на фильеры от 02.06 1ц и 2ц** |  | 7.19d | 2026-06-02 09:00 A | 2026-06-11 10:30 A |  | 100% |  |  | 4.5h | 4.5h |
| 2151 | 10.17.1 | подготовить чертежи по ТЗ |  | 2h | 2026-06-02 09:00 A | 2026-06-02 11:00 A |  | 100% | start no earlier than 2026-06-02 09:00 | Домоводов К | 2h | 2h |
| 2152 | 10.17.2 | **партия 1** |  | 6.19d | 2026-06-03 09:00 A | 2026-06-11 10:30 A |  | 100% |  |  | 1.5h | 1.5h |
| 2153 | 10.17.2.1 | разместить токарю заварка фильер + шлифвка |  | 30min | 2026-06-03 09:00 A | 2026-06-03 09:30 A |  | 100% | start no earlier than 2026-06-03 08:00 | Шуранов Ю | 0.5h | 0.5h |
| 2154 | 10.17.2.2 | забрать заваренные / разместить на изготовление дюз |  | 30min | 2026-06-07 09:30 A | 2026-06-08 09:30 A | 2153FS+4d | 100% | start no earlier than 2026-06-03 08:00 | Шуранов Ю | 0.5h | 0.5h |
| 2155 | 10.17.2.3 | забрать готовые |  | 30min | 2026-06-11 10:00 A | 2026-06-11 10:30 A | 2154FS+4d | 100% | start no earlier than 2026-06-03 08:00 | Шуранов Ю | 0.5h | 0.5h |
| 2156 | 10.17.3 | **партия 2** |  | 3.12d | 2026-06-04 09:00 A | 2026-06-09 10:00 A |  | 100% |  |  | 1h | 1h |
| 2157 | 10.17.3.1 | разместить готовые балванки на прожиг отверстий |  | 30min | 2026-06-04 09:00 A | 2026-06-04 09:30 A |  | 100% | start no earlier than 2026-06-04 09:00 | Шуранов Ю | 0.5h | 0.5h |
| 2158 | 10.17.3.2 | забрать готовые |  | 30min | 2026-06-09 09:30 A | 2026-06-09 10:00 A | 2157FS+5d | 100% | start no earlier than 2026-06-03 08:00 | Шуранов Ю | 0.5h | 0.5h |
| 2159 | 10.18 | **зип тенов на печь 70 и 85 + шестерни питатель 70** |  | 30.06d | 2026-05-28 09:00 A | 2026-07-09 09:30 A |  | 100% |  |  | 0.75h | 0.75h |
| 2160 | 10.18.1 | запрос Настя, получить счет |  | 15min | 2026-05-28 09:00 A | 2026-05-28 09:15 A |  | 100% | start no earlier than 2026-05-28 09:00 | Домоводов К | 0.25h | 0.25h |
| 2161 | 10.18.2 | оплата |  | 15min | 2026-06-04 09:00 A | 2026-06-04 09:15 A | 2160FS+2d | 100% | start no earlier than 2026-06-04 09:00 | Домоводов К | 0.25h | 0.25h |
| 2162 | 10.18.3 | контроль поставки |  | 15min | 2026-07-09 09:15 A | 2026-07-09 09:30 A | 2161FS+30d | 100% | start no earlier than 2026-05-27 08:00 | Зорькин В | 0.25h | 0.25h |
| 2163 | 10.19 | подготовка к инвентаризации |  | 3h | 2026-05-26 09:00 A | 2026-05-26 12:00 A |  | 100% | start no earlier than 2026-05-26 09:00 | Бундин В | 3h | 3h |
| 2164 | 10.20 | посчитать и записать какие и какое количество автоматов и контакторов есть в слесарке |  | 1h | 2026-05-23 09:00 A | 2026-05-25 10:00 A |  | 100% | start no earlier than 2026-05-23 09:00 | Макаревич А | 1h | 1h |
| 2165 | 10.21 | передать весы (малые в 1 цех, большие в 5 цех) со слесарки |  | 1h | 2026-05-22 09:00 A | 2026-05-22 10:00 A |  | 100% | start no earlier than 2026-05-22 09:00 | Макаревич А | 1h | 1h |
| 2166 | 10.22 | проверить работает или нет двигатель с накопительного стола цех 1- Валентин покажет. |  | 1h | 2026-05-19 08:00 A | 2026-05-19 10:00 A |  | 100% | start no earlier than 2026-05-19 08:00 | Дедов В | 1h | 1h |
| 2167 | 10.23 | наточить ножи для ц.2 |  | 1h | 2026-05-19 09:00 A | 2026-05-19 10:00 A |  | 100% | start no earlier than 2026-05-19 09:00 | Тимофеев В | 1h | 1h |
| 2168 | 10.24 | подготовка к инвентаризации (посчитать какие и метраж кабеля в слесарке и желтом нашей половине) |  | 2h | 2026-05-24 09:00 A | 2026-05-25 11:00 A |  | 100% | start no earlier than 2026-05-24 09:00 | Дедов В | 2h | 2h |
| 2169 | 10.25 | подготовить рабочее место в слесарке для работы на кровле Олега |  | 1h | 2026-05-15 09:00 A | 2026-05-15 10:00 A |  | 100% | start no earlier than 2026-05-15 09:00 | Некрасов А; Труфанов А; Тимофеев В; Макаревич А | 4h | 4h |
| 2170 | 10.26 | **ремонт инсекютер с 1ц в слесарке. Повесить в цехе, зафиксировать в журнал мастера** |  | 0.12d | 2026-05-19 09:00 A | 2026-05-19 10:00 A |  | 100% |  |  | 1h | 1h |
| 2171 | 10.26.1 | взять светильник "антимуха" у Луговских и повесить на входе в корридор между раздевалками |  | 1h | 2026-05-19 09:00 A | 2026-05-19 10:00 A |  | 100% | start no earlier than 2026-05-19 09:00 | Дедов В | 1h | 1h |

| ID | WBS | Task | Duration | Start | Finish | Predecessors | Complete | Total slack | Free slack | Constraint | Resources | Work | Actual work |
| --- | --- | --- | --- | --- | --- | --- | --- | --- | --- | --- | --- | --- | --- |
| 2172 | 10.27 | **орг ремонт мотор с вращаюбщего барабана 1ц** | 0.16d | 2026-09-01 09:00 | 2026-09-01 10:15 |  |  | 137.44d |  |  |  | 1.25h |  |
| 2173 | 10.27.1 | подписать шильдик. На веревочке картонка / пластик | 15min | 2026-09-01 09:00 | 2026-09-01 09:15 |  |  | 137.44d | 0d | start no earlier than 2026-09-01 09:00 | Шуранов Ю | 0.25h |  |
| 2174 | 10.27.2 | орг ремонт | 1h | 2026-09-01 09:15 | 2026-09-01 10:15 | 2173 |  | 137.44d |  | start no earlier than 2026-09-01 09:00 | Шуранов Ю | 1h |  |
| 2175 | 10.28 | получить на складе резинки на двери прекондиционеров и выдать цех 1 и 2 | 1h | 2026-05-11 09:00 A | 2026-05-11 10:00 A |  | 100% |  |  | start no earlier than 2026-05-11 09:00 |  |  |  |
| 2176 | 10.29 | подготовить электродную группу для 1 цеха | 3h | 2026-05-11 09:00 A | 2026-05-11 12:00 A |  | 100% |  |  | start no earlier than 2026-05-11 09:00 | Бундин В | 3h | 3h |
| 2177 | 10.30 | на емкость нерж сделать сгон и поплавок | 4h | 2026-05-09 09:00 A | 2026-05-11 13:00 A |  | 100% |  |  | start no earlier than 2026-05-09 09:00 | Макаревич А | 4h | 4h |
| 2178 | 10.31 | отвезти термоодеяло с слесарки в синий склад | 1h | 2026-05-11 09:00 A | 2026-05-11 10:00 A |  | 100% |  |  | start no earlier than 2026-05-11 09:00 | Бундин В | 1h | 1h |
| 2179 | 10.32 | приехали дроселя для светильников, восстановить не рабочие | 4h | 2026-05-12 09:00 A | 2026-05-12 13:00 A |  | 100% |  |  | start no earlier than 2026-05-12 09:00 | Бундин В | 4h | 4h |
| 2180 | 10.33 | **орг ремонт мотор с конв №2 1 линия 1ц** | 0.25d | 2026-09-01 09:00 | 2026-09-01 11:00 |  |  | 137.34d |  |  |  | 2h |  |
| 2181 | 10.33.1 | подписать шильдик | 60min | 2026-09-01 09:00 | 2026-09-01 10:00 |  |  | 137.34d | 0d | start no earlier than 2026-09-01 09:00 | Шуранов Ю | 1h |  |
| 2182 | 10.33.2 | орг ремонт | 1h | 2026-09-01 10:00 | 2026-09-01 11:00 | 2181 |  | 137.34d |  | start no earlier than 2026-05-14 09:00 | Шуранов Ю | 1h |  |
| 2183 | 10.34 | сборка редуктор с шлюз питателя (фото в чате 14.05) | 3h | 2026-08-31 09:00 A | 2026-08-31 12:00 A |  | 100% |  |  | start no earlier than 2026-09-02 09:00 | Тимофеев В | 3h | 3h |
| 2184 | 10.35 | **собрать мотор-редуктор прекондиционера в слесарке (сальники на складе в лотках снизу подписаны)** | 0.12d | 2026-06-15 09:00 A | 2026-06-15 10:00 A |  | 100% |  |  |  | Бундин В | 3h | 3h |
| 2185 | 10.35.1 | транспортировка в синий склад | 1h | 2026-06-15 09:00 A | 2026-06-15 10:00 A |  | 100% |  |  | start no earlier than 2026-06-15 09:00 | Тимофеев В; Некрасов А | 2h | 2h |
| 2186 | 10.36 | **вскрыть листогиб** | 4.5d | 2026-05-09 09:00 A | 2026-05-15 13:00 A |  | 100% |  |  |  |  | 11.17h | 11.17h |
| 2187 | 10.36.1 | проверить работу листогиба (попробовать загнуть нерж) | 1h | 2026-05-09 09:00 A | 2026-05-11 10:00 A |  | 100% |  |  | start no earlier than 2026-05-09 09:00 | Макаревич А | 1h | 1h |
| 2188 | 10.36.2 | как удлинить ручки, предложение | 5min | 2026-05-13 09:00 A | 2026-05-13 09:05 A |  | 100% |  |  | start no earlier than 2026-05-13 09:00 | Труфанов А | 0.08h | 0.08h |
| 2189 | 10.36.3 | куда крепить стационарно. Синий склад /контейнер. Предложения. | 5min | 2026-05-13 09:00 A | 2026-05-13 09:05 A |  | 100% |  |  | start no earlier than 2026-05-13 09:00 | Труфанов А | 0.08h | 0.08h |
| 2190 | 10.36.4 | изготовить раму для крепления к полу | 4h | 2026-05-15 09:00 A | 2026-05-15 13:00 A |  | 100% |  |  | start no earlier than 2026-05-15 09:00 | Тимофеев В; Макаревич А | 8h | 8h |
| 2191 | 10.36.5 | усилить ручки | 1h | 2026-05-15 09:00 A | 2026-05-15 10:00 A |  | 100% |  |  | start no earlier than 2026-05-15 09:00 | Тимофеев В; Макаревич А | 2h | 2h |
| 2192 | 10.37 | вывезти питатель на синий склад | 1h | 2026-05-05 09:00 A | 2026-05-05 10:00 A |  | 100% |  |  | start no earlier than 2026-05-05 09:00 | Тимофеев В | 1h | 1h |
| 2193 | 10.38 | транспортировка гильз и шнеков на синий склад (уложить по приходам из китая) | 3h | 2026-05-05 09:00 A | 2026-05-05 12:00 A |  | 100% |  |  | start no earlier than 2026-05-05 09:00 | Тимофеев В; Бобренок В; Шуранов Ю | 9h | 9h |
| 2194 | 10.39 | найти на синем складе комплектующие для инвентаризации с Алексеем | 3h | 2026-05-05 09:00 A | 2026-05-05 12:00 A |  | 100% |  |  | start no earlier than 2026-05-05 08:00 | Шуранов Ю | 3h | 3h |
| 2195 | 10.40 | посчитать все валы от транспортеров, занести в таблицу учета | 4h | 2026-05-11 09:00 A | 2026-05-11 13:00 A |  | 100% |  |  | start no earlier than 2026-05-09 09:00 | Шуранов Ю | 4h | 4h |
| 2196 | 10.41 | посчитать сколько валов для транспортеров Теко в слесарке | 1h | 2026-04-30 09:00 A | 2026-04-30 10:00 A |  | 100% |  |  | start no earlier than 2026-04-30 09:00 | Шуранов Ю | 1h | 1h |
| 2197 | 10.42 | уборка остатки металл в контейнер | 1h | 2026-04-29 09:00 A | 2026-04-29 10:00 A |  | 100% |  |  | start no earlier than 2026-04-29 09:00 | Некрасов А; Тимофеев В; Труфанов А; Бундин В | 4h | 4h |

| ID | WBS | Task | Type | Duration | Start | Finish | Predecessors | Complete | Remaining | Total slack | Constraint | Resources | Work | Actual work |
| --- | --- | --- | --- | --- | --- | --- | --- | --- | --- | --- | --- | --- | --- | --- |
| 2198 | 10.43 | **ЗИП на ПГ антиэлектрод** |  | 33d? | 2026-05-13 09:00 A | 2026-06-26 18:00 A |  | 100% |  |  |  |  | 9.5h | 9.5h |
| 2199 | 10.43.1 | поиск в продаже труба нерж ф205 (проверить у Тимофеева диамтр) |  | 1h | 2026-05-13 09:00 A | 2026-05-13 10:00 A |  | 100% |  |  | start no earlier than 2026-05-13 09:00 | Зорькин В | 1h | 1h |
| 2200 | 10.43.2 | заявка |  | 15min | 2026-05-13 10:00 A | 2026-05-13 10:15 A | 2199 | 100% |  |  | start no earlier than 2026-04-24 08:00 | Зорькин В | 0.25h | 0.25h |
| 2201 | 10.43.3 | контроль доставки. Карабанов размещает у свои |  | 15min | 2026-05-19 09:00 A | 2026-05-19 09:15 A | 2200FS+5d | 100% |  |  | start no earlier than 2026-05-19 09:00 | Зорькин В | 0.25h | 0.25h |
| 2202 | 10.43.4 | монтаж |  | 1d? | 2026-06-26 09:00 A | 2026-06-26 18:00 A | 2201FS+2d | 100% |  |  | start no earlier than 2026-06-26 09:00 | Тимофеев В | 8h | 8h |
| 2203 | 10.44 | **ремонт шуруповерт макита** |  | 40d | 2026-04-19 09:00 A | 2026-06-14 11:00 A |  | 100% |  |  |  |  | 5h | 5h |
| 2204 | 10.44.1 | разобрать шуруповерт макита, выяснить с редуктором проблема или нет | manual | 2h | 2026-04-19 09:00 A | 2026-04-19 11:00 A |  | 100% |  |  | start no earlier than 2026-04-19 09:00 | Дедов В | 2h | 2h |
| 2205 | 10.44.2 | отправить фидео запрос о ремонте в сервисн центр |  | 1h | 2026-04-20 09:00 A | 2026-04-20 10:00 A |  | 100% |  |  | start no earlier than 2026-04-20 08:00 | Зорькин В | 1h | 1h |
| 2206 | 10.44.3 | конртроль / решение о списании | milestone | 0d | 2026-04-27 09:00 A | 2026-04-27 09:00 A |  | 100% |  |  | start no earlier than 2026-04-27 09:00 | Зорькин В |  |  |
| 2207 | 10.44.4 | попробовать собрать шуроповерт, находится в слесарке | manual | 2h | 2026-06-14 09:00 A | 2026-06-14 11:00 A |  | 100% |  |  | start no earlier than 2026-06-14 09:00 | Бундин В | 2h | 2h |
| 2208 | 10.45 | взять винты пота м6х25 и перекрутить на сетке для печи | manual | 1h | 2026-04-20 09:00 A | 2026-04-20 10:00 A |  | 100% |  |  | start no earlier than 2026-04-20 09:00 | Тимофеев В | 1h | 1h |
| 2209 | 10.46 | **шестерня питателя LT85** |  | 7.01d | 2026-04-08 09:00 A | 2026-04-17 09:05 |  | 94% | 0.44d | 234.58d |  |  | 1.33h | 1.25h |
| 2210 | 10.46.1 | **1. заказ с китая** |  | 7.01d | 2026-04-08 09:00 A | 2026-04-17 09:05 |  | 75% | 1.75d | 234.58d |  |  | 0.33h | 0.25h |
| 2211 | 10.46.1.1 | запрос / контроль |  | 15min | 2026-04-08 09:00 A | 2026-04-08 09:15 A |  | 100% |  |  | start no earlier than 2026-04-08 09:00 | Шуранов Ю | 0.25h | 0.25h |
| 2212 | 10.46.1.2 | контроль |  | 5min | 2026-04-17 09:00 | 2026-04-17 09:05 |  |  |  | 234.58d | start no earlier than 2026-04-17 09:00 | Шуранов Ю | 0.08h |  |
| 2213 | 10.46.2 | **2. изготовление по образцу** |  | 5.03d | 2026-04-08 09:00 A | 2026-04-15 09:15 A |  | 100% |  |  |  |  | 1h | 1h |
| 2214 | 10.46.2.1 | выяснить возможносить изготвления |  | 30min | 2026-04-08 09:00 A | 2026-04-08 09:30 A |  | 100% |  |  | start no earlier than 2026-04-08 09:00 | Зорькин В | 0.5h | 0.5h |
| 2215 | 10.46.2.2 | отправить курьера |  | 15min | 2026-04-08 09:30 A | 2026-04-08 09:45 A | 2214 | 100% |  |  | start no earlier than 2026-04-06 09:00 | Зорькин В | 0.25h | 0.25h |
| 2216 | 10.46.2.3 | контроль |  | 15min | 2026-04-15 09:00 A | 2026-04-15 09:15 A | 2215 | 100% |  |  | start no earlier than 2026-04-15 09:00 | Зорькин В | 0.25h | 0.25h |
| 2217 | 10.47 | проверить наличие лент в ЗИП перед утилизаций б/у |  | 2h | 2026-03-31 09:00 A | 2026-03-31 11:00 A |  | 100% |  |  | start no earlier than 2026-03-31 08:00 | Зорькин В | 2h | 2h |
| 2218 | 10.48 | соединители лент траснспортеры линий - проверить остаток |  | 30min | 2026-08-31 09:00 | 2026-08-31 09:30 |  |  |  | 138.53d | start no earlier than 2026-08-31 09:00 | Зорькин В | 0.5h |  |
| 2219 | 10.49 | **освободить место на син склад / перенос в новый контейнер** |  | 1.5d | 2026-03-30 08:00 A | 2026-03-31 13:00 A |  | 100% |  |  |  |  | 38h | 38h |
| 2220 | 10.49.1 | перенести метал, норию в контейнер с синего склада |  | 4h | 2026-03-30 09:00 A | 2026-03-30 13:00 A |  | 100% |  |  | start no earlier than 2026-03-30 09:00 | Бобренок В; Некрасов А; Тимофеев В | 12h | 12h |
| 2221 | 10.49.2 | сборка стеллаж хранения металла |  | 4h | 2026-03-30 08:00 A | 2026-03-30 13:00 A |  | 100% |  |  | start no earlier than 2026-03-30 08:00 | Некрасов А; Труфанов А; Тимофеев В | 10h | 10h |
| 2222 | 10.49.3 | монтаж стеллаж хранения металла |  | 4h | 2026-03-31 09:00 A | 2026-03-31 13:00 A |  | 100% |  |  | start no earlier than 2026-03-31 09:00 | Некрасов А; Труфанов А | 8h | 8h |
| 2223 | 10.49.4 | загрузка мусор в трактор дерево, отход |  | 4h | 2026-03-31 09:00 A | 2026-03-31 13:00 A |  | 100% |  |  | start no earlier than 2026-03-31 08:00 | Некрасов А; Труфанов А | 8h | 8h |
| 2224 | 10.50 | заточка ножей 2ц орг |  | 30min | 2026-03-25 09:00 A | 2026-03-25 09:30 A |  | 100% |  |  | start no earlier than 2026-03-25 08:00 | Зорькин В | 0.5h | 0.5h |
| 2225 | 10.51 | ремонт водонагреватель орг |  | 1h | 2026-03-23 09:00 A | 2026-03-23 10:00 A |  | 100% |  |  | start no earlier than 2026-03-23 09:00 | Шуранов Ю | 1h | 1h |
| 2226 | 10.52 | ремонт парогенератор орг |  | 1h | 2026-03-23 09:00 A | 2026-03-23 10:00 A |  | 100% |  |  | start no earlier than 2026-03-23 09:00 | Шуранов Ю | 1h | 1h |

| ID | WBS | Task | Type | Duration | Start | Finish | Predecessors | Complete | Remaining | Total slack | Free slack | Constraint | Resources | Work | Actual work |
| --- | --- | --- | --- | --- | --- | --- | --- | --- | --- | --- | --- | --- | --- | --- | --- |
| 2227 | 10.53 | **стеллаж для организации хранения металла** |  | 11.5d | 2026-03-23 09:00 A | 2026-04-07 13:00 A |  | 100% |  |  |  |  |  | 84h | 84h |
| 2228 | 10.53.1 | составить эскиз / расчет заявка металл |  | 4h | 2026-03-23 09:00 A | 2026-03-23 13:00 A |  | 100% |  |  |  | start no earlier than 2026-03-23 09:00 | Зорькин В | 4h | 4h |
| 2229 | 10.53.2 | доставка |  | 10d | 2026-03-23 14:00 A | 2026-04-06 13:00 A | 2228 | 100% |  |  |  | start no earlier than 2026-03-20 08:00 | Карабанов | 80h | 80h |
| 2230 | 10.53.3 | сборка |  | 2d | 2026-04-03 14:00 A | 2026-04-07 13:00 A | 2229 | 100% |  |  |  | start no earlier than 2026-03-20 08:00 |  |  |  |
| 2231 | 10.54 | установить крыльчатку мотор-редуктор смесителя / перенос в контейнер |  | 30min | 2026-08-31 09:00 A | 2026-08-31 09:30 A |  | 100% |  |  |  | start no earlier than 2026-09-02 09:00 | Тимофеев В | 0.5h | 0.5h |
| 2232 | 10.55 | **изготовить ножевой узел для 2ц** |  | 10.02d | 2026-03-17 09:00 A | 2026-03-31 09:10 A |  | 100% |  |  |  |  |  | 80.33h | 80.33h |
| 2233 | 10.55.1 | получить счет |  | 10min | 2026-03-17 09:00 A | 2026-03-17 09:10 A |  | 100% |  |  |  | start no earlier than 2026-03-17 08:00 | Домоводов К | 0.17h | 0.17h |
| 2234 | 10.55.2 | изготовление |  | 10d | 2026-03-17 09:10 A | 2026-03-31 09:10 A | 2233 | 100% |  |  |  | start no earlier than 2026-03-17 08:00 | Фрезер ЧПУ | 80h | 80h |
| 2235 | 10.55.3 | контроль |  | 5min | 2026-03-28 09:10 A | 2026-03-30 09:05 A | 2234FS+1d | 100% |  |  |  | start no earlier than 2026-03-17 08:00 | Зорькин В | 0.08h | 0.08h |
| 2236 | 10.55.4 | орг доставка |  | 5min | 2026-03-28 09:15 A | 2026-03-30 09:05 A | 2235 | 100% |  |  |  | start no earlier than 2026-03-17 08:00 | Зорькин В | 0.08h | 0.08h |
| 2237 | 10.56 | сгоревшие двигатели унести в контенер в коробку |  | 1h | 2026-03-15 09:00 A | 2026-03-16 10:00 A |  | 100% |  |  |  | start no earlier than 2026-03-15 09:00 | Бобренок В | 1h | 1h |
| 2238 | 10.57 | ремонт головы насоса нгш57 гидродлизат 2шт |  | 2h | 2026-03-16 09:00 A | 2026-03-16 11:00 A |  | 100% |  |  |  | start no earlier than 2026-03-16 09:00 | Труфанов А | 2h | 2h |
| 2239 | 10.58 | изготовить ножевой узел для 2ц | milestone | 0d | 2026-03-16 09:00 A | 2026-03-16 09:00 A |  | 100% |  |  |  | start no earlier than 2026-03-16 09:00 | Домоводов К |  |  |
| 2240 | 10.59 | по всем цехам обход, проверка обратный клпан бойлеры / настройка температуры . Составить список под замену |  | 2h | 2026-09-01 09:00 | 2026-09-01 11:00 |  |  |  | 137.34d |  | start no earlier than 2026-09-01 09:00 | Дедов В | 2h |  |
| 2241 | 10.60 | **ремонт датчик расхода пара с линия 3** |  | 25.11d | 2026-09-01 09:00 | 2026-10-05 09:55 |  |  |  | 112.48d |  |  |  | 0.92h |  |
| 2242 | 10.60.1 | заявка взип |  | 15min | 2026-09-01 09:00 | 2026-09-01 09:15 |  |  |  | 112.48d | 0d | start no earlier than 2026-09-01 09:00 | Шуранов Ю | 0.25h |  |
| 2243 | 10.60.2 | орг отправить в ремонт |  | 20min | 2026-09-01 09:15 | 2026-09-01 09:35 | 2242 |  |  | 112.48d | 0d | start no earlier than 2026-03-12 08:00 | Шуранов Ю | 0.33h |  |
| 2244 | 10.60.3 | контроль | milestone | 0d | 2026-09-28 09:35 | 2026-09-28 09:35 | 2243FS+20d |  |  | 112.48d | 0d | start no earlier than 2026-04-17 09:00 | Шуранов Ю |  |  |
| 2245 | 10.60.4 | орг забрать сремонта |  | 20min | 2026-10-05 09:35 | 2026-10-05 09:55 | 2244FS+5d |  |  | 112.48d |  | start no earlier than 2026-03-12 08:00 | Шуранов Ю | 0.33h |  |
| 2246 | 10.61 | реставрация вал с охладителя. Полполнить расход ЗИП |  | 1h | 2026-09-01 09:00 | 2026-09-01 10:00 |  |  |  | 137.47d |  | start no earlier than 2026-09-01 09:00 | Шуранов Ю | 1h |  |
| 2247 | 10.62 | ремонт датчик наличия сырья / собрать из 2х один |  | 3h | 2026-09-01 09:00 | 2026-09-01 12:00 |  |  |  | 137.22d |  | start no earlier than 2026-09-01 09:00 | Дедов В | 3h |  |
| 2248 | 10.63 | **ремонт бойлер с 5ц гардероб** |  | 7.04d | 2026-03-13 09:00 A | 2026-03-24 09:20 |  | 57% | 3.02d | 252.55d |  |  |  | 0.58h | 0.33h |
| 2249 | 10.63.1 | орг отправить в ремонт |  | 15min | 2026-03-13 09:00 A | 2026-03-13 09:15 A |  | 100% |  |  |  | start no earlier than 2026-03-13 09:00 | Шуранов Ю | 0.25h | 0.25h |
| 2250 | 10.63.2 | контроль доставка / оплата |  | 5min | 2026-03-23 09:00 A | 2026-03-23 09:05 A | 2249FS+5d | 100% |  |  |  | start no earlier than 2026-03-23 09:00 | Шуранов Ю | 0.08h | 0.08h |
| 2251 | 10.63.3 | орг доставка |  | 15min | 2026-03-24 09:05 | 2026-03-24 09:20 | 2250FS+1d |  |  | 252.55d |  | start no earlier than 2026-03-12 08:00 | Шуранов Ю | 0.25h |  |
| 2252 | 10.64 | диагностика двигателей и редукторов в слесарке. Подробности Шуранов по тлф |  | 2h | 2026-09-01 09:00 A | 2026-09-01 11:00 A |  | 100% |  |  |  | start no earlier than 2026-09-02 09:00 | Бундин В | 2h | 2h |
| 2253 | 10.65 | которые в коробке с них снять крыльчатки |  | 2h | 2026-09-01 09:00 A | 2026-09-01 11:00 A | 2252 | 100% |  |  |  | start no earlier than 2026-03-06 08:00 | Бундин В | 2h | 2h |
| 2254 | 10.66 | ножевой узел 2ц заменаить подшипники. У мастера |  | 1h | 2026-03-04 08:00 A | 2026-03-04 10:00 A |  | 100% |  |  |  | start no earlier than 2026-03-04 08:00 | Дедов В | 1h | 1h |

| ID | WBS | Task | Duration | Start | Finish | Predecessors | Complete | Remaining | Total slack | Free slack | Constraint | Resources | Work | Actual work |
| --- | --- | --- | --- | --- | --- | --- | --- | --- | --- | --- | --- | --- | --- | --- |
| 2255 | 10.67 | **ремонт электродов ПГ в ЗИП** | 2.75d | 2026-03-08 09:00 A | 2026-03-11 16:00 A |  | 100% |  |  |  |  |  | 12h | 12h |
| 2256 | 10.67.1 | 2шт - шт | 6h | 2026-03-08 09:00 A | 2026-03-09 16:00 A |  | 100% |  |  |  | start no earlier than 2026-03-08 09:00 | Макаревич А | 6h | 6h |
| 2257 | 10.67.2 | 1шт = 2ц | 6h | 2026-03-11 09:00 A | 2026-03-11 16:00 A |  | 100% |  |  |  | start no earlier than 2026-03-11 09:00 | Макаревич А | 6h | 6h |
| 2258 | 10.68 | промер изношенных шнеков, подготовить таблицу и инструкцию для делегировать | 1h | 2026-03-03 09:00 A | 2026-03-03 10:00 A |  | 100% |  |  |  | start no earlier than 2026-03-03 09:00 | Зорькин В | 1h | 1h |
| 2259 | 10.69 | заказ нутромер утерянные детали | 30min | 2026-03-06 09:00 A | 2026-03-06 09:30 A |  | 100% |  |  |  | start no earlier than 2026-03-06 09:00 | Зорькин В | 0.5h | 0.5h |
| 2260 | 10.70 | **стопорнное кольцо для валов шнеков** | 0.09d | 2026-03-02 09:00 A | 2026-03-02 09:45 A |  | 100% |  |  |  |  |  | 0.75h | 0.75h |
| 2261 | 10.70.1 | заявка снабжение | 15min | 2026-03-02 09:00 A | 2026-03-02 09:15 A |  | 100% |  |  |  | start no earlier than 2026-03-02 09:00 | Зорькин В | 0.25h | 0.25h |
| 2262 | 10.70.2 | заявка токарь | 15min | 2026-03-02 09:15 A | 2026-03-02 09:30 A | 2261 | 100% |  |  |  | start no earlier than 2026-02-27 08:00 | Зорькин В | 0.25h | 0.25h |
| 2263 | 10.70.3 | заявка кита | 15min | 2026-03-02 09:30 A | 2026-03-02 09:45 A | 2262 | 100% |  |  |  | start no earlier than 2026-02-27 08:00 | Зорькин В | 0.25h | 0.25h |
| 2264 | 10.71 | **быстрая замена шнеков - кондуктор для хранения и перемещения подготвленного ствола** | 3.25d | 2026-09-21 09:00 | 2026-09-24 11:00 |  |  |  | 119.34d |  |  |  | 20h |  |
| 2265 | 10.71.1 | проект кондуктора и траверсы перемещения ствола штабелером | 2h | 2026-09-21 09:00 | 2026-09-21 11:00 |  |  |  | 119.34d | 0d | start no earlier than 2026-09-21 09:00 | Тимофеев В; Бундин В | 4h |  |
| 2266 | 10.71.2 | сборка | 2d | 2026-09-22 11:00 | 2026-09-24 11:00 | 2265FS+1d |  |  | 119.34d |  | start no earlier than 2026-04-16 09:00 | Бобренок В | 16h |  |
| 2267 | 10.72 | редуктор печи №7 установить подшипник 30207 | 2h | 2026-09-01 09:00 | 2026-09-01 11:00 |  |  |  | 137.34d |  | start no earlier than 2026-09-01 09:00 | Дедов В | 2h |  |
| 2268 | 10.73 | **заявка шкив на вал прекондиционер + разрезная вставка + спец шпильки** | 0.12d | 2025-08-04 09:00 | 2025-08-04 10:00 |  |  |  | 418.47d |  |  |  | 1h |  |
| 2269 | 10.73.1 | подбор шкив / заявка | 1h | 2025-08-04 09:00 | 2025-08-04 10:00 |  |  |  | 418.47d |  | start no earlier than 2025-08-04 09:00 | Зорькин В | 1h |  |
| 2270 | 10.74 | **ремонт вал прекондиционер** | 12.02d | 2025-07-31 09:00 A | 2025-08-18 09:10 |  | 86% | 1.72d | 408.57d |  |  |  | 1.17h | 1h |
| 2271 | 10.74.1 | подготовить к отправке очистить | 1h | 2025-07-31 09:00 A | 2025-07-31 10:00 A |  | 100% |  |  |  | start no earlier than 2025-07-31 09:00 | Пинчук А | 1h | 1h |
| 2272 | 10.74.2 | орг курьера / отправить | 5min | 2025-08-04 09:00 | 2025-08-04 09:05 | 2271 |  |  | 408.57d | 0d | start no earlier than 2025-08-04 09:00 | Зорькин В | 0.08h |  |
| 2273 | 10.74.3 | контроль / забрать | 5min | 2025-08-18 09:05 | 2025-08-18 09:10 | 2272FS+10d |  |  | 408.57d |  | start no earlier than 2025-07-31 09:00 | Зорькин В | 0.08h |  |
| 2274 | 10.75 | **ремонт вал в барабана жир 2л** | 152.01d | 2025-08-04 09:00 A | 2026-03-04 09:05 |  | 50% | 76.01d | 266.58d |  |  |  | 0.17h | 0.08h |
| 2275 | 10.75.1 | отправить на ремонт | 5min | 2025-08-04 09:00 | 2025-08-04 09:05 |  |  |  | 418.58d |  | start no earlier than 2025-08-04 09:00 | Зорькин В | 0.08h |  |
| 2276 | 10.75.2 | контроль забрать | 5min | 2026-03-04 09:00 A | 2026-03-04 09:05 A | 2275FS+10d | 100% |  |  |  | start no earlier than 2026-03-04 09:00 | Зорькин В | 0.08h | 0.08h |
| 2277 | 10.76 | **заявка эл мотор шибера в ЗИП** | 0.01d | 2025-02-19 09:00 | 2025-02-19 09:05 |  |  |  | 536.58d |  |  |  | 0.08h |  |
| 2278 | 10.76.1 | контроль | 5min | 2025-02-19 09:00 | 2025-02-19 09:05 |  |  |  | 536.58d |  | start no earlier than 2025-02-19 09:00 | Шуранов Ю | 0.08h |  |
| 2279 | 10.77 | составить таблицу ЗИП наличия редукторов / где используется | 4h | 2025-02-21 09:00 | 2025-02-21 13:00 |  |  |  | 534.09d |  | start no earlier than 2025-02-21 09:00 | Тимофеев В; Шуранов Ю | 8h |  |
| 2280 | 10.78 | составить таблицу соответсвия номеров подшипников - где используется | 4h | 2025-02-21 09:00 | 2025-02-21 13:00 |  |  |  | 534.09d |  | start no earlier than 2025-02-21 09:00 | Тимофеев В; Шуранов Ю | 8h |  |
| 2281 | 10.79 | ремонт болгарки замена кнопки | 1h | 2024-10-21 09:00 A | 2024-10-21 10:00 A |  | 100% |  |  |  | start no earlier than 2024-10-21 09:00 | Зорькин В | 1h | 1h |
| 2282 | 10.80 | сборка редуктор LT70 замена пружинные шайбы | 1d? | 2024-09-29 09:00 A | 2024-09-30 18:00 A |  | 100% |  |  |  | start no earlier than 2024-09-29 09:00 | Макаревич А | 8h | 8h |

| ID | WBS | Task | Duration | Start | Finish | Complete | Constraint | Resources | Work | Actual work |
| --- | --- | --- | --- | --- | --- | --- | --- | --- | --- | --- |
| 2283 | 10.81 | **прорверить наличие остатков** | 0.01d | 2024-09-25 08:00 A | 2024-09-25 09:05 A | 100% |  |  | 2h | 2h |
| 2284 | 10.81.1 | Манжет (армированная 2,2-75*100*10 ГОСТ 8752-79) | 5min | 2024-09-25 08:00 A | 2024-09-25 09:05 A | 100% | start no earlier than 2024-09-25 08:00 | Дедов В | 0.08h | 0.08h |
| 2285 | 10.81.2 | Манжет (армированная 1,2-80*105*10) | 5min | 2024-09-25 08:00 A | 2024-09-25 09:05 A | 100% | start no earlier than 2024-09-25 08:00 | Дедов В | 0.08h | 0.08h |
| 2286 | 10.81.3 | Манжет (армированная 2,2-80*105*10 ГОСТ 8752-79) | 5min | 2024-09-25 08:00 A | 2024-09-25 09:05 A | 100% | start no earlier than 2024-09-25 08:00 | Дедов В | 0.08h | 0.08h |
| 2287 | 10.81.4 | Манжет (армированная 2,2-55*80*10 ГОСТ 8752-79) | 5min | 2024-09-25 08:00 A | 2024-09-25 09:05 A | 100% | start no earlier than 2024-09-25 08:00 | Дедов В | 0.08h | 0.08h |
| 2288 | 10.81.5 | Масло (Для швейных машин) | 0.01d | 2024-09-25 08:00 A | 2024-09-25 09:05 A | 100% | start no earlier than 2024-09-25 08:00 | Дедов В | 0.08h | 0.08h |
| 2289 | 10.81.6 | Наконечник (ТМЛ 16-10-6 медный луженый) | 0.01d | 2024-09-25 08:00 A | 2024-09-25 09:05 A | 100% | start no earlier than 2024-09-25 08:00 | Дедов В | 0.08h | 0.08h |
| 2290 | 10.81.7 | Наконечник (ТМЛ 10-8-5 медный луженый) | 0.01d | 2024-09-25 08:00 A | 2024-09-25 09:05 A | 100% | start no earlier than 2024-09-25 08:00 | Дедов В | 0.08h | 0.08h |
| 2291 | 10.81.8 | Подшипник (56006-2RS (180106)SKF (30*5*10)) | 0.01d | 2024-09-25 08:00 A | 2024-09-25 09:05 A | 100% | start no earlier than 2024-09-25 08:00 | Дедов В | 0.08h | 0.08h |
| 2292 | 10.81.9 | Подшипник (51410/ART) | 0.01d | 2024-09-25 08:00 A | 2024-09-25 09:05 A | 100% | start no earlier than 2024-09-25 08:00 | Дедов В | 0.08h | 0.08h |
| 2293 | 10.81.10 | Подшипник (UCF 208 (40)) | 0.01d | 2024-09-25 08:00 A | 2024-09-25 09:05 A | 100% | start no earlier than 2024-09-25 08:00 | Дедов В | 0.08h | 0.08h |
| 2294 | 10.81.11 | Подшипник (6203.LLU/2ASU1/NTN) | 0.01d | 2024-09-25 08:00 A | 2024-09-25 09:05 A | 100% | start no earlier than 2024-09-25 08:00 | Дедов В | 0.08h | 0.08h |
| 2295 | 10.81.12 | Подшипник (22212(53512) SKF (60*110*28)) | 0.01d | 2024-09-25 08:00 A | 2024-09-25 09:05 A | 100% | start no earlier than 2024-09-25 08:00 | Дедов В | 0.08h | 0.08h |
| 2296 | 10.81.13 | Подшипник (UC 204 (480204) (20х47х17/31)) | 0.01d | 2024-09-25 08:00 A | 2024-09-25 09:05 A | 100% | start no earlier than 2024-09-25 08:00 | Дедов В | 0.08h | 0.08h |
| 2297 | 10.81.14 | Подшипник (6906-2RS (30*47*9)) | 0.01d | 2024-09-25 08:00 A | 2024-09-25 09:05 A | 100% | start no earlier than 2024-09-25 08:00 | Дедов В | 0.08h | 0.08h |
| 2298 | 10.81.15 | Подшипник (6003-2RS (180103) (17*35*10)) | 0.01d | 2024-09-25 08:00 A | 2024-09-25 09:05 A | 100% | start no earlier than 2024-09-25 08:00 | Дедов В | 0.08h | 0.08h |
| 2299 | 10.81.16 | Подшипник (6203-2RS (180203) (17*40*12)) | 0.01d | 2024-09-25 08:00 A | 2024-09-25 09:05 A | 100% | start no earlier than 2024-09-25 08:00 | Дедов В | 0.08h | 0.08h |
| 2300 | 10.81.17 | Подшипник (6002 2RS, SKF (180102, 15*32*9)) | 0.01d | 2024-09-25 08:00 A | 2024-09-25 09:05 A | 100% | start no earlier than 2024-09-25 08:00 | Дедов В | 0.08h | 0.08h |
| 2301 | 10.81.18 | Провод ПЩ-4 | 0.01d | 2024-09-25 08:00 A | 2024-09-25 09:05 A | 100% | start no earlier than 2024-09-25 08:00 | Дедов В | 0.08h | 0.08h |
| 2302 | 10.81.19 | Ремень клиновый А-1400 | 0.01d | 2024-09-25 08:00 A | 2024-09-25 09:05 A | 100% | start no earlier than 2024-09-25 08:00 | Дедов В | 0.08h | 0.08h |
| 2303 | 10.81.20 | Ремень клиновый В (Б)-1320 | 0.01d | 2024-09-25 08:00 A | 2024-09-25 09:05 A | 100% | start no earlier than 2024-09-25 08:00 | Дедов В | 0.08h | 0.08h |
| 2304 | 10.81.21 | Реле (тепловое РТИ-3353 23-32А) | 0.01d | 2024-09-25 08:00 A | 2024-09-25 09:05 A | 100% | start no earlier than 2024-09-25 08:00 | Дедов В | 0.08h | 0.08h |
| 2305 | 10.81.22 | Шланг (для дозирующих насосов черного цвета 6,4х9,6 мм) | 0.01d | 2024-09-25 08:00 A | 2024-09-25 09:05 A | 100% | start no earlier than 2024-09-25 08:00 | Дедов В | 0.08h | 0.08h |
| 2306 | 10.81.23 | Труба гофрированная (ПВХ 25мм с протяжкой легкая серая) | 0.01d | 2024-09-25 08:00 A | 2024-09-25 09:05 A | 100% | start no earlier than 2024-09-25 08:00 | Дедов В | 0.08h | 0.08h |
| 2307 | 10.81.24 | Шпонка призматическая (DIN 6885 A 18х11х 90мм) | 0.01d | 2024-09-25 08:00 A | 2024-09-25 09:05 A | 100% | start no earlier than 2024-09-25 08:00 | Дедов В | 0.08h | 0.08h |

| ID | WBS | Task | Duration | Start | Finish | Predecessors | Complete | Remaining | Total slack | Free slack | Constraint | Resources | Work | Actual work |
| --- | --- | --- | --- | --- | --- | --- | --- | --- | --- | --- | --- | --- | --- | --- |
| 2308 | 10.82 | **прорверить остатки подшипников** | 0.01d | 2024-09-10 08:00 A | 2024-09-10 09:05 A |  | 100% |  |  |  |  |  | 1.17h | 1.17h |
| 2309 | 10.82.1 | 180101АС17/6 ГПЗ | 5min | 2024-09-10 08:00 A | 2024-09-10 09:05 A |  | 100% |  |  |  | start no earlier than 2024-09-10 08:00 | Дедов В | 0.08h | 0.08h |
| 2310 | 10.82.2 | 180202 (6202 2RS) (15*35*11) SKF | 0.01d | 2024-09-10 08:00 A | 2024-09-10 09:05 A |  | 100% |  |  |  | start no earlier than 2024-09-10 08:00 | Дедов В | 0.08h | 0.08h |
| 2311 | 10.82.3 | 180206 (6206 2RS) (30*62*16) HIKI | 0.01d | 2024-09-10 08:00 A | 2024-09-10 09:05 A |  | 100% |  |  |  | start no earlier than 2024-09-10 08:00 | Дедов В | 0.08h | 0.08h |
| 2312 | 10.82.4 | 22212.EAW33C3 / SNR | 0.01d | 2024-09-10 08:00 A | 2024-09-10 09:05 A |  | 100% |  |  |  | start no earlier than 2024-09-10 08:00 | Дедов В | 0.08h | 0.08h |
| 2313 | 10.82.5 | 51407/NEUTR | 0.01d | 2024-09-10 08:00 A | 2024-09-10 09:05 A |  | 100% |  |  |  | start no earlier than 2024-09-10 08:00 | Дедов В | 0.08h | 0.08h |
| 2314 | 10.82.6 | 6001 ZZ.CM | 0.01d | 2024-09-10 08:00 A | 2024-09-10 09:05 A |  | 100% |  |  |  | start no earlier than 2024-09-10 08:00 | Дедов В | 0.08h | 0.08h |
| 2315 | 10.82.7 | 6201.VVC3/ITJ | 0.01d | 2024-09-10 08:00 A | 2024-09-10 09:05 A |  | 100% |  |  |  | start no earlier than 2024-09-10 08:00 | Дедов В | 0.08h | 0.08h |
| 2316 | 10.82.8 | 6205LLU (NTN) | 0.01d | 2024-09-10 08:00 A | 2024-09-10 09:05 A |  | 100% |  |  |  | start no earlier than 2024-09-10 08:00 | Дедов В | 0.08h | 0.08h |
| 2317 | 10.82.9 | 6206. VVC3/ITJ | 0.01d | 2024-09-10 08:00 A | 2024-09-10 09:05 A |  | 100% |  |  |  | start no earlier than 2024-09-10 08:00 | Дедов В | 0.08h | 0.08h |
| 2318 | 10.82.10 | 686-2RS/ART | 0.01d | 2024-09-10 08:00 A | 2024-09-10 09:05 A |  | 100% |  |  |  | start no earlier than 2024-09-10 08:00 | Дедов В | 0.08h | 0.08h |
| 2319 | 10.82.11 | 7512 (32212)(60*110*24) | 0.01d | 2024-09-10 08:00 A | 2024-09-10 09:05 A |  | 100% |  |  |  | start no earlier than 2024-09-10 08:00 | Дедов В | 0.08h | 0.08h |
| 2320 | 10.82.12 | HK1210/NEUTR | 0.01d | 2024-09-10 08:00 A | 2024-09-10 09:05 A |  | 100% |  |  |  | start no earlier than 2024-09-10 08:00 | Дедов В | 0.08h | 0.08h |
| 2321 | 10.82.13 | UC 205 Neutr | 0.01d | 2024-09-10 08:00 A | 2024-09-10 09:05 A |  | 100% |  |  |  | start no earlier than 2024-09-10 08:00 | Дедов В | 0.08h | 0.08h |
| 2322 | 10.82.14 | UCFC 210 ASAHI | 0.01d | 2024-09-10 08:00 A | 2024-09-10 09:05 A |  | 100% |  |  |  | start no earlier than 2024-09-10 08:00 | Дедов В | 0.08h | 0.08h |
| 2323 | 10.83 | **создать реестр документации на оборудование** | 2d? | 2024-09-10 09:00 | 2024-09-11 18:00 |  |  |  | 650.59d |  |  |  | 8h |  |
| 2324 | 10.83.1 | опись документации в наличии, сортировка | 1d? | 2024-09-10 09:00 | 2024-09-10 18:00 |  |  |  | 650.59d | 0d | start no earlier than 2024-09-10 09:00 | Зорькин В | 8h |  |
| 2325 | 10.83.2 | оформление реестра наличия документации | 1d? | 2024-09-11 09:00 | 2024-09-11 18:00 | 2324 |  |  | 650.59d |  | start no earlier than 2024-09-06 08:00 |  |  |  |
| 2326 | 10.84 | **ремонт двигатель с шлюз питатель** | 0.02d | 2024-08-09 09:00 | 2024-08-09 09:10 |  |  |  | 674.57d |  |  |  | 0.17h |  |
| 2327 | 10.84.1 | контроль / орг курьер - | 10min | 2024-08-09 09:00 | 2024-08-09 09:10 |  |  |  | 674.57d |  | start no earlier than 2024-08-09 09:00 | Шуранов Ю | 0.17h |  |
| 2328 | 10.85 | **организовать хранение зап. частей для производства в одном месте, создать склад и нести полную материальную ответственность** | 18d? | 2024-05-09 09:00 A | 2024-06-03 18:00 |  | 15% | 15.3d? | 722.59d |  |  |  | 272h | 24h |
| 2329 | 10.85.1 | монтаж забор / ворота | 3d | 2024-05-09 09:00 A | 2024-05-13 18:00 A |  | 100% |  |  |  | start no earlier than 2024-05-09 09:00 | Макаревич А | 24h | 24h |
| 2330 | 10.85.2 | монтаж ворота, забор | 1d? | 2024-05-14 09:00 | 2024-05-14 18:00 | 2329 |  |  | 722.59d | 0d | start no earlier than 2024-05-13 09:00 | Некрасов А; Черепанов И | 16h |  |
| 2331 | 10.85.3 | подготови доски для стеллажей на 3 складе | 1d? | 2024-05-20 09:00 | 2024-05-20 18:00 |  |  |  | 732.59d |  | start no earlier than 2024-05-18 09:00 | КИнжекул | 8h |  |
| 2332 | 10.85.4 | переместить стеллажи на 2 этаж ГП + сборка | 1d? | 2024-05-15 09:00 | 2024-05-15 18:00 | 2330 |  |  | 729.59d | 7d | start no earlier than 2024-05-08 08:00 | Некрасов А; Черепанов И | 16h |  |
| 2333 | 10.85.5 | составить список всех позиций за забором для учета | 2d | 2024-05-15 09:00 | 2024-05-16 18:00 | 2330 |  |  | 722.59d | 0d | start no earlier than 2024-05-14 09:00 | Шуранов Ю | 16h |  |
| 2334 | 10.85.6 | состаить список ЗИП склад 3 цех | 2d | 2024-05-17 09:00 | 2024-05-20 18:00 | 2333 |  |  | 722.59d | 0d | start no earlier than 2024-05-08 09:00 | Шуранов Ю | 16h |  |
| 2335 | 10.85.7 | состаить список ЗИП склад слесарное помещение | 2d | 2024-05-21 09:00 | 2024-05-22 18:00 | 2334 |  |  | 722.59d | 0d | start no earlier than 2024-05-14 09:00 | Шуранов Ю | 16h |  |
| 2336 | 10.85.8 | составить список ЗИП Контейнер | 2d | 2024-05-23 09:00 | 2024-05-24 18:00 | 2335 |  |  | 722.59d | 0d | start no earlier than 2024-05-14 09:00 | Шуранов Ю | 16h |  |
| 2337 | 10.85.9 | перемещение ЗИП с 3 цеха на 2 этаж ГП | 2d | 2024-05-27 09:00 | 2024-05-28 18:00 | 2332, 2336 |  |  | 722.59d | 0d | start no earlier than 2024-05-14 09:00 | Шуранов Ю; Некрасов А; Черепанов И | 48h |  |
| 2338 | 10.85.10 | перемещение ЗИП с контейнера на 2 этаж ГП | 2d | 2024-05-29 09:00 | 2024-05-30 18:00 | 2337 |  |  | 722.59d | 0d | start no earlier than 2024-05-14 09:00 | Шуранов Ю; Некрасов А; Черепанов И | 48h |  |
| 2339 | 10.85.11 | перемещение ЗИП с слесарного помещения на 2 этаж ГП | 2d | 2024-05-31 09:00 | 2024-06-03 18:00 | 2338 |  |  | 722.59d |  | start no earlier than 2024-05-14 09:00 | Шуранов Ю; Некрасов А; Черепанов И | 48h |  |

| ID | WBS | Task | Type | Duration | Start | Finish | Predecessors | Complete | Remaining | Actual start | Total slack | Free slack | Constraint | Resources | Work | Actual work |
| --- | --- | --- | --- | --- | --- | --- | --- | --- | --- | --- | --- | --- | --- | --- | --- | --- |
| 2340 | 10.86 | **клапан эл магнитный для парогенератора на подачу воды** |  | 0.06d | 2025-01-16 09:00 | 2025-01-16 09:30 |  |  |  |  | 560.53d |  |  |  | 0.5h |  |
| 2341 | 10.86.1 | контролль остатков, заявка на катушку |  | 30min | 2025-01-16 09:00 | 2025-01-16 09:30 |  |  |  |  | 560.53d |  | start no earlier than 2025-01-16 09:00 | Шуранов Ю | 0.5h |  |
| 2342 | 10.87 | **вал с конвейера №1 разместить на ремонт** |  | 15.06d | 2024-05-14 09:00 | 2024-06-04 09:30 |  |  |  |  | 722.53d |  |  |  | 120.5h |  |
| 2343 | 10.87.1 | орг курьера |  | 15min | 2024-05-14 09:00 | 2024-05-14 09:15 |  |  |  |  | 722.53d | 0d | start no earlier than 2024-05-14 09:00 | Шуранов Ю | 0.25h |  |
| 2344 | 10.87.2 | ремонт |  | 15d | 2024-05-14 09:15 | 2024-06-04 09:15 | 2343 |  |  |  | 722.53d | 0d | start no earlier than 2024-05-08 08:00 | Подрядчик | 120h |  |
| 2345 | 10.87.3 | контроль, орг курьера забрать |  | 15min | 2024-06-04 09:15 | 2024-06-04 09:30 | 2344 |  |  |  | 722.53d |  | start no earlier than 2024-05-14 09:00 | Шуранов Ю | 0.25h |  |
| 2346 | 10.88 | подшипник LMK20.UU/FBJ или NEUTR - 4шт ТЕКО после замены |  | 10min | 2024-05-14 09:00 | 2024-05-14 09:10 |  |  |  |  | 737.57d |  | start no earlier than 2024-05-14 09:00 | Шуранов Ю | 0.17h |  |
| 2347 | 10.89 | UC204 подшипники |  | 10min | 2024-05-14 09:00 | 2024-05-14 09:10 |  |  |  |  | 737.57d |  | start no earlier than 2024-05-14 09:00 | Шуранов Ю | 0.17h |  |
| 2348 | 10.90 | сетка на дробилку 37квт 5 цех 0,5мм и 0,7 мм - заявка ЕВРОМЕД |  | 1h | 2024-05-14 09:00 | 2024-05-14 10:00 |  |  |  |  | 737.47d |  | start no earlier than 2024-05-14 09:00 | Шуранов Ю | 1h |  |
| 2349 | 11 | **ЗИП заказ (заявки)** |  | 4.02d | 2026-09-04 09:00 A | 2026-09-09 09:10 |  | 71% | 1.15d |  | 130.57d |  |  |  | 0.58h | 0.42h |
| 2350 | 11.1 | контактор для тельфера 5ц 24 переменка |  | 15min | 2026-09-04 09:00 A | 2026-09-04 09:15 A |  | 100% |  |  |  |  | start no earlier than 2026-09-04 09:00 | Зорькин В | 0.25h | 0.25h |
| 2351 | 11.2 | Наконечники штырьевые для сборки схем (получить инфу у Тимофеева) |  | 10min | 2026-09-09 09:00 | 2026-09-09 09:10 |  |  |  |  | 130.57d |  | start no earlier than 2026-09-09 09:00 | Зорькин В | 0.17h |  |
| 2352 | 11.3 | Газ в слесарку, закончился |  | 10min | 2026-09-07 09:00 A | 2026-09-07 09:10 A |  | 100% |  |  |  |  | start no earlier than 2026-09-07 09:00 | Зорькин В | 0.17h | 0.17h |
| 2353 | 12 | **ТО** |  | 920.25d? | 2023-03-10 09:00 A | 2026-09-17 11:00 |  | 36% | 590.13d? |  | 124.34d |  |  |  | 29004.7h | 17128.5h |
| 2354 | 12.1 | **1 цех** |  | 134.25d? | 2024-04-04 09:00 | 2024-10-09 11:00 |  | 41% | 79.87d? | 2023-12-28 09:00 |  |  |  |  | 5674.24h | 783.53h |
| 2355 | 12.1.1 | **Разобрать улитки с охладителя 2 линия, 4 улитки на печах и улитки циклонов - замена подшипников, каких нет сообщить** |  | 3.5d | 2026-09-07 09:00 A | 2026-09-10 13:00 |  | 40% | 2.1d |  | 0d |  |  |  | 20h | 8h |
| 2356 | 12.1.1.1 | вентилятор охладителя | manual | 4h | 2026-09-07 09:00 A | 2026-09-07 13:00 A |  | 100% |  |  |  |  |  | Бундин В | 4h | 4h |
| 2357 | 12.1.1.2 | линия 1 вентилятор печи 1 |  | 4h | 2026-09-08 09:00 A | 2026-09-08 13:00 A |  | 100% |  |  |  |  | start no earlier than 2026-09-08 09:00 | Бундин В | 4h | 4h |
| 2358 | 12.1.1.3 | линия 1 вентилятор печи 2 | manual | 4h | 2026-09-09 09:00 | 2026-09-09 13:00 |  |  |  |  |  |  |  | Бундин В | 4h |  |
| 2359 | 12.1.1.4 | линия 2 вентилятор циклона 1 | manual | 4h | 2026-09-09 14:00 | 2026-09-09 18:00 | 2358 |  |  |  |  |  |  | Бундин В | 4h |  |
| 2360 | 12.1.1.5 | линия 2 вентилятор циклона 1 | manual | 4h | 2026-09-10 09:00 | 2026-09-10 13:00 | 2359 |  |  |  |  |  |  | Бундин В | 4h |  |
| 2361 | 12.1.2 | ТО ШУ печи №1 (замена кабеля, наконечников…) |  | 1h | 2026-08-27 09:00 | 2026-08-27 10:00 |  |  |  |  | 140.47d |  | start no earlier than 2026-08-27 09:00 | Тимофеев В | 1h |  |
| 2362 | 12.1.3 | **приточная вентиляция** |  | 105.12d | 2026-03-04 09:00 A | 2026-07-29 10:00 A |  | 100% |  |  |  |  |  |  | 3h | 3h |
| 2363 | 12.1.3.1 | замена оба фильтра |  | 1h | 2026-03-04 09:00 A | 2026-03-04 10:00 A |  | 100% |  |  |  |  | start no earlier than 2026-03-04 08:00 | Труфанов А | 1h | 1h |
| 2364 | 12.1.3.2 | замена фильтра |  | 1h | 2026-04-15 09:00 A | 2026-04-15 10:00 A |  | 100% |  |  |  |  | start no earlier than 2026-04-15 09:00 | Труфанов А | 1h | 1h |
| 2365 | 12.1.3.3 | Замена фильтра |  | 1h | 2026-07-29 09:00 A | 2026-07-29 10:00 A |  | 100% |  |  |  |  | start no earlier than 2026-07-29 08:00 | Бундин В | 1h | 1h |

| ID | WBS | Task | Duration | Start | Finish | Complete | Remaining | Total slack | Constraint | Resources | Work | Actual work |
| --- | --- | --- | --- | --- | --- | --- | --- | --- | --- | --- | --- | --- |
| 2366 | 12.1.4 | **техническая вода** | 55.06d | 2026-03-11 09:00 A | 2026-05-27 09:30 A | 100% |  |  |  |  | 1.33h | 1.33h |
| 2367 | 12.1.4.1 | проверка гидроаккумулятора | 10min | 2026-03-11 09:00 A | 2026-03-11 09:10 A | 100% |  |  | start no earlier than 2026-03-11 09:00 | Некрасов А | 0.17h | 0.17h |
| 2368 | 12.1.4.2 | замена фильтров | 10min | 2026-03-11 09:00 A | 2026-03-11 09:10 A | 100% |  |  | start no earlier than 2026-03-11 09:00 | Некрасов А | 0.17h | 0.17h |
| 2369 | 12.1.4.3 | замена фильтров | 30min | 2026-05-27 09:00 A | 2026-05-27 09:30 A | 100% |  |  | start no earlier than 2026-03-11 09:00 | Бундин В | 0.5h | 0.5h |
| 2370 | 12.1.4.4 | замена фильтров | 30min | 2026-03-12 09:00 A | 2026-03-12 09:30 A | 100% |  |  | start no earlier than 2026-03-12 09:00 | Бобренок В | 0.5h | 0.5h |
| 2371 | 12.1.5 | **линия 1** | 105.12d? | 2026-03-18 09:00 A | 2026-08-12 10:00 A | 100% |  |  |  |  | 21.5h | 21.5h |
| 2372 | 12.1.5.1 | **питатель экструдера** | 95.04d? | 2026-03-18 09:00 A | 2026-07-29 09:20 A | 100% |  |  |  |  | 10h | 10h |
| 2373 | 12.1.5.1.1 | замена подшипники | 1d? | 2026-04-08 09:00 A | 2026-04-08 18:00 A | 100% |  |  | start no earlier than 2026-04-08 09:00 | Тимофеев В | 8h | 8h |
| 2374 | 12.1.5.1.2 | контроль палстик втулки | 1h | 2026-05-13 09:00 A | 2026-05-13 10:00 A | 100% |  |  | start no earlier than 2026-05-13 09:00 | Бобренок В | 1h | 1h |
| 2375 | 12.1.5.1.3 | контроль шестерен привода, редуктора | 10min | 2026-03-18 09:00 A | 2026-03-18 09:10 A | 100% |  |  | start no earlier than 2026-03-18 09:00 | Труфанов А | 0.17h | 0.17h |
| 2376 | 12.1.5.1.4 | контроль состояние пластик втулки | 30min | 2026-06-02 09:00 A | 2026-06-02 09:30 A | 100% |  |  | start no earlier than 2026-06-02 09:00 | Некрасов А | 0.5h | 0.5h |
| 2377 | 12.1.5.1.5 | Ревизия питателя | 20min | 2026-07-29 09:00 A | 2026-07-29 09:20 A | 100% |  |  | start no earlier than 2026-07-29 08:00 | Бундин В | 0.33h | 0.33h |
| 2378 | 12.1.5.2 | **прекондицинер экструдера** | 55.03d | 2026-05-13 09:00 A | 2026-07-29 09:15 A | 100% |  |  |  |  | 0.5h | 0.5h |
| 2379 | 12.1.5.2.1 | контроль привода, подшипников | 15min | 2026-05-13 09:00 A | 2026-05-13 09:15 A | 100% |  |  | start no earlier than 2026-05-13 09:00 | Бобренок В | 0.25h | 0.25h |
| 2380 | 12.1.5.2.2 | контроль привода, подшипников | 15min | 2026-07-29 09:00 A | 2026-07-29 09:15 A | 100% |  |  | start no earlier than 2026-07-29 08:00 | Труфанов А | 0.25h | 0.25h |
| 2381 | 12.1.5.3 | **парогенератор** | 90.12d | 2026-04-08 09:00 A | 2026-08-12 10:00 A | 100% |  |  |  |  | 11h | 11h |
| 2382 | 12.1.5.3.1 | вскрытие электородов, чистка | 1h | 2026-05-13 09:00 A | 2026-05-13 10:00 A | 100% |  |  | start no earlier than 2026-05-13 09:00 | Бобренок В | 1h | 1h |
| 2383 | 12.1.5.3.2 | замена реле вкл насоса. (не вкл) | 2h | 2026-05-13 09:00 A | 2026-05-13 11:00 A | 100% |  |  | start no earlier than 2026-05-13 09:00 | Бобренок В | 2h | 2h |
| 2384 | 12.1.5.3.3 | замена гофротрубы / закрепить жестко | 2h | 2026-04-08 09:00 A | 2026-04-08 11:00 A | 100% |  |  | start no earlier than 2026-04-08 09:00 | Бобренок В | 2h | 2h |
| 2385 | 12.1.5.3.4 | чистка парогенератора, если нужно замена электродов | 2h | 2026-06-10 09:00 A | 2026-06-10 11:00 A | 100% |  |  | start no earlier than 2026-06-10 09:00 | Дедов В | 2h | 2h |
| 2386 | 12.1.5.3.5 | читска парогенератора, если нужно замена электродов | 2h | 2026-05-20 09:00 A | 2026-05-20 11:00 A | 100% |  |  | start no earlier than 2026-05-20 09:00 | Некрасов А | 2h | 2h |
| 2387 | 12.1.5.3.6 | читска парогенератора, если нужно замена электродов | 1h | 2026-06-02 09:00 A | 2026-06-02 10:00 A | 100% |  |  | start no earlier than 2026-06-02 09:00 | Тимофеев В | 1h | 1h |
| 2388 | 12.1.5.3.7 | вскрытие электородов, чистка | 1h | 2026-08-12 09:00 A | 2026-08-12 10:00 A | 100% |  |  | start no earlier than 2026-08-12 09:00 | Некрасов А | 1h | 1h |
| 2389 | 12.1.6 | **редуктор экструдера и маслянная станция** | 636.5d | 2024-04-04 09:00 A | 2026-09-10 13:00 | 37% | 398.35d | 129.09d |  |  | 40.75h | 17.75h |
| 2390 | 12.1.6.1 | чистка фильтра | 30min | 2026-06-02 09:00 A | 2026-06-02 09:30 A | 100% |  |  | start no earlier than 2026-06-02 09:00 | Тимофеев В | 0.5h | 0.5h |
| 2391 | 12.1.6.2 | муфта редутор-мотор | 15min | 2026-03-11 09:00 A | 2026-03-11 09:15 A | 100% |  |  | start no earlier than 2026-03-11 09:00 | Тимофеев В | 0.25h | 0.25h |
| 2392 | 12.1.6.3 | чистка фильтра | 30min | 2026-07-16 09:00 A | 2026-07-16 09:30 A | 100% |  |  | start no earlier than 2026-07-16 09:00 | Бобренок В | 0.5h | 0.5h |
| 2393 | 12.1.6.4 | тэны и термпоры шнеков- прортяжка | 30min | 2025-02-25 09:00 | 2025-02-25 09:30 |  |  | 532.53d | start no earlier than 2025-02-25 09:00 | Дедов В | 0.5h |  |
| 2394 | 12.1.6.5 | Чистка фильтра | 30min | 2026-07-29 08:00 A | 2026-07-29 09:30 A | 100% |  |  | start no earlier than 2026-07-29 08:00 | Тимофеев В | 0.5h | 0.5h |

| ID | WBS | Task | Duration | Start | Finish | Predecessors | Complete | Remaining | Total slack | Free slack | Constraint | Resources | Work | Actual work |
| --- | --- | --- | --- | --- | --- | --- | --- | --- | --- | --- | --- | --- | --- | --- |
| 2395 | 12.1.6.6 | **шкаф управления экструдером** | 86.03d | 2026-03-31 09:00 A | 2026-07-29 09:15 A |  | 100% |  |  |  |  |  | 1.25h | 1.25h |
| 2396 | 12.1.6.6.1 | протяжка контактов | 30min | 2026-03-31 09:00 A | 2026-03-31 09:30 A |  | 100% |  |  |  | start no earlier than 2026-03-11 09:00 | Некрасов А | 0.5h | 0.5h |
| 2397 | 12.1.6.6.2 | частотные привода экструдера, ножей, питателя - продувка | 30min | 2026-05-27 09:00 A | 2026-05-27 09:30 A |  | 100% |  |  |  | start no earlier than 2026-05-27 09:00 | Бундин В | 0.5h | 0.5h |
| 2398 | 12.1.6.6.3 | частотные привода экструдера, ножей, питателя - продувка | 15min | 2026-07-29 09:00 A | 2026-07-29 09:15 A |  | 100% |  |  |  | start no earlier than 2026-07-29 08:00 | Труфанов А | 0.25h | 0.25h |
| 2399 | 12.1.6.7 | **блок тэнов сушки** | 70.03d | 2026-05-20 09:00 A | 2026-08-26 09:15 |  | 80% | 14.01d | 141.56d |  |  |  | 1.25h | 1h |
| 2400 | 12.1.6.7.1 | ревизия, замена отгоревших жил, проверка токов | 1h | 2026-05-20 09:00 A | 2026-05-20 10:00 A |  | 100% |  |  |  | start no earlier than 2026-05-20 09:00 | Некрасов А | 1h | 1h |
| 2401 | 12.1.6.7.2 | ревизия/ проверка токов | 15min | 2026-08-26 09:00 | 2026-08-26 09:15 |  |  |  | 141.56d |  | start no earlier than 2026-08-26 09:00 | Некрасов А | 0.25h |  |
| 2402 | 12.1.6.8 | **шкаф управления тэнами сушки** | 67.5d | 2026-06-10 09:00 A | 2026-09-10 13:00 |  | 11% | 60.39d | 129.09d |  |  |  | 4.75h | 0.5h |
| 2403 | 12.1.6.8.1 | протяжка контактов | 15min | 2026-06-10 09:00 | 2026-06-10 09:15 |  |  |  | 196.56d |  | start no earlier than 2026-06-10 09:00 | Дедов В | 0.25h |  |
| 2404 | 12.1.6.8.2 | замена неисправных жил | 4h | 2026-09-10 09:00 | 2026-09-10 13:00 |  |  |  | 129.09d |  | start no earlier than 2026-09-10 09:00 | Тимофеев В | 4h |  |
| 2405 | 12.1.6.8.3 | частотные привода экструдера, ножей, питателя - продувка | 30min | 2026-07-16 09:00 A | 2026-07-16 09:30 A |  | 100% |  |  |  | start no earlier than 2026-07-16 09:00 | Бобренок В | 0.5h | 0.5h |
| 2406 | 12.1.6.9 | конвейер №1 с печи в дрожировщик прорверка подшипники, реуктор | 30min | 2025-02-17 09:00 | 2025-02-17 09:30 |  |  |  | 538.53d |  | start no earlier than 2025-02-15 09:00 | Дедов В | 0.5h |  |
| 2407 | 12.1.6.10 | **барабан смесительный дрожировка - прорверка подшипнки , реуктор** | 105.03d | 2026-03-04 08:00 A | 2026-07-29 09:15 A |  | 100% |  |  |  |  |  | 2.25h | 2.25h |
| 2408 | 12.1.6.10.1 | замена вал № 4 час | 2h | 2026-03-04 08:00 A | 2026-03-04 11:00 A |  | 100% |  |  |  | start no earlier than 2026-03-04 08:00 | Тимофеев В | 2h | 2h |
| 2409 | 12.1.6.10.2 | Дефектовка - проверить подачу, вибрации, посторонние шумы. | 15min | 2026-07-29 08:00 A | 2026-07-29 09:15 A |  | 100% |  |  |  | start no earlier than 2026-07-29 08:00 | Тимофеев В | 0.25h | 0.25h |
| 2410 | 12.1.6.11 | **печь** | 0.25d | 2026-07-16 09:00 A | 2026-07-16 11:00 A |  | 100% |  |  |  |  |  | 7h | 7h |
| 2411 | 12.1.6.11.1 | проверка состояния сетки, ремонт шплинтов | 2h | 2026-07-16 09:00 A | 2026-07-16 11:00 A |  | 100% |  |  |  | start no earlier than 2026-07-16 09:00 | Бобренок В; Некрасов А; Труфанов А | 6h | 6h |
| 2412 | 12.1.6.11.2 | укоротить звено привода | 1h | 2026-07-16 09:00 A | 2026-07-16 10:00 A |  | 100% |  |  |  | start no earlier than 2026-07-16 09:00 | Некрасов А | 1h | 1h |
| 2413 | 12.1.6.12 | конвейер №2 с дрожировки в охладитель - проверка подшипники , редуктор | 30min | 2025-02-17 09:00 | 2025-02-17 09:30 |  |  |  | 538.53d |  | start no earlier than 2025-02-15 09:00 | Дедов В | 0.5h |  |
| 2414 | 12.1.6.13 | охладитель сеточный - смазка, натяжка цепи. Проверка редуктор | 1h | 2025-02-17 09:00 | 2025-02-17 10:00 |  |  |  | 538.47d |  | start no earlier than 2025-02-16 09:00 | Черепанов И | 1h |  |
| 2415 | 12.1.6.14 | вентиляторы обдува сушки | 2h | 2024-06-14 09:00 | 2024-06-14 11:00 |  |  |  | 714.34d |  | start no earlier than 2024-06-14 09:00 | ТО_2 | 2h |  |
| 2416 | 12.1.6.15 | смеситель СМ-500 | 2h | 2024-04-10 09:00 | 2024-04-10 11:00 |  |  |  | 761.09d | 0d | start no earlier than 2024-04-10 09:00 | ТО_1 | 2h |  |
| 2417 | 12.1.6.16 | шнек выгрузки смесителя | 2h | 2024-04-10 11:00 | 2024-04-10 13:00 | 2416 |  |  | 761.09d |  | start no earlier than 2024-01-03 09:00 | ТО_1 | 2h |  |
| 2418 | 12.1.6.17 | электромотор экструдера | 2h | 2024-04-04 09:00 | 2024-04-04 11:00 |  |  |  | 765.34d |  | start no earlier than 2024-03-08 09:00 | ТО_1 | 2h |  |
| 2419 | 12.1.6.18 | редуктор шнеков экструдера | 2h | 2024-04-04 09:00 | 2024-04-04 11:00 |  |  |  | 765.34d |  | start no earlier than 2024-01-26 09:00 | ТО_М | 2h |  |
| 2420 | 12.1.6.19 | чистка фильтр редутор шнеков | 1h | 2025-02-17 09:00 | 2025-02-17 10:00 |  |  |  | 538.47d |  | start no earlier than 2025-02-16 09:00 | Черепанов И | 1h |  |
| 2421 | 12.1.6.20 | пневотранспорт вентилятор | 2h | 2024-05-07 09:00 | 2024-05-07 11:00 |  |  |  | 742.34d |  | start no earlier than 2024-05-07 09:00 | ТО_1 | 2h |  |
| 2422 | 12.1.6.21 | пневотранспорт роторный питатель - проверка масла | 30min | 2025-02-17 09:00 | 2025-02-17 09:30 |  |  |  | 538.53d |  | start no earlier than 2025-02-16 09:00 | Черепанов И | 0.5h |  |
| 2423 | 12.1.6.22 | пневотранспорт роторный питатель - проверка масла | 30min | 2026-07-29 09:00 A | 2026-07-29 09:30 A |  | 100% |  |  |  | start no earlier than 2026-07-29 08:00 | Труфанов А | 0.5h | 0.5h |
| 2424 | 12.1.6.23 | привод сетки ПЕЧИ сушки - прорверка масла | 30min | 2025-02-17 09:00 | 2025-02-17 09:30 |  |  |  | 538.53d |  | start no earlier than 2025-02-16 09:00 | Черепанов И | 0.5h |  |
| 2425 | 12.1.6.24 | привод сетки ПЕЧИ сушки - прорверка масла | 30min | 2026-07-29 09:00 A | 2026-07-29 09:30 A |  | 100% |  |  |  | start no earlier than 2026-07-29 08:00 | Труфанов А | 0.5h | 0.5h |
| 2426 | 12.1.6.25 | насос подачи жира и смесительный узел, баки подогрева протяжка | 1h | 2025-02-17 09:00 | 2025-02-17 10:00 |  |  |  | 538.47d |  | start no earlier than 2025-02-15 09:00 | Дедов В | 1h |  |
| 2427 | 12.1.6.26 | дозатор сухой гидролизат - разборка, чистка, замена подшипников | 2h | 2026-08-18 09:00 A | 2026-08-18 11:00 A |  | 100% |  |  |  | start no earlier than 2026-08-18 09:00 | Бундин В | 2h | 2h |
| 2428 | 12.1.6.27 | проверка передаточн число редуктора/сравнить с 2л. Проверить остатки для замены на менее скоростной | 1h | 2026-08-20 09:00 | 2026-08-20 10:00 |  |  |  | 145.47d |  | start no earlier than 2026-08-20 09:00 | Макаревич А | 1h |  |
| 2429 | 12.1.6.28 | Осмотр цепи и сетки | 1h | 2026-07-29 09:00 A | 2026-07-29 10:00 A |  | 100% |  |  |  | start no earlier than 2026-07-29 08:00 | Труфанов А | 1h | 1h |

| ID | WBS | Task | Duration | Start | Finish | Complete | Remaining | Actual start | Total slack | Constraint | Resources | Work | Actual work |
| --- | --- | --- | --- | --- | --- | --- | --- | --- | --- | --- | --- | --- | --- |
| 2430 | 12.1.7 | **линия 2** | 0.25d? | 2023-12-29 09:00 | 2023-12-29 11:00 | 38% | 0.16d? | 2023-12-28 09:00 |  |  |  | 44.5h | 16.25h |
| 2431 | 12.1.7.1 | **питатель экструдера** | 95.04d | 2026-03-18 09:00 A | 2026-07-29 09:20 A | 100% |  |  |  |  |  | 3.5h | 3.5h |
| 2432 | 12.1.7.1.1 | контроль состояние пластик втулки | 30min | 2026-06-02 09:00 A | 2026-06-02 09:30 A | 100% |  |  |  | start no earlier than 2026-06-02 09:00 | Некрасов А | 0.5h | 0.5h |
| 2433 | 12.1.7.1.2 | замена подшипники | 1h | 2026-04-08 09:00 A | 2026-04-08 10:00 A | 100% |  |  |  | start no earlier than 2026-04-08 09:00 |  |  |  |
| 2434 | 12.1.7.1.3 | замена шестеренок -взять у Веры на складе | 2h | 2026-05-20 09:00 A | 2026-05-20 11:00 A | 100% |  |  |  | start no earlier than 2026-05-20 09:00 | Бобренок В | 2h | 2h |
| 2435 | 12.1.7.1.4 | контроль пластик втулки | 30min | 2026-05-13 09:00 A | 2026-05-13 09:30 A | 100% |  |  |  | start no earlier than 2026-05-13 09:00 | Бобренок В | 0.5h | 0.5h |
| 2436 | 12.1.7.1.5 | контроль шестерен привода, редуктора | 10min | 2026-03-18 09:00 A | 2026-03-18 09:10 A | 100% |  |  |  | start no earlier than 2026-03-18 09:00 | Труфанов А | 0.17h | 0.17h |
| 2437 | 12.1.7.1.6 | Ревизия питателя | 20min | 2026-07-29 09:00 A | 2026-07-29 09:20 A | 100% |  |  |  | start no earlier than 2026-07-29 08:00 | Бундин В | 0.33h | 0.33h |
| 2438 | 12.1.7.2 | **прекондицинер экструдера** | 55.03d | 2026-05-13 09:00 A | 2026-07-29 09:15 A | 100% |  |  |  |  |  | 0.5h | 0.5h |
| 2439 | 12.1.7.2.1 | контроль привода, подшипников | 15min | 2026-05-13 09:00 A | 2026-05-13 09:15 A | 100% |  |  |  | start no earlier than 2026-05-13 09:00 | Бобренок В | 0.25h | 0.25h |
| 2440 | 12.1.7.2.2 | контроль привода, подшипников | 15min | 2026-07-29 09:00 A | 2026-07-29 09:15 A | 100% |  |  |  | start no earlier than 2026-07-29 08:00 | Труфанов А | 0.25h | 0.25h |
| 2441 | 12.1.7.3 | **парогенератор** | 65.12d | 2026-05-13 09:00 A | 2026-08-12 10:00 A | 100% |  |  |  |  |  | 2h | 2h |
| 2442 | 12.1.7.3.1 | вскрытие электородов, чистка | 1h | 2026-05-13 09:00 A | 2026-05-13 10:00 A | 100% |  |  |  | start no earlier than 2026-05-13 09:00 | Бобренок В | 1h | 1h |
| 2443 | 12.1.7.3.2 | вскрытие электородов, чистка | 1h | 2026-08-12 09:00 A | 2026-08-12 10:00 A | 100% |  |  |  | start no earlier than 2026-08-12 09:00 | Некрасов А | 1h | 1h |
| 2444 | 12.1.7.4 | тэны и термпоры шнеков- прортяжка | 30min | 2024-04-10 09:00 | 2024-04-10 09:30 |  |  |  | 761.53d | start no earlier than 2024-04-10 09:00 | Черепанов И | 0.5h |  |
| 2445 | 12.1.7.5 | Чистка парогенератора | 1h | 2026-07-29 09:00 A | 2026-07-29 10:00 A | 100% |  |  |  | start no earlier than 2026-07-29 08:00 | Бундин В | 1h | 1h |
| 2446 | 12.1.7.6 | **шкаф управления экструдером** | 100.03d | 2026-03-11 09:00 A | 2026-07-29 09:15 A | 100% |  |  |  |  |  | 1.5h | 1.5h |
| 2447 | 12.1.7.6.1 | протяжка контактов | 30min | 2026-03-11 09:00 A | 2026-03-11 09:30 A | 100% |  |  |  | start no earlier than 2026-03-11 09:00 | Некрасов А | 0.5h | 0.5h |
| 2448 | 12.1.7.6.2 | частотные привода экструдера, ножей, питателя - продувка | 30min | 2026-05-27 09:00 A | 2026-05-27 09:30 A | 100% |  |  |  | start no earlier than 2026-05-27 09:00 | Бундин В | 0.5h | 0.5h |
| 2449 | 12.1.7.6.3 | частотные привода экструдера, ножей, питателя - продувка | 15min | 2026-07-16 09:00 A | 2026-07-16 09:15 A | 100% |  |  |  | start no earlier than 2026-07-16 09:00 | Бобренок В | 0.25h | 0.25h |
| 2450 | 12.1.7.6.4 | частотные привода экструдера, ножей, питателя - продувка | 15min | 2026-07-29 09:00 A | 2026-07-29 09:15 A | 100% |  |  |  | start no earlier than 2026-07-29 08:00 | Труфанов А | 0.25h | 0.25h |
| 2451 | 12.1.7.7 | **редуктор экструдера и маслянная станция** | 50.06d | 2026-05-20 09:00 A | 2026-07-29 09:30 A | 100% |  |  |  |  |  | 2.5h | 2.5h |
| 2452 | 12.1.7.7.1 | чистка фильтра | 30min | 2026-06-02 09:00 A | 2026-06-02 09:30 A | 100% |  |  |  | start no earlier than 2026-06-02 09:00 | Тимофеев В | 0.5h | 0.5h |
| 2453 | 12.1.7.7.2 | чистка фильтра | 30min | 2026-05-20 09:00 A | 2026-05-20 09:30 A | 100% |  |  |  | start no earlier than 2026-05-20 09:00 | Тимофеев В | 0.5h | 0.5h |
| 2454 | 12.1.7.7.3 | муфта редутор-мотор проверка состояния | 30min | 2026-05-27 09:00 A | 2026-05-27 09:30 A | 100% |  |  |  | start no earlier than 2026-05-27 09:00 | Тимофеев В | 0.5h | 0.5h |
| 2455 | 12.1.7.7.4 | чистка фильтра | 30min | 2026-07-16 09:00 A | 2026-07-16 09:30 A | 100% |  |  |  | start no earlier than 2026-07-16 09:00 | Бобренок В | 0.5h | 0.5h |
| 2456 | 12.1.7.7.5 | Чистка фильтра | 30min | 2026-07-29 08:00 A | 2026-07-29 09:30 A | 100% |  |  |  | start no earlier than 2026-07-29 08:00 | Тимофеев В | 0.5h | 0.5h |

| ID | WBS | Task | Duration | Start | Finish | Predecessors | Complete | Remaining | Total slack | Free slack | Constraint | Resources | Work | Actual work |
| --- | --- | --- | --- | --- | --- | --- | --- | --- | --- | --- | --- | --- | --- | --- |
| 2457 | 12.1.7.8 | **блок тэнов сушки - протяжка** | 82.5d? | 2026-05-20 09:00 A | 2026-09-10 13:00 |  | 43% | 47.14d? | 129.09d |  |  |  | 7h | 3h |
| 2458 | 12.1.7.8.1 | ревизия, замена отгоревших жил, проверка токов | 3h | 2026-05-20 09:00 A | 2026-05-20 12:00 A |  | 100% |  |  |  | start no earlier than 2026-05-20 09:00 | Бобренок В | 3h | 3h |
| 2459 | 12.1.7.8.2 | ревизия, замена отгоревших жил, проверка токов | 4h? | 2026-09-10 09:00 | 2026-09-10 13:00 |  |  |  | 129.09d |  | start no earlier than 2026-09-10 09:00 | Тимофеев В | 4h |  |
| 2460 | 12.1.7.9 | **шкаф управления тэнами сушки** | 65.03d | 2026-05-20 09:00 A | 2026-08-19 09:15 |  | 83% | 10.84d | 146.56d |  |  |  | 1.5h | 1.25h |
| 2461 | 12.1.7.9.1 | протяжка контактов | 15min | 2026-05-20 09:00 A | 2026-05-20 09:15 A |  | 100% |  |  |  | start no earlier than 2026-05-20 09:00 | Бобренок В | 0.25h | 0.25h |
| 2462 | 12.1.7.9.2 | замена неисправных жил | 1h | 2026-05-20 09:00 A | 2026-05-20 10:00 A |  | 100% |  |  |  | start no earlier than 2026-05-20 09:00 | Бобренок В | 1h | 1h |
| 2463 | 12.1.7.9.3 | ревизия/ проверка токов | 15min | 2026-08-19 09:00 | 2026-08-19 09:15 |  |  |  | 146.56d |  | start no earlier than 2026-08-19 09:00 | Некрасов А | 0.25h |  |
| 2464 | 12.1.7.10 | конвейер №1 с печи в дрожировщик прорверка подшипники, реуктор | 30min | 2024-10-04 09:00 | 2024-10-04 09:30 |  |  |  | 634.53d |  | start no earlier than 2024-10-04 09:00 | Тимофеев В | 0.5h |  |
| 2465 | 12.1.7.11 | барабан смесительный дрожировка - прорверка подшипнки , реуктор | 30min | 2024-10-04 09:00 | 2024-10-04 09:30 |  |  |  | 634.53d |  | start no earlier than 2024-10-04 09:00 | Тимофеев В | 0.5h |  |
| 2466 | 12.1.7.12 | конвейер №2 с дрожировки в охладитель - проверка подшипники , редуктор | 30min | 2024-10-04 09:00 | 2024-10-04 09:30 |  |  |  | 634.53d |  | start no earlier than 2024-10-04 09:00 | Тимофеев В | 0.5h |  |
| 2467 | 12.1.7.13 | охладитель сеточный - смазка, натяжка цепи. Проверка редуктор | 1h | 2024-10-04 09:00 | 2024-10-04 10:00 |  |  |  | 634.47d |  | start no earlier than 2024-10-04 09:00 | Тимофеев В | 1h |  |
| 2468 | 12.1.7.14 | вентиляторы обдува сушки | 2h | 2024-06-14 09:00 | 2024-06-14 11:00 |  |  |  | 714.34d |  | start no earlier than 2024-06-14 09:00 | ТО_2 | 2h |  |
| 2469 | 12.1.7.15 | смеситель СМ-500 | 2h | 2024-04-10 09:00 | 2024-04-10 11:00 |  |  |  | 761.09d | 0d | start no earlier than 2024-04-10 09:00 | ТО_1 | 2h |  |
| 2470 | 12.1.7.16 | шнек выгрузки смесителя | 2h | 2024-04-10 11:00 | 2024-04-10 13:00 | 2469 |  |  | 761.09d |  | start no earlier than 2024-01-03 09:00 | ТО_1 | 2h |  |
| 2471 | 12.1.7.17 | электромотор экструдера раборка замена подшипников / есть шум | 6h | 2026-08-27 09:00 | 2026-08-27 16:00 |  |  |  | 139.84d |  | start no earlier than 2026-08-27 09:00 | Тимофеев В | 6h |  |
| 2472 | 12.1.7.18 | редуктор шнеков экструдера | 2h | 2024-10-04 09:00 | 2024-10-04 11:00 |  |  |  | 634.34d |  | start no earlier than 2024-10-04 09:00 | Тимофеев В | 2h |  |
| 2473 | 12.1.7.19 | пневотранспорт вентилятор | 2h | 2024-05-07 09:00 | 2024-05-07 11:00 |  |  |  | 742.34d |  | start no earlier than 2024-05-07 09:00 | ТО_1 | 2h |  |
| 2474 | 12.1.7.20 | пневотранспорт роторный питатель - проверка масла | 30min | 2024-10-04 09:00 | 2024-10-04 09:30 |  |  |  | 634.53d |  | start no earlier than 2024-10-04 09:00 | Тимофеев В | 0.5h |  |
| 2475 | 12.1.7.21 | привод сетки ПЕЧИ сушки - прорверка масла | 30min | 2024-10-04 09:00 | 2024-10-04 09:30 |  |  |  | 634.53d |  | start no earlier than 2024-10-04 09:00 | Тимофеев В | 0.5h |  |
| 2476 | 12.1.7.22 | насос подачи жира и смесительный узел, баки подогрева | 2h | 2023-12-28 09:00 | 2023-12-28 11:00 |  |  |  | 835.34d |  | start no earlier than 2023-12-28 09:00 | ТО_1 | 2h |  |
| 2477 | 12.1.7.23 | дозатор сухой гидролизат - разборка, чистка, замена подшипников | 2h | 2026-08-20 09:00 | 2026-08-20 11:00 |  |  |  | 145.34d |  | start no earlier than 2026-08-20 09:00 | Макаревич А | 2h |  |
| 2478 | 12.1.7.24 | **Насос гидролизата** | 85.06d | 2026-04-01 09:00 A | 2026-07-29 09:30 A |  | 100% |  |  |  |  |  | 1h | 1h |
| 2479 | 12.1.7.24.1 | Дефектовка - проверить подачу, вибрации, посторонние шумы. | 30min | 2026-04-01 09:00 A | 2026-04-01 09:30 A |  | 100% |  |  |  | start no earlier than 2026-04-01 09:00 | Тимофеев В | 0.5h | 0.5h |
| 2480 | 12.1.7.24.2 | Дефектовка - проверить подачу, вибрации, посторонние шумы. | 30min | 2026-07-29 08:00 A | 2026-07-29 09:30 A |  | 100% |  |  |  | start no earlier than 2026-07-29 08:00 | Тимофеев В | 0.5h | 0.5h |

| ID | WBS | Task | Duration | Start | Finish | Complete | Remaining | Total slack | Constraint | Resources | Work | Actual work |
| --- | --- | --- | --- | --- | --- | --- | --- | --- | --- | --- | --- | --- |
| 2481 | 12.1.8 | **Квадропак** | 38.5d | 2026-04-22 09:00 A | 2026-06-15 13:00 A | 100% |  |  |  |  | 9.25h | 9.25h |
| 2482 | 12.1.8.1 | проверить резьбу крепления встряхивателя №1, закрепить | 1h | 2026-06-02 09:00 A | 2026-06-02 10:00 A | 100% |  |  | start no earlier than 2026-06-02 09:00 | Макаревич А | 1h | 1h |
| 2483 | 12.1.8.2 | Замена резинки на воздушном редукторе находящемся под мультиголовой (весы) | 1h | 2026-04-22 09:00 A | 2026-04-22 10:00 A | 100% |  |  | start no earlier than 2026-04-22 09:00 | Бундин В | 1h | 1h |
| 2484 | 12.1.8.3 | ТО узла пайки. Чистка тен/ревизия термоизолятора пневморедуктора | 1h | 2026-05-27 09:00 A | 2026-05-27 10:00 A | 100% |  |  | start no earlier than 2026-05-27 09:00 | Тимофеев В | 1h | 1h |
| 2485 | 12.1.8.4 | ревизия привод встряхивателя | 30min | 2026-05-27 09:00 A | 2026-05-27 09:30 A | 100% |  |  | start no earlier than 2026-05-27 09:00 | Тимофеев В | 0.5h | 0.5h |
| 2486 | 12.1.8.5 | ревизия протяжки кинематики низ / верх | 30min | 2026-05-27 09:00 A | 2026-05-27 09:30 A | 100% |  |  | start no earlier than 2026-05-27 09:00 | Тимофеев В | 0.5h | 0.5h |
| 2487 | 12.1.8.6 | ревизия вакуумный насос | 15min | 2026-05-27 09:00 A | 2026-05-27 09:15 A | 100% |  |  | start no earlier than 2026-05-27 09:00 | Тимофеев В | 0.25h | 0.25h |
| 2488 | 12.1.8.7 | замена вал выход | 4h | 2026-06-15 09:00 A | 2026-06-15 13:00 A | 100% |  |  | start no earlier than 2026-06-15 09:00 | Тимофеев В | 4h | 4h |
| 2489 | 12.1.8.8 | проверить пневмоцилиндр на встряхивателе, если нужно заменить | 1h | 2026-05-20 09:00 A | 2026-05-20 10:00 A | 100% |  |  | start no earlier than 2026-05-20 09:00 | Некрасов А | 1h | 1h |
| 2490 | 12.1.9 | **Парогенератор** | 6.25d | 2026-06-02 09:00 A | 2026-06-10 11:00 | 33% | 4.17d | 196.34d |  |  | 3h | 1h |
| 2491 | 12.1.9.1 | читска парогенератора, если нужно замена электродов | 2h | 2026-06-10 09:00 | 2026-06-10 11:00 |  |  | 196.34d | start no earlier than 2026-06-10 09:00 | Дедов В | 2h |  |
| 2492 | 12.1.9.2 | читска парогенератора, если нужно замена электродов | 1h | 2026-06-02 09:00 A | 2026-06-02 10:00 A | 100% |  |  | start no earlier than 2026-06-02 09:00 | Тимофеев В | 1h | 1h |
| 2493 | 12.1.10 | **Дражжировка** | 0.25d | 2026-08-27 09:00 | 2026-08-27 11:00 |  |  | 140.34d |  |  | 2.42h |  |
| 2494 | 12.1.10.1 | Проверка подшипников на барабанах | 15min | 2026-08-27 09:00 | 2026-08-27 09:15 |  |  | 140.56d | start no earlier than 2026-08-27 09:00 | Тимофеев В | 0.25h |  |
| 2495 | 12.1.10.2 | Проверка фильтров | 10min | 2026-08-27 09:00 | 2026-08-27 09:10 |  |  | 140.57d | start no earlier than 2026-08-27 09:00 | Тимофеев В | 0.17h |  |
| 2496 | 12.1.10.3 | Ревизия насоса гидролизата | 2h | 2026-08-27 09:00 | 2026-08-27 11:00 |  |  | 140.34d | start no earlier than 2026-08-27 09:00 | Тимофеев В | 2h |  |
| 2497 | 12.1.11 | **жиротопка и насос перекачки жира** | 600.03d | 2024-04-10 09:00 A | 2026-07-29 09:15 | 25% | 450.02d | 161.56d |  |  | 1h | 0.25h |
| 2498 | 12.1.11.1 | блок тэнов -протяжка | 30min | 2024-04-10 09:00 | 2024-04-10 09:30 |  |  | 761.53d | start no earlier than 2024-04-10 08:00 | Тимофеев В | 0.5h |  |
| 2499 | 12.1.11.2 | насос, фильтр - осмотр, чистка | 15min | 2024-04-25 09:00 | 2024-04-25 09:15 |  |  | 750.56d | start no earlier than 2024-04-25 09:00 | Тимофеев В | 0.25h |  |
| 2500 | 12.1.11.3 | насос, фильтр - осмотр, чистка | 15min | 2026-07-29 09:00 A | 2026-07-29 09:15 A | 100% |  |  | start no earlier than 2026-07-29 08:00 | Труфанов А | 0.25h | 0.25h |
| 2501 | 12.1.12 | **упаковщкики** | 398.25d | 2025-02-14 09:00 A | 2026-08-26 11:00 | 15% | 336.98d | 141.34d |  |  | 26h | 4h |
| 2502 | 12.1.12.1 | упаковщик ТЕКО 0,4кг | 2h | 2025-02-16 09:00 A | 2025-02-17 11:00 A | 100% |  |  | start no earlier than 2025-02-16 09:00 | Дедов В | 2h | 2h |
| 2503 | 12.1.12.2 | упаковщик ТЕКО 0,4кг | 2h | 2026-08-26 09:00 | 2026-08-26 11:00 |  |  | 141.34d | start no earlier than 2026-08-26 09:00 | Тимофеев В | 2h |  |
| 2504 | 12.1.12.3 | упаковщик НОТИС | 2h | 2025-02-17 09:00 | 2025-02-17 11:00 |  |  | 538.34d | start no earlier than 2025-02-16 09:00 | Дедов В | 2h |  |
| 2505 | 12.1.12.4 | упаковщик ТЕКО 1.5кг | 2h | 2025-02-17 09:00 | 2025-02-17 11:00 |  |  | 538.34d | start no earlier than 2025-02-16 09:00 | Дедов В | 2h |  |
| 2506 | 12.1.12.5 | упаковщик КВАДРОПАК | 2h | 2025-02-17 09:00 | 2025-02-17 11:00 |  |  | 538.34d | start no earlier than 2025-02-16 09:00 | Дедов В | 2h |  |
| 2507 | 12.1.12.6 | нория и вибробункер КВАДРОПАК | 2h | 2025-02-17 09:00 | 2025-02-17 11:00 |  |  | 538.34d | start no earlier than 2025-02-16 09:00 | Дедов В | 2h |  |
| 2508 | 12.1.12.7 | запайщик 1 | 2h | 2025-02-17 09:00 | 2025-02-17 11:00 |  |  | 538.34d | start no earlier than 2025-02-17 09:00 | Дедов В | 2h |  |
| 2509 | 12.1.12.8 | запайщик 2 | 2h | 2025-02-17 09:00 | 2025-02-17 11:00 |  |  | 538.34d | start no earlier than 2025-02-17 09:00 | Дедов В | 2h |  |
| 2510 | 12.1.12.9 | конвейер гп ТЕКО 1,5 | 2h | 2025-02-14 09:00 | 2025-02-14 11:00 |  |  | 539.34d | start no earlier than 2025-02-14 09:00 | Макаревич А | 2h |  |
| 2511 | 12.1.12.10 | конвейер гп ТЕКО 0,4 | 2h | 2025-02-14 09:00 | 2025-02-14 11:00 |  |  | 539.34d | start no earlier than 2025-02-14 09:00 | Макаревич А | 2h |  |
| 2512 | 12.1.12.11 | накопительный стол 1,5 | 2h | 2025-02-17 09:00 | 2025-02-17 11:00 |  |  | 538.34d | start no earlier than 2025-02-15 09:00 | Макаревич А | 2h |  |
| 2513 | 12.1.12.12 | накопительный стол 0,4 | 2h | 2025-02-17 09:00 | 2025-02-17 11:00 |  |  | 538.34d | start no earlier than 2025-02-15 09:00 | Макаревич А | 2h |  |
| 2514 | 12.1.12.13 | Осмотр всех упаковщиков/транспортеров/накопительных столов/ всех щитков оборудования | 2h | 2026-07-29 09:00 A | 2026-07-29 11:00 A | 100% |  |  | start no earlier than 2026-07-29 08:00 | Бундин В | 2h | 2h |

| ID | WBS | Task | Duration | Start | Finish | Complete | Remaining | Total slack | Constraint | Resources | Work | Actual work |
| --- | --- | --- | --- | --- | --- | --- | --- | --- | --- | --- | --- | --- |
| 2515 | 12.1.13 | **электрооборудование** | 627.12d? | 2024-04-04 09:00 A | 2026-08-31 10:00 | 12% | 553.35d? | 138.47d |  | ТО | 5496.49h | 701.19h |
| 2516 | 12.1.13.1 | ВРУ1 | 15min | 2026-05-20 09:00 | 2026-05-20 09:15 |  |  | 211.56d | start no earlier than 2026-05-20 09:00 | ТО; Тимофеев В | 0.5h |  |
| 2517 | 12.1.13.2 | ВРУ2 | 15min | 2026-05-20 09:00 | 2026-05-20 09:15 |  |  | 211.56d | start no earlier than 2026-05-20 09:00 | ТО; Тимофеев В | 0.5h |  |
| 2518 | 12.1.13.3 | ЩР1 экструдер | 15min | 2026-05-20 09:00 | 2026-05-20 09:15 |  |  | 211.56d | start no earlier than 2026-05-20 09:00 | ТО; Тимофеев В | 0.5h |  |
| 2519 | 12.1.13.4 | ЩР2 упаковка №1 | 15min | 2026-05-20 09:00 | 2026-05-20 09:15 |  |  | 211.56d | start no earlier than 2026-05-20 09:00 | ТО; Тимофеев В | 0.5h |  |
| 2520 | 12.1.13.5 | ЩР3 упаковка №2 | 15min | 2026-05-20 09:00 | 2026-05-20 09:15 |  |  | 211.56d | start no earlier than 2026-05-20 09:00 | ТО; Тимофеев В | 0.5h |  |
| 2521 | 12.1.13.6 | ЩР жиротопка и зона жиров | 1h | 2026-05-20 09:00 | 2026-05-20 10:00 |  |  | 211.47d | start no earlier than 2026-05-20 09:00 | ТО; Некрасов А | 2h |  |
| 2522 | 12.1.13.7 | **Компрессор 1 цех** | 60.12d? | 2026-06-07 09:00 A | 2026-08-31 10:00 | 20% | 48.1d? | 138.47d |  | ТО | 483h | 112.4h |
| 2523 | 12.1.13.7.1 | продувка радиаторов осушителя и компрессора, слив конденсата | 1h | 2026-06-07 09:00 A | 2026-06-08 10:00 A | 100% |  |  | start no earlier than 2026-06-07 09:00 | Дедов В | 1h | 1h |
| 2524 | 12.1.13.7.2 | продувка радиаторов осушителя и компрессора, слив конденсата | 1h | 2026-08-29 09:00 A | 2026-08-31 10:00 A | 100% |  |  | start no earlier than 2026-08-29 09:00 | Дедов В | 1h | 1h |
| 2525 | 12.1.13.7.3 | <Новая задача> | 1d? | 2026-08-28 09:00 | 2026-08-28 18:00 |  |  | 138.59d | start no earlier than 2026-08-28 08:00 |  |  |  |
| 2526 | 12.1.13.8 | осушитель 1 цех | 2h | 2024-04-04 09:00 | 2024-04-04 11:00 |  |  | 765.34d | start no earlier than 2023-12-28 09:00 | ТО | 2h |  |
| 2527 | 12.1.13.9 | осушитель 1 цех/слить конденсат | 30min | 2026-07-29 09:00 | 2026-07-29 09:30 |  |  | 161.53d | start no earlier than 2026-07-29 08:00 | Бундин В | 0.5h |  |
| 2528 | 12.1.13.10 | бойлер 1 1 цех раковина | 2h | 2024-04-04 09:00 | 2024-04-04 11:00 |  |  | 765.34d | start no earlier than 2023-12-28 09:00 | ТО | 2h |  |
| 2529 | 12.1.13.11 | бойлер 2 1 цех раковина | 2h | 2024-04-04 09:00 | 2024-04-04 11:00 |  |  | 765.34d | start no earlier than 2023-12-28 09:00 | ТО | 2h |  |
| 2530 | 12.1.13.12 | бойлер 3 1 цех душ | 2h | 2024-04-04 09:00 | 2024-04-04 11:00 |  |  | 765.34d | start no earlier than 2023-12-28 09:00 | ТО | 2h |  |
| 2531 | 12.1.13.13 | насосная станция 1 цех | 2h | 2024-04-04 09:00 | 2024-04-04 11:00 |  |  | 765.34d | start no earlier than 2023-12-28 09:00 | ТО | 2h |  |
| 2532 | 12.1.13.14 | фильтр приточной вентиляции | 2h | 2024-04-04 09:00 | 2024-04-04 11:00 |  |  | 765.34d |  |  |  |  |
| 2533 | 12.1.13.15 | пульт управления вентиляцией, частототные приводы | 2h | 2024-04-04 09:00 | 2024-04-04 11:00 |  |  | 765.34d | start no earlier than 2023-12-28 09:00 | ТО | 2h |  |
| 2534 | 12.1.13.16 | кондиционер 1 продувка фильтров внутр / очистка наруж блок | 30min | 2026-06-02 09:00 A | 2026-06-02 09:30 A | 100% |  |  | start no earlier than 2026-06-02 09:00 | Некрасов А | 0.5h | 0.5h |
| 2535 | 12.1.13.17 | кондиционер 2 продувка фильтров внутр / очистка наруж блок | 30min | 2026-06-02 09:00 A | 2026-06-02 09:30 A | 100% |  |  | start no earlier than 2026-06-02 09:00 | Некрасов А | 0.5h | 0.5h |
| 2536 | 12.1.13.18 | кондиционер 3 продувка фильтров внутр / очистка наруж блок | 30min | 2026-06-02 09:00 A | 2026-06-02 09:30 A | 100% |  |  | start no earlier than 2026-06-02 09:00 | Некрасов А | 0.5h | 0.5h |
| 2537 | 12.1.13.19 | кондиционер 1 продувка фильтров внутр / очистка наруж блок (керхер взять у Мейхера) | 30min | 2026-06-10 09:00 | 2026-06-10 09:30 |  |  | 196.53d | start no earlier than 2026-06-10 09:00 | Некрасов А; Дедов В | 1h |  |
| 2538 | 12.1.13.20 | кондиционер 2 продувка фильтров внутр / очистка наруж блок (керхер взять у Мейхера) | 30min | 2026-06-10 09:00 | 2026-06-10 09:30 |  |  | 196.53d | start no earlier than 2026-06-10 09:00 | Некрасов А; Дедов В | 1h |  |
| 2539 | 12.1.13.21 | кондиционер 3 продувка фильтров внутр / очистка наруж блок (керхер взять у Мейхера) | 30min | 2026-06-10 09:00 | 2026-06-10 09:30 |  |  | 196.53d | start no earlier than 2026-06-10 09:00 | Некрасов А; Дедов В | 1h |  |
| 2540 | 12.1.14 | электроштабелер упаковка | 2h | 2023-12-28 09:00 | 2023-12-28 11:00 |  |  | 835.34d | start no earlier than 2023-12-28 09:00 | ТО | 2h |  |
| 2541 | 12.1.15 | электроштабелер навески | 2h | 2023-12-28 09:00 | 2023-12-28 11:00 |  |  | 835.34d | start no earlier than 2023-12-28 09:00 | ТО | 2h |  |

| ID | WBS | Task | Duration | Start | Finish | Complete | Remaining | Total slack | Constraint | Resources | Work | Actual work |
| --- | --- | --- | --- | --- | --- | --- | --- | --- | --- | --- | --- | --- |
| 2542 | 12.2 | **2 цех** | 920.25d? | 2023-03-10 09:00 A | 2026-09-17 11:00 | 61% | 357.96d? | 124.34d |  |  | 16826.4h | 15438.3h |
| 2543 | 12.2.1 | обдув пыли с вентиляции и балки кровли зона жир + экструдер + упаковка | 3h | 2026-08-20 09:00 | 2026-08-20 12:00 |  |  | 145.22d | start no earlier than 2026-08-20 09:00 | Некрасов А; Тимофеев В | 6h |  |
| 2544 | 12.2.2 | **линия 3** | 914.12d? | 2023-03-10 09:00 A | 2026-09-09 10:00 | 98% | 21.28d? | 130.47d |  |  | 132.17h | 130.42h |
| 2545 | 12.2.2.1 | **прекондицинер экструдера** | 620.03d? | 2024-04-18 09:00 A | 2026-09-03 09:15 | 99% | 7.21d? | 135.56d |  |  | 21.5h | 21.25h |
| 2546 | 12.2.2.1.1 | замена заднего подшипника ведомый вал | 8h | 2026-05-26 09:00 A | 2026-05-26 18:00 A | 100% |  |  | start no earlier than 2026-05-26 09:00 | Тимофеев В | 8h | 8h |
| 2547 | 12.2.2.1.2 | замена подшипников | 1h | 2024-04-18 09:00 A | 2024-04-18 10:00 A | 100% |  |  | start no earlier than 2024-04-18 08:00 | Тимофеев В | 1h | 1h |
| 2548 | 12.2.2.1.3 | Ревизия масла редуктора | 30min | 2024-04-18 09:00 A | 2024-04-18 09:30 A | 100% |  |  | start no earlier than 2024-04-18 08:00 | Тимофеев В | 0.5h | 0.5h |
| 2549 | 12.2.2.1.4 | контроль крепления лопаток | 30min | 2026-05-21 09:00 A | 2026-05-21 09:30 A | 100% |  |  | start no earlier than 2026-03-05 09:00 | Тимофеев В | 0.5h | 0.5h |
| 2550 | 12.2.2.1.5 | шприцевание подшипников | 1h | 2026-05-21 08:00 A | 2026-05-21 10:00 A | 100% |  |  | start no earlier than 2026-05-21 08:00 | Тимофеев В | 1h | 1h |
| 2551 | 12.2.2.1.6 | Ревизия масла редуктора | 15min | 2026-07-21 09:00 A | 2026-07-21 09:15 A | 100% |  |  | start no earlier than 2026-07-21 09:00 | Труфанов А | 0.25h | 0.25h |
| 2552 | 12.2.2.1.7 | шприцевание подшипников | 30min | 2026-07-21 09:00 A | 2026-07-21 09:30 A | 100% |  |  | start no earlier than 2026-07-21 09:00 | Труфанов А | 0.5h | 0.5h |
| 2553 | 12.2.2.1.8 | Осмотр подшипников | 15min | 2026-07-30 09:00 A | 2026-07-30 09:15 A | 100% |  |  | start no earlier than 2026-07-30 09:00 | Тимофеев В | 0.25h | 0.25h |
| 2554 | 12.2.2.1.9 | Осмотр подшипников | 1d? | 2026-08-06 09:00 A | 2026-08-06 18:00 A | 100% |  |  | start no earlier than 2026-08-06 09:00 | Бундин В | 8h | 8h |
| 2555 | 12.2.2.1.10 | Осмотр подшипников / смазка / по необходимости замена | 1h | 2026-08-13 09:00 A | 2026-08-13 10:00 A | 100% |  |  | start no earlier than 2026-08-13 09:00 | Некрасов А | 1h | 1h |
| 2556 | 12.2.2.1.11 | Осмотр подшипников / смазка | 15min | 2026-08-20 09:00 | 2026-08-20 09:15 |  |  | 145.56d | start no earlier than 2026-08-20 09:00 | Некрасов А | 0.25h |  |
| 2557 | 12.2.2.1.12 | Замена водяного фильтра на прекондиционере/парогенератор | 15min | 2026-09-03 09:00 A | 2026-09-03 09:15 A | 100% |  |  | start no earlier than 2026-09-03 09:00 | Труфанов А | 0.25h | 0.25h |
| 2558 | 12.2.2.2 | **парогенератор** | 625d | 2024-04-18 10:00 A | 2026-09-09 10:00 | 94% | 40.32d | 130.47d |  |  | 16.5h | 15.5h |
| 2559 | 12.2.2.2.1 | читска | 1h | 2024-04-18 10:00 A | 2024-04-18 11:00 A | 100% |  |  | start no earlier than 2024-04-18 08:00 | Тимофеев В | 1h | 1h |
| 2560 | 12.2.2.2.2 | замена гильзы | 1h | 2024-04-18 10:00 A | 2024-04-18 11:00 A | 100% |  |  | start no earlier than 2024-04-18 08:00 | Тимофеев В | 1h | 1h |
| 2561 | 12.2.2.2.3 | чистка | 2h | 2026-03-05 09:30 A | 2026-03-05 11:30 A | 100% |  |  | start no earlier than 2026-03-04 09:00 | Бундин В | 2h | 2h |
| 2562 | 12.2.2.2.4 | прорвеп срабатывания защитного клапана | 10min | 2026-03-05 09:30 A | 2026-03-05 09:40 A | 100% |  |  | start no earlier than 2024-10-03 09:00 | Бундин В | 0.17h | 0.17h |
| 2563 | 12.2.2.2.5 | читска | 1h | 2026-03-19 09:00 A | 2026-03-19 10:00 A | 100% |  |  | start no earlier than 2026-03-19 09:00 | Тимофеев В | 1h | 1h |
| 2564 | 12.2.2.2.6 | чистка | 1h | 2026-03-12 09:00 A | 2026-03-12 10:00 A | 100% |  |  | start no earlier than 2026-03-12 09:00 | Бундин В; Тимофеев В | 2h | 2h |
| 2565 | 12.2.2.2.7 | чистка | 1h | 2026-05-14 09:00 A | 2026-05-14 10:00 A | 100% |  |  | start no earlier than 2026-05-14 09:00 | Некрасов А | 1h | 1h |
| 2566 | 12.2.2.2.8 | чистка | 2h | 2026-07-14 09:00 A | 2026-07-14 11:00 A | 100% |  |  | start no earlier than 2026-07-14 09:00 | Некрасов А | 2h | 2h |
| 2567 | 12.2.2.2.9 | Чистка | 1h | 2026-07-30 09:00 A | 2026-07-30 10:00 A | 100% |  |  | start no earlier than 2026-07-30 09:00 | Бундин В | 1h | 1h |
| 2568 | 12.2.2.2.10 | Чистка | 1h | 2026-08-06 09:00 A | 2026-08-06 10:00 A | 100% |  |  | start no earlier than 2026-08-06 09:00 | Тимофеев В | 1h | 1h |
| 2569 | 12.2.2.2.11 | Чистка | 1h | 2026-08-13 09:00 A | 2026-08-13 10:00 A | 100% |  |  | start no earlier than 2026-08-13 09:00 | Некрасов А | 1h | 1h |
| 2570 | 12.2.2.2.12 | Чистка | 1h | 2026-08-19 09:00 A | 2026-08-19 10:00 A | 100% |  |  | start no earlier than 2026-08-19 09:00 | Некрасов А | 1h | 1h |
| 2571 | 12.2.2.2.13 | Чистка | 1h | 2026-09-02 08:00 A | 2026-09-02 10:00 A | 100% |  |  | start no earlier than 2026-09-02 08:00 | Бобренок В | 1h | 1h |
| 2572 | 12.2.2.2.14 | Убрать грязь с парогенератора, привести в порядок внешний вид, где что отлеплено, прилепить | 20min | 2026-09-03 09:00 A | 2026-09-03 09:20 A | 100% |  |  | start no earlier than 2026-09-03 09:00 | Тимофеев В | 0.33h | 0.33h |
| 2573 | 12.2.2.2.15 | Чистка | 1h | 2026-09-09 09:00 | 2026-09-09 10:00 |  |  | 130.47d | start no earlier than 2026-09-09 08:00 | Тимофеев В | 1h |  |

| ID | WBS | Task | Duration | Start | Finish | Complete | Remaining | Total slack | Constraint | Resources | Work | Actual work |
| --- | --- | --- | --- | --- | --- | --- | --- | --- | --- | --- | --- | --- |
| 2574 | 12.2.2.3 | **привод сетки ПЕЧИ сушки** | 625.04d | 2024-04-18 08:00 A | 2026-09-09 09:20 | 91% | 54.35d | 130.55d |  |  | 3.83h | 3.5h |
| 2575 | 12.2.2.3.1 | прорверка масла редуктор / натяжка цепи/ ремень | 30min | 2024-04-18 08:00 A | 2024-04-18 09:30 A | 100% |  |  | start no earlier than 2024-04-18 08:00 | Тимофеев В | 0.5h | 0.5h |
| 2576 | 12.2.2.3.2 | прорверка масла редуктор / натяжка цепи/ ремень | 30min | 2026-03-05 09:00 A | 2026-03-05 09:30 A | 100% |  |  | start no earlier than 2026-03-05 09:00 | Тимофеев В | 0.5h | 0.5h |
| 2577 | 12.2.2.3.3 | прорверка масла редуктор / натяжка цепи/ ремень | 30min | 2026-03-19 09:00 A | 2026-03-19 09:30 A | 100% |  |  | start no earlier than 2026-03-19 09:00 | Тимофеев В | 0.5h | 0.5h |
| 2578 | 12.2.2.3.4 | прорверка масла редуктор / натяжка цепи/ ремень/осмотр сетки | 30min | 2026-07-14 09:00 A | 2026-07-14 09:30 A | 100% |  |  | start no earlier than 2026-07-14 09:00 | Труфанов А | 0.5h | 0.5h |
| 2579 | 12.2.2.3.5 | прорверка масла редуктор / натяжка цепи/ ремень/осмотр сетки | 30min | 2026-07-30 09:00 A | 2026-07-30 09:30 A | 100% |  |  | start no earlier than 2026-07-30 09:00 | Труфанов А | 0.5h | 0.5h |
| 2580 | 12.2.2.3.6 | прорверка масла редуктор / натяжка цепи/ ремень/осмотр сетки | 20min | 2026-08-13 09:00 A | 2026-08-13 09:20 A | 100% |  |  | start no earlier than 2026-08-13 09:00 | Некрасов А | 0.33h | 0.33h |
| 2581 | 12.2.2.3.7 | прорверка масла редуктор / натяжка цепи/ ремень/осмотр сетки | 20min | 2026-08-20 09:00 A | 2026-08-20 09:20 A | 100% |  |  | start no earlier than 2026-08-20 09:00 | Некрасов А | 0.33h | 0.33h |
| 2582 | 12.2.2.3.8 | прорверка масла редуктор / натяжка цепи/ ремень/осмотр сетки | 20min | 2026-08-20 09:00 A | 2026-08-20 09:20 A | 100% |  |  | start no earlier than 2026-08-20 09:00 | Некрасов А | 0.33h | 0.33h |
| 2583 | 12.2.2.3.9 | прорверка масла редуктор / натяжка цепи/ ремень/осмотр сетки | 20min | 2026-09-09 09:00 | 2026-09-09 09:20 |  |  | 130.55d | start no earlier than 2026-09-09 08:00 | Бобренок В | 0.33h |  |
| 2584 | 12.2.2.4 | **блок тэнов сушки** | 605.12d | 2024-04-18 08:00 A | 2026-08-13 10:00 A | 100% |  |  |  |  | 12h | 12h |
| 2585 | 12.2.2.4.1 | вскрыть все блоки | 1h | 2024-04-18 08:00 A | 2024-04-18 10:00 A | 100% |  |  | start no earlier than 2024-04-18 08:00 | Тимофеев В | 1h | 1h |
| 2586 | 12.2.2.4.2 | ревизия / замена критичных | 4h | 2024-04-18 09:00 A | 2024-04-18 13:00 A | 100% |  |  | start no earlier than 2024-04-18 08:00 | Некрасов А; Черепанов И | 8h | 8h |
| 2587 | 12.2.2.4.3 | ревизия | 1h | 2026-03-19 09:00 A | 2026-03-19 10:00 A | 100% |  |  | start no earlier than 2026-03-19 09:00 | Бундин В | 1h | 1h |
| 2588 | 12.2.2.4.4 | ревизия | 1h | 2026-05-14 09:00 A | 2026-05-14 10:00 A | 100% |  |  | start no earlier than 2026-05-14 09:00 | Труфанов А | 1h | 1h |
| 2589 | 12.2.2.4.5 | ревизия перемычек | 1h | 2026-08-13 09:00 A | 2026-08-13 10:00 A | 100% |  |  | start no earlier than 2026-08-13 09:00 | Некрасов А | 1h | 1h |
| 2590 | 12.2.2.5 | нория 1 загрзка в смеситель | 4h | 2023-03-10 09:00 A | 2023-03-10 13:00 A | 100% |  |  |  | ТО | 4h | 4h |
| 2591 | 12.2.2.6 | **смеситель СМ-1500** | 135.02d | 2026-03-05 09:00 A | 2026-09-09 09:10 | 98% | 3.14d | 130.57d |  |  | 7.17h | 7h |
| 2592 | 12.2.2.6.1 | контроль масла | 15min | 2026-03-05 09:00 A | 2026-03-05 09:15 A | 100% |  |  | start no earlier than 2026-03-05 09:00 | Тимофеев В | 0.25h | 0.25h |
| 2593 | 12.2.2.6.2 | контроль масла | 15min | 2026-03-05 09:00 A | 2026-03-05 09:15 A | 100% |  |  | start no earlier than 2026-03-05 09:00 | Некрасов А | 0.25h | 0.25h |
| 2594 | 12.2.2.6.3 | замена сальника | 4h | 2026-04-16 09:00 A | 2026-04-16 13:00 A | 100% |  |  | start no earlier than 2026-04-16 09:00 | Тимофеев В | 4h | 4h |
| 2595 | 12.2.2.6.4 | контроль масла | 15min | 2026-07-30 09:00 A | 2026-07-30 09:15 A | 100% |  |  | start no earlier than 2026-07-30 09:00 | Тимофеев В | 0.25h | 0.25h |
| 2596 | 12.2.2.6.5 | ревизия подшипникой красного смесителя, просыпается мука со стороны редуктора | 1h | 2026-08-13 09:00 A | 2026-08-13 10:00 A | 100% |  |  | start no earlier than 2026-08-13 09:00 | Тимофеев В | 1h | 1h |
| 2597 | 12.2.2.6.6 | ревизия подшипникой красного смесителя, просыпается мука со стороны редуктора | 1h | 2026-08-27 09:00 A | 2026-08-27 10:00 A | 100% |  |  | start no earlier than 2026-08-27 09:00 | Тимофеев В | 1h | 1h |
| 2598 | 12.2.2.6.7 | контроль масла | 15min | 2026-09-03 09:00 A | 2026-09-03 09:15 A | 100% |  |  | start no earlier than 2026-09-03 09:00 | Тимофеев В | 0.25h | 0.25h |
| 2599 | 12.2.2.6.8 | контроль масла | 10min | 2026-09-09 09:00 | 2026-09-09 09:10 |  |  | 130.57d | start no earlier than 2026-09-09 08:00 | Бобренок В | 0.17h |  |

| ID | WBS | Task | Duration | Start | Finish | Complete | Remaining | Total slack | Constraint | Resources | Work | Actual work |
| --- | --- | --- | --- | --- | --- | --- | --- | --- | --- | --- | --- | --- |
| 2600 | 12.2.2.7 | **нория 2 выгрузки смесителя** | 130.06d | 2026-03-05 09:00 A | 2026-09-03 09:30 A | 100% |  |  |  | ТО | 58.08h | 58.08h |
| 2601 | 12.2.2.7.1 | смазка подшипников | 30min | 2026-03-05 09:00 A | 2026-03-05 09:30 A | 100% |  |  | start no earlier than 2026-03-05 09:00 | Бундин В | 0.5h | 0.5h |
| 2602 | 12.2.2.7.2 | Осмотр подшипников/смазка по необходимости | 30min | 2026-07-30 09:00 A | 2026-07-30 09:30 A | 100% |  |  | start no earlier than 2026-07-30 09:00 | Бундин В | 0.5h | 0.5h |
| 2603 | 12.2.2.7.3 | ревизия крепления редуктора | 15min | 2026-03-05 09:00 A | 2026-03-05 09:15 A | 100% |  |  | start no earlier than 2026-03-05 09:00 | Бундин В | 0.25h | 0.25h |
| 2604 | 12.2.2.7.4 | ревизия ленты, обрезать нитки | 4h | 2026-03-26 09:00 A | 2026-03-26 13:00 A | 100% |  |  | start no earlier than 2026-03-26 09:00 | Тимофеев В | 4h | 4h |
| 2605 | 12.2.2.7.5 | вскрыть для чистки | 10min | 2026-05-19 09:00 A | 2026-05-19 09:10 A | 100% |  |  | start no earlier than 2026-05-21 09:00 | Труфанов А | 0.17h | 0.17h |
| 2606 | 12.2.2.7.6 | Вскрыть, осмотреть ленту (держится на одном ковше, закрепили на доп болты) | 30min | 2026-09-03 09:00 A | 2026-09-03 09:30 A | 100% |  |  | start no earlier than 2026-09-03 09:00 | Тимофеев В | 0.5h | 0.5h |
| 2607 | 12.2.2.7.7 | вскрыть для чистки, осмотреть ленту, закрыить после чистки | 10min | 2026-08-13 09:00 A | 2026-08-13 09:10 A | 100% |  |  | start no earlier than 2026-08-13 09:00 | Труфанов А | 0.17h | 0.17h |
| 2608 | 12.2.2.8 | **бункер-накопитель с шнековой разкгрузкой синий** | 80.01d | 2026-05-14 09:00 A | 2026-09-03 09:05 A | 100% |  |  |  |  | 9.08h | 9.08h |
| 2609 | 12.2.2.8.1 | смазка подшипников, ревизия редуктора (нужно разбирать все для смазки). Задний | 4h | 2026-05-14 09:00 A | 2026-05-14 13:00 A | 100% |  |  | start no earlier than 2026-05-14 09:00 | Тимофеев В | 4h | 4h |
| 2610 | 12.2.2.8.2 | смазка подшипников, ревизия редуктора (нужно разбирать все для смазки). Передний | 4h | 2026-05-28 09:00 A | 2026-05-28 13:00 A | 100% |  |  | start no earlier than 2026-05-28 09:00 | Бундин В | 4h | 4h |
| 2611 | 12.2.2.8.3 | Осмотр редуктора со стороны мойки, скрипит | 1h | 2026-08-13 09:00 A | 2026-08-13 10:00 A | 100% |  |  | start no earlier than 2026-08-13 09:00 | Тимофеев В | 1h | 1h |
| 2612 | 12.2.2.8.4 | Осмотр | 5min | 2026-09-03 09:00 A | 2026-09-03 09:05 A | 100% |  |  | start no earlier than 2026-09-03 09:00 | Тимофеев В | 0.08h | 0.08h |
| 2613 | 12.2.3 | **питатель экструдера** | 115.12d | 2026-03-26 09:00 A | 2026-09-03 10:00 A | 100% |  |  |  |  | 20h | 20h |
| 2614 | 12.2.3.1 | замена сальников питателя, сыпит муку | 4h | 2026-07-22 09:00 A | 2026-07-22 13:00 A | 100% |  |  | start no earlier than 2026-07-22 09:00 | Труфанов А | 4h | 4h |
| 2615 | 12.2.3.2 | ревизия подшипников, редутора, привода. Разборка/сборка (нужно разбирать) | 1h | 2026-03-26 09:00 A | 2026-03-26 10:00 A | 100% |  |  | start no earlier than 2026-03-26 09:00 | Тимофеев В | 1h | 1h |
| 2616 | 12.2.3.3 | ревизия подшипников, редутора, привода. Разборка/сборка (нужно разбирать) | 1h | 2026-08-19 09:00 A | 2026-08-19 10:00 A | 100% |  |  | start no earlier than 2026-08-19 09:00 | Тимофеев В | 1h | 1h |
| 2617 | 12.2.3.4 | замена шетсерен и подшипников узла. Поставили новый комплект | 4h | 2026-04-03 08:00 A | 2026-04-03 13:00 A | 100% |  |  | start no earlier than 2026-04-03 08:00 | Тимофеев В | 4h | 4h |
| 2618 | 12.2.3.5 | ревизия шестерни мал редуктора | 1h | 2026-04-16 09:00 A | 2026-04-16 10:00 A | 100% |  |  | start no earlier than 2026-04-16 09:00 | Тимофеев В | 1h | 1h |
| 2619 | 12.2.3.6 | ревизия шестерни мал редуктора | 2h | 2026-08-13 09:00 A | 2026-08-13 11:00 A | 100% |  |  | start no earlier than 2026-08-13 09:00 | Некрасов А; Зорькин В | 4h | 4h |
| 2620 | 12.2.3.7 | ревизия шестерни мал редуктора | 2h | 2026-08-27 09:00 A | 2026-08-27 11:00 A | 100% |  |  | start no earlier than 2026-08-27 09:00 | Некрасов А; Зорькин В | 4h | 4h |
| 2621 | 12.2.3.8 | ревизия шестерен питателя | 1h | 2026-09-03 09:00 A | 2026-09-03 10:00 A | 100% |  |  | start no earlier than 2026-09-03 09:00 | Некрасов А | 1h | 1h |
| 2622 | 12.2.4 | **привод прекондиционера** | 135.5d | 2026-03-05 09:00 A | 2026-09-09 13:00 | 23% | 104.9d | 130.09d |  |  | 9.17h | 1.17h |
| 2623 | 12.2.4.1 | проверка масла | 5min | 2026-03-05 09:00 A | 2026-03-05 09:05 A | 100% |  |  | start no earlier than 2026-03-05 09:00 | Тимофеев В | 0.08h | 0.08h |
| 2624 | 12.2.4.2 | контроль крепления шестерен | 5min | 2026-03-05 09:00 A | 2026-03-05 09:05 A | 100% |  |  | start no earlier than 2026-03-05 09:00 | Тимофеев В | 0.08h | 0.08h |
| 2625 | 12.2.4.3 | ревизия подшипников и стопорных винтов | 30min | 2026-03-05 09:00 A | 2026-03-05 09:30 A | 100% |  |  | start no earlier than 2026-03-05 09:00 | Бундин В | 0.5h | 0.5h |
| 2626 | 12.2.4.4 | Осмотр шестерён(стоит звон), подшипников, сальников | 30min | 2026-09-03 09:00 A | 2026-09-03 09:30 A | 100% |  |  | start no earlier than 2026-09-03 09:00 | Тимофеев В | 0.5h | 0.5h |
| 2627 | 12.2.4.5 | Замена подшипников кореных и передних | 4h | 2026-09-09 09:00 | 2026-09-09 13:00 |  |  | 130.09d | start no earlier than 2026-09-09 08:00 | Труфанов А; Некрасов А | 8h |  |

| ID | WBS | Task | Duration | Start | Finish | Predecessors | Complete | Remaining | Total slack | Constraint | Resources | Work | Actual work |
| --- | --- | --- | --- | --- | --- | --- | --- | --- | --- | --- | --- | --- | --- |
| 2628 | 12.2.5 | **мотор-редуктор привод шнеков** | 15.02d | 2026-08-20 09:00 A | 2026-09-09 09:10 |  | 7% | 13.95d | 130.57d |  |  | 2.33h | 0.17h |
| 2629 | 12.2.5.1 | замена масла | 2h | 2026-08-20 09:00 | 2026-08-20 11:00 |  |  |  | 145.34d | start no earlier than 2026-08-20 09:00 | Тимофеев В | 2h |  |
| 2630 | 12.2.5.2 | Проверка масла (долил уровень) | 10min | 2026-09-03 09:00 A | 2026-09-03 09:10 A |  | 100% |  |  | start no earlier than 2026-09-03 09:00 | Труфанов А | 0.17h | 0.17h |
| 2631 | 12.2.5.3 | Проверка масла | 10min | 2026-09-09 09:00 | 2026-09-09 09:10 |  |  |  | 130.57d | start no earlier than 2026-09-09 08:00 | Бобренок В | 0.17h |  |
| 2632 | 12.2.6 | **редуктор шнеков экструдера - проверка масла** | 408.03d | 2025-02-17 09:00 A | 2026-09-09 09:15 |  | 93% | 27.66d | 130.56d |  |  | 4.92h | 4.58h |
| 2633 | 12.2.6.1 | чистка фильтра редуктора | 15min | 2026-03-05 09:00 A | 2026-03-05 09:15 A |  | 100% |  |  | start no earlier than 2026-03-05 09:00 | Тимофеев В | 0.25h | 0.25h |
| 2634 | 12.2.6.2 | контоль цепи муфты привода | 5min | 2026-03-05 09:15 A | 2026-03-05 09:20 A | 2633, 2635, 2636, 2638, 2642, 2643 | 100% |  |  | start no earlier than 2026-03-04 08:00 | Тимофеев В | 0.08h | 0.08h |
| 2635 | 12.2.6.3 | чистка фильтра редуктора | 15min | 2026-03-19 09:00 A | 2026-03-19 09:15 A |  | 100% |  |  | start no earlier than 2026-03-19 09:00 | Тимофеев В | 0.25h | 0.25h |
| 2636 | 12.2.6.4 | чистка фильтра редуктора | 15min | 2026-06-18 09:00 A | 2026-06-18 09:15 A |  | 100% |  |  | start no earlier than 2026-06-18 09:00 | Тимофеев В | 0.25h | 0.25h |
| 2637 | 12.2.6.5 | чистка фильтра редуктора | 30min | 2026-08-06 08:00 A | 2026-08-06 09:30 A |  | 100% |  |  | start no earlier than 2026-08-06 08:00 | Тимофеев В | 0.5h | 0.5h |
| 2638 | 12.2.6.6 | чистка фильтра редуктора | 15min | 2026-07-14 09:00 A | 2026-07-14 09:15 A |  | 100% |  |  | start no earlier than 2026-07-14 09:00 | Бундин В | 0.25h | 0.25h |
| 2639 | 12.2.6.7 | тэны и термпоры шнеков | 2h | 2025-02-17 09:00 A | 2025-02-17 11:00 A |  | 100% |  |  | start no earlier than 2025-02-17 09:00 | Дедов В | 2h | 2h |
| 2640 | 12.2.6.8 | проверка масла | 5min | 2026-08-06 09:00 A | 2026-08-06 09:05 A |  | 100% |  |  | start no earlier than 2026-08-06 09:00 | Тимофеев В | 0.08h | 0.08h |
| 2641 | 12.2.6.9 | Проверка масла | 10min | 2026-07-30 09:00 A | 2026-07-30 09:10 A |  | 100% |  |  | start no earlier than 2026-07-30 09:00 | Бундин В | 0.17h | 0.17h |
| 2642 | 12.2.6.10 | чистка фильтра редуктора | 15min | 2026-08-13 09:00 A | 2026-08-13 09:15 A |  | 100% |  |  | start no earlier than 2026-08-13 09:00 | Тимофеев В | 0.25h | 0.25h |
| 2643 | 12.2.6.11 | чистка фильтра редуктора | 15min | 2026-08-20 09:00 A | 2026-08-20 09:15 A |  | 100% |  |  | start no earlier than 2026-08-20 09:00 | Тимофеев В | 0.25h | 0.25h |
| 2644 | 12.2.6.12 | Чистка фильтра | 15min | 2026-09-03 09:00 A | 2026-09-03 09:15 A |  | 100% |  |  | start no earlier than 2026-09-03 09:00 | Труфанов А | 0.25h | 0.25h |
| 2645 | 12.2.6.13 | Чистка фильтра | 15min | 2026-09-09 09:00 | 2026-09-09 09:15 |  |  |  | 130.56d | start no earlier than 2026-09-09 08:00 | Бобренок В | 0.25h |  |
| 2646 | 12.2.6.14 | Проверка масла | 5min | 2026-09-09 09:00 | 2026-09-09 09:05 |  |  |  | 130.58d | start no earlier than 2026-09-09 08:00 | Бобренок В | 0.08h |  |
| 2647 | 12.2.7 | **шкаф управления экструдером** | 130.02d | 2026-03-05 09:00 A | 2026-09-03 09:10 A |  | 100% |  |  |  |  | 1.33h | 1.33h |
| 2648 | 12.2.7.1 | продувка частотного привода | 10min | 2026-03-05 09:00 A | 2026-03-05 09:10 A |  | 100% |  |  | start no earlier than 2026-03-05 09:00 | Труфанов А | 0.17h | 0.17h |
| 2649 | 12.2.7.2 | продувка частотного привода | 10min | 2026-08-06 09:00 A | 2026-08-06 09:10 A |  | 100% |  |  | start no earlier than 2026-08-06 09:00 | Бундин В | 0.17h | 0.17h |
| 2650 | 12.2.7.3 | уложить и закрепить провода | 5min | 2026-03-05 09:10 A | 2026-03-05 09:15 A | 2648, 2649, 2652, 2653, 2654, 2655 | 100% |  |  | start no earlier than 2026-03-04 08:00 | Труфанов А | 0.08h | 0.08h |
| 2651 | 12.2.7.4 | протяжка контактов | 5min | 2026-03-05 09:15 A | 2026-03-05 09:20 A | 2650 | 100% |  |  | start no earlier than 2026-03-04 08:00 | Труфанов А | 0.08h | 0.08h |
| 2652 | 12.2.7.5 | продувка частотного привода | 10min | 2026-03-19 09:00 A | 2026-03-19 09:10 A |  | 100% |  |  | start no earlier than 2026-03-19 09:00 | Дедов В | 0.17h | 0.17h |
| 2653 | 12.2.7.6 | продувка частотного привода | 10min | 2026-05-14 09:00 A | 2026-05-14 09:10 A |  | 100% |  |  | start no earlier than 2026-05-14 09:00 | Макаревич А | 0.17h | 0.17h |
| 2654 | 12.2.7.7 | продувка частотного привода | 10min | 2026-08-13 09:00 A | 2026-08-13 09:10 A |  | 100% |  |  | start no earlier than 2026-08-13 09:00 | Некрасов А | 0.17h | 0.17h |
| 2655 | 12.2.7.8 | продувка частотного привода | 10min | 2026-08-20 09:00 A | 2026-08-20 09:10 A |  | 100% |  |  | start no earlier than 2026-08-20 09:00 | Дедов В | 0.17h | 0.17h |
| 2656 | 12.2.7.9 | продувка частотного привода | 10min | 2026-09-03 09:00 A | 2026-09-03 09:10 A |  | 100% |  |  | start no earlier than 2026-09-03 09:00 | Труфанов А | 0.17h | 0.17h |

| ID | WBS | Task | Duration | Start | Finish | Complete | Remaining | Total slack | Free slack | Constraint | Resources | Work | Actual work |
| --- | --- | --- | --- | --- | --- | --- | --- | --- | --- | --- | --- | --- | --- |
| 2657 | 12.2.8 | **пневотранспорт роторный питатель** | 120.04d | 2026-03-19 09:00 A | 2026-09-03 09:20 | 48% | 62.63d | 135.55d |  |  |  | 5.83h | 1.83h |
| 2658 | 12.2.8.1 | замена на ЗИП / вывод на ремонт промывку | 2h | 2026-06-25 09:00 | 2026-06-25 11:00 |  |  | 185.34d |  | start no earlier than 2026-06-25 09:00 | Труфанов А; Некрасов А | 4h |  |
| 2659 | 12.2.8.2 | проверка масла - высок температурная смазка | 1h | 2026-03-19 09:00 A | 2026-03-19 10:00 A | 100% |  |  |  | start no earlier than 2026-03-19 09:00 | Труфанов А | 1h | 1h |
| 2660 | 12.2.8.3 | Ревизия узлов/масла | 30min | 2026-07-30 09:00 A | 2026-07-30 09:30 A | 100% |  |  |  | start no earlier than 2026-07-30 09:00 | Труфанов А | 0.5h | 0.5h |
| 2661 | 12.2.8.4 | Ревизия узлов/масла (смазку свежую набил) | 20min | 2026-09-03 09:00 A | 2026-09-03 09:20 A | 100% |  |  |  | start no earlier than 2026-09-03 09:00 | Труфанов А | 0.33h | 0.33h |
| 2662 | 12.2.9 | **печь - валы этажей, подшипники, цепи** | 125.06d | 2026-03-19 09:00 A | 2026-09-09 09:30 | 88% | 15.63d | 130.53d |  |  |  | 4h | 3.5h |
| 2663 | 12.2.9.1 | осмотр смазка | 30min | 2026-03-19 09:00 A | 2026-03-19 09:30 A | 100% |  |  |  | start no earlier than 2026-03-19 09:00 | Тимофеев В | 0.5h | 0.5h |
| 2664 | 12.2.9.2 | осмотр смазка сетки | 2h | 2026-05-14 09:00 A | 2026-05-14 11:00 A | 100% |  |  |  | start no earlier than 2026-05-14 09:00 | Макаревич А | 2h | 2h |
| 2665 | 12.2.9.3 | натяжка цепей | 30min | 2026-08-13 09:00 A | 2026-08-13 09:30 A | 100% |  |  |  | start no earlier than 2026-08-13 09:00 | Некрасов А | 0.5h | 0.5h |
| 2666 | 12.2.9.4 | натяжка цепей, контроль привода | 30min | 2026-09-03 09:00 A | 2026-09-03 09:30 A | 100% |  |  |  | start no earlier than 2026-09-03 09:00 | Труфанов А | 0.5h | 0.5h |
| 2667 | 12.2.9.5 | Контроль редуктора, осмотр, проверка масла | 30min | 2026-09-09 09:00 | 2026-09-09 09:30 |  |  | 130.53d |  | start no earlier than 2026-09-09 08:00 | Труфанов А | 0.5h |  |
| 2668 | 12.2.10 | **вентиляторы обдува сушки** | 1d? | 2026-03-05 09:00 | 2026-03-05 18:00 |  |  | 0d | 264.59d |  | ТО | 8h | 8h |
| 2669 | 12.2.10.1 | чистка крыльчатки | 1d? | 2026-03-05 09:00 | 2026-03-05 18:00 |  |  | 264.59d |  | start no earlier than 2026-03-05 09:00 |  |  |  |
| 2670 | 12.2.10.2 | замена подшипников | 1d? | 2026-03-05 09:00 | 2026-03-05 18:00 |  |  | 264.59d |  | start no earlier than 2026-03-05 09:00 |  |  |  |
| 2671 | 12.2.11 | **шкаф управления тэнами сушки главный** | 130.02d | 2026-03-05 09:00 A | 2026-09-03 09:10 | 89% | 14.45d | 135.57d |  |  |  | 4.5h | 4h |
| 2672 | 12.2.11.1 | протяжка контактов, продувка шкафа, частотного привода | 10min | 2026-03-05 09:00 A | 2026-03-05 09:10 A | 100% |  |  |  | start no earlier than 2026-03-05 09:00 | Труфанов А | 0.17h | 0.17h |
| 2673 | 12.2.11.2 | протяжка контактов, продувка шкафа, частотного привода | 10min | 2026-07-14 09:00 A | 2026-07-14 09:10 A | 100% |  |  |  | start no earlier than 2026-07-14 09:00 | Некрасов А | 0.17h | 0.17h |
| 2674 | 12.2.11.3 | осмотср замена подгоревших кабелей | 30min | 2026-05-21 09:00 A | 2026-05-21 09:30 A | 100% |  |  |  | start no earlier than 2026-05-21 09:00 | Тимофеев В | 0.5h | 0.5h |
| 2675 | 12.2.11.4 | протяжка контактов, продувка шкафа, частотного привода | 30min | 2026-08-06 09:00 | 2026-08-06 09:30 |  |  | 155.53d |  | start no earlier than 2026-08-06 08:00 | Бундин В | 0.5h |  |
| 2676 | 12.2.11.5 | осмотср замена подгоревших кабелей | 30min | 2026-05-21 09:00 A | 2026-05-21 09:30 A | 100% |  |  |  | start no earlier than 2026-05-21 09:00 | Некрасов А | 0.5h | 0.5h |
| 2677 | 12.2.11.6 | продуть, протяжка контактов | 1h | 2026-05-21 08:00 A | 2026-05-21 10:00 A | 100% |  |  |  | start no earlier than 2026-05-21 08:00 | Тимофеев В | 1h | 1h |
| 2678 | 12.2.11.7 | осмотср замена подгоревших кабелей | 30min | 2026-07-14 09:00 A | 2026-07-14 09:30 A | 100% |  |  |  | start no earlier than 2026-07-14 09:00 | Труфанов А | 0.5h | 0.5h |
| 2679 | 12.2.11.8 | осмотср замена подгоревших кабелей | 1h | 2026-08-13 09:00 A | 2026-08-13 10:00 A | 100% |  |  |  | start no earlier than 2026-08-13 09:00 | Труфанов А | 1h | 1h |
| 2680 | 12.2.11.9 | продувка | 10min | 2026-09-03 09:00 A | 2026-09-03 09:10 A | 100% |  |  |  | start no earlier than 2026-09-03 09:00 | Труфанов А | 0.17h | 0.17h |

| ID | WBS | Task | Duration | Start | Finish | Complete | Remaining | Total slack | Constraint | Resources | Work | Actual work |
| --- | --- | --- | --- | --- | --- | --- | --- | --- | --- | --- | --- | --- |
| 2681 | 12.2.12 | **шкаф управления тэнами твердотельный** | 130.02d | 2026-03-05 09:00 A | 2026-09-03 09:10 A | 100% |  |  |  |  | 1.33h | 1.33h |
| 2682 | 12.2.12.1 | продувка, протяжка | 10min | 2026-03-05 09:00 A | 2026-03-05 09:10 A | 100% |  |  | start no earlier than 2026-03-05 09:00 | Труфанов А | 0.17h | 0.17h |
| 2683 | 12.2.12.2 | продувка, протяжка | 10min | 2026-07-14 09:00 A | 2026-07-14 09:10 A | 100% |  |  | start no earlier than 2026-07-14 09:00 | Труфанов А | 0.17h | 0.17h |
| 2684 | 12.2.12.3 | продувка, протяжка | 10min | 2026-08-06 09:00 A | 2026-08-06 09:10 A | 100% |  |  | start no earlier than 2026-08-06 08:00 | Бундин В | 0.17h | 0.17h |
| 2685 | 12.2.12.4 | замена подгоревших кабелей | 30min | 2026-08-13 09:00 A | 2026-08-13 09:30 A | 100% |  |  | start no earlier than 2026-08-13 09:00 | Труфанов А | 0.5h | 0.5h |
| 2686 | 12.2.12.5 | продувка, протяжка | 10min | 2026-08-06 09:00 A | 2026-08-06 09:10 A | 100% |  |  | start no earlier than 2026-08-06 08:00 | Труфанов А | 0.17h | 0.17h |
| 2687 | 12.2.12.6 | продувка, протяжка | 10min | 2026-09-03 09:00 A | 2026-09-03 09:10 A | 100% |  |  | start no earlier than 2026-09-03 09:00 | Труфанов А | 0.17h | 0.17h |
| 2688 | 12.2.13 | **конвейер №1 с печи в дрожировщик** | 130.06d | 2026-03-05 09:00 A | 2026-09-03 09:30 A | 100% |  |  |  |  | 2.08h | 2.08h |
| 2689 | 12.2.13.1 | ослабить ленту для чистки барабана / натяжка после чистки | 30min | 2026-03-05 09:00 A | 2026-03-05 09:30 A | 100% |  |  | start no earlier than 2026-03-05 09:00 | Тимофеев В | 0.5h | 0.5h |
| 2690 | 12.2.13.2 | ревизия люфтов, фиксации смазки подшипников | 30min | 2026-03-05 09:00 A | 2026-03-05 09:30 A | 100% |  |  | start no earlier than 2026-03-05 09:00 | Тимофеев В | 0.5h | 0.5h |
| 2691 | 12.2.13.3 | ослабить ленту для чистки барабана / натяжка после чистки | 10min | 2026-03-12 09:00 A | 2026-03-12 09:10 A | 100% |  |  | start no earlier than 2026-03-12 09:00 | Тимофеев В | 0.17h | 0.17h |
| 2692 | 12.2.13.4 | чистка ленты контроль операторов, если нужно ослаить | 15min | 2026-08-13 09:00 A | 2026-08-13 09:15 A | 100% |  |  | start no earlier than 2026-08-13 09:00 | Тимофеев В | 0.25h | 0.25h |
| 2693 | 12.2.13.5 | ревизия люфтов, фиксации смазки подшипников | 30min | 2026-09-03 09:00 A | 2026-09-03 09:30 A | 100% |  |  | start no earlier than 2026-09-03 09:00 | Тимофеев В | 0.5h | 0.5h |
| 2694 | 12.2.13.6 | ослабить ленту для чистки барабана / натяжка после чистки | 10min | 2026-09-03 09:00 A | 2026-09-03 09:10 A | 100% |  |  | start no earlier than 2026-09-03 09:00 | Тимофеев В | 0.17h | 0.17h |
| 2695 | 12.2.14 | **барабан смесительный дрожировка** | 700.03d | 2023-12-28 09:00 A | 2026-09-03 09:15 | 82% | 127.28d | 135.56d |  | ТО | 125h | 102.27h |
| 2696 | 12.2.14.1 | ревизия состяния валов, подшипников | 2h | 2026-02-25 09:00 A | 2026-02-25 11:00 A | 100% |  |  | start no earlier than 2026-02-25 09:00 | Тимофеев В | 2h | 2h |
| 2697 | 12.2.14.2 | ремонт вала временный. 11 час | 2h | 2026-02-25 09:00 A | 2026-02-25 11:00 A | 100% |  |  | start no earlier than 2026-02-25 09:00 | Тимофеев В | 2h | 2h |
| 2698 | 12.2.14.3 | замена подшипников мотора привода | 2h | 2026-02-25 09:00 A | 2026-02-25 11:00 A | 100% |  |  | start no earlier than 2026-02-25 09:00 | Тимофеев В | 2h | 2h |
| 2699 | 12.2.14.4 | заменаить вал дрожировки по стрелкам на 11час / после прихода с ремонта | 2h | 2026-04-30 09:00 A | 2026-04-30 11:00 A | 100% |  |  | start no earlier than 2026-04-30 09:00 | Тимофеев В | 2h | 2h |
| 2700 | 12.2.14.5 | насос подачи жира и смесительный узел, баки подогрева | 2h | 2023-12-28 09:00 | 2023-12-28 11:00 |  |  | 835.34d | start no earlier than 2023-12-28 09:00 | ТО | 2h |  |
| 2701 | 12.2.14.6 | Осмотр подшипников редукторов | 20min | 2026-07-30 09:00 A | 2026-07-30 09:20 A | 100% |  |  | start no earlier than 2026-07-30 09:00 | Труфанов А | 0.33h | 0.33h |
| 2702 | 12.2.14.7 | Осмотр подшипников редукторов | 15min | 2026-08-13 09:00 A | 2026-08-13 09:15 A | 100% |  |  | start no earlier than 2026-08-13 09:00 | Тимофеев В | 0.25h | 0.25h |
| 2703 | 12.2.14.8 | Осмотр подшипников редукторов | 15min | 2026-09-03 09:00 A | 2026-09-03 09:15 A | 100% |  |  | start no earlier than 2026-09-03 09:00 | Тимофеев В | 0.25h | 0.25h |
| 2704 | 12.2.14.9 | Осмотр соединений фитингов, трехходового крана бежит/не бежит | 10min | 2026-09-03 09:00 A | 2026-09-03 09:10 A | 100% |  |  | start no earlier than 2026-09-03 09:00 | Тимофеев В | 0.17h | 0.17h |

| ID | WBS | Task | Duration | Start | Finish | Complete | Remaining | Total slack | Constraint | Resources | Work | Actual work |
| --- | --- | --- | --- | --- | --- | --- | --- | --- | --- | --- | --- | --- |
| 2705 | 12.2.15 | **Узел подачи гидролизата** | 37.02d | 2026-07-14 09:00 A | 2026-09-03 09:10 A | 100% |  |  |  |  | 2.5h | 2.5h |
| 2706 | 12.2.15.1 | Дефектовка/ выяснить причу почему еле крутит/ устранить | 2h | 2026-07-14 09:00 A | 2026-07-14 11:00 A | 100% |  |  | start no earlier than 2026-07-14 09:00 | Бундин В | 2h | 2h |
| 2707 | 12.2.15.2 | осмотр цепи, редуктора, протяжка | 20min | 2026-08-13 09:00 A | 2026-08-13 09:20 A | 100% |  |  | start no earlier than 2026-08-13 09:00 | Тимофеев В | 0.33h | 0.33h |
| 2708 | 12.2.15.3 | Осмотр/ревизия насоса гидролизата, проверка всех соединений | 10min | 2026-09-03 09:00 A | 2026-09-03 09:10 A | 100% |  |  | start no earlier than 2026-09-03 09:00 | Тимофеев В | 0.17h | 0.17h |
| 2709 | 12.2.16 | **конвейер №2 с дрожировки в охладитель** | 130.06d | 2026-03-05 09:00 A | 2026-09-03 09:30 A | 100% |  |  |  |  | 2.17h | 2.17h |
| 2710 | 12.2.16.1 | ослабить ленту для чистки барабана / натяжка после чистки | 30min | 2026-03-05 09:00 A | 2026-03-05 09:30 A | 100% |  |  | start no earlier than 2026-03-05 09:00 | Тимофеев В | 0.5h | 0.5h |
| 2711 | 12.2.16.2 | ревизия люфтов, фиксации смазки подшипников | 30min | 2026-03-05 09:00 A | 2026-03-05 09:30 A | 100% |  |  | start no earlier than 2026-03-05 09:00 | Тимофеев В | 0.5h | 0.5h |
| 2712 | 12.2.16.3 | ослабить ленту для чистки барабана / натяжка после чистки | 10min | 2026-03-12 09:00 A | 2026-03-12 09:10 A | 100% |  |  | start no earlier than 2026-03-12 09:00 | Тимофеев В | 0.17h | 0.17h |
| 2713 | 12.2.16.4 | чистка ленты контроль операторов, если нужно ослаить | 15min | 2026-08-13 09:00 A | 2026-08-13 09:15 A | 100% |  |  | start no earlier than 2026-08-13 09:00 | Тимофеев В | 0.25h | 0.25h |
| 2714 | 12.2.16.5 | чистка ленты контроль операторов, если нужно ослаить | 15min | 2026-08-13 09:00 A | 2026-08-13 09:15 A | 100% |  |  | start no earlier than 2026-08-13 09:00 | Тимофеев В | 0.25h | 0.25h |
| 2715 | 12.2.16.6 | ослабить ленту для чистки барабана / натяжка после чистки | 30min | 2026-09-03 09:00 A | 2026-09-03 09:30 A | 100% |  |  | start no earlier than 2026-09-03 09:00 | Тимофеев В | 0.5h | 0.5h |
| 2716 | 12.2.17 | **охладитель сеточный** | 625.12d? | 2024-04-18 09:00 A | 2026-09-09 10:00 | 53% | 292.4d? | 130.47d |  |  | 15.67h | 14h |
| 2717 | 12.2.17.1 | ревизия осей сетки, замена шплинтов | 2h | 2024-04-18 09:00 A | 2024-04-18 11:00 A | 100% |  |  | start no earlier than 2024-04-18 08:00 | Некрасов А; Черепанов И | 4h | 4h |
| 2718 | 12.2.17.2 | ревизия привода - масло, ремень (не проверено масло) | 10min | 2026-03-19 09:00 A | 2026-03-19 09:10 A | 100% |  |  | start no earlier than 2026-03-05 09:00 | Тимофеев В | 0.17h | 0.17h |
| 2719 | 12.2.17.3 | ревизия привода - масло, ремень (не проверено масло) | 10min | 2026-07-14 09:00 | 2026-07-14 09:10 |  |  | 172.57d | start no earlier than 2026-07-14 09:00 | Некрасов А | 0.17h |  |
| 2720 | 12.2.17.4 | ревизия состояния сетки | 2h | 2026-07-14 09:00 A | 2026-07-14 11:00 A | 100% |  |  | start no earlier than 2026-07-14 08:00 | Некрасов А | 2h | 2h |
| 2721 | 12.2.17.5 | ревизия состояния сетки | 1h | 2026-07-30 09:00 A | 2026-07-30 10:00 A | 100% |  |  | start no earlier than 2026-07-30 09:00 | Бундин В | 1h | 1h |
| 2722 | 12.2.17.6 | ревизия состояния сетки | 1d? | 2026-08-20 09:00 | 2026-08-20 18:00 |  |  | 144.59d | start no earlier than 2026-08-20 09:00 |  |  |  |
| 2723 | 12.2.17.7 | контроль натяжки цепей | 20min | 2026-03-05 09:00 A | 2026-03-05 09:20 A | 100% |  |  | start no earlier than 2026-03-05 09:00 | Бундин В | 0.33h | 0.33h |
| 2724 | 12.2.17.8 | текущий ремонт силиконовых уплотнений | 30min | 2026-03-05 09:00 A | 2026-03-05 09:30 A | 100% |  |  | start no earlier than 2026-03-05 09:00 | Бундин В | 0.5h | 0.5h |
| 2725 | 12.2.17.9 | осмотр ремней, натяжка цепей, ремонт силиконовых отбортовок | 1h | 2026-05-14 09:00 A | 2026-05-14 10:00 A | 100% |  |  | start no earlier than 2026-05-14 09:00 | Макаревич А | 1h | 1h |
| 2726 | 12.2.17.10 | осмотр ремней, натяжка цепей, ремонт силиконовых отбортовок | 1h | 2026-07-14 09:00 A | 2026-07-14 10:00 A | 100% |  |  | start no earlier than 2026-07-14 09:00 | Некрасов А | 1h | 1h |
| 2727 | 12.2.17.11 | осмотр ремней, натяжка цепей, ремонт силиконовых отбортовок | 1h | 2026-07-30 09:00 A | 2026-07-30 10:00 A | 100% |  |  | start no earlier than 2026-07-30 09:00 | Бундин В | 1h | 1h |
| 2728 | 12.2.17.12 | осмотр ремней, натяжка цепей, ремонт силиконовых отбортовок | 1h | 2026-08-20 09:00 A | 2026-08-20 10:00 A | 100% |  |  | start no earlier than 2026-08-20 09:00 | Труфанов А; Некрасов А | 2h | 2h |
| 2729 | 12.2.17.13 | осмотр ремней, натяжка цепей, ремонт силиконовых отбортовок | 1h | 2026-08-20 09:00 A | 2026-08-20 10:00 A | 100% |  |  | start no earlier than 2026-08-20 09:00 | Дедов В | 1h | 1h |
| 2730 | 12.2.17.14 | Ревизия сетки, контроль роспуска, подогнуть, где что можно, что бы не зацепилось | 1h | 2026-09-09 09:00 | 2026-09-09 10:00 |  |  | 130.47d | start no earlier than 2026-09-09 09:00 | Некрасов А | 1h |  |
| 2731 | 12.2.17.15 | Смазка подшипников привод охладителя | 30min | 2026-09-09 09:00 | 2026-09-09 09:30 |  |  | 130.53d | start no earlier than 2026-09-09 08:00 | Тимофеев В | 0.5h |  |

| ID | WBS | Task | Duration | Start | Finish | Predecessors | Complete | Remaining | Total slack | Free slack | Constraint | Resources | Work | Actual work |
| --- | --- | --- | --- | --- | --- | --- | --- | --- | --- | --- | --- | --- | --- | --- |
| 2732 | 12.2.18 | **конвейер 3 с охладителя в упаковку** | 16.03d | 2026-08-12 09:00 A | 2026-09-03 09:15 A |  | 100% |  |  |  |  | ТО | 129h | 129h |
| 2733 | 12.2.18.1 | ослабить ленту для чистки барабана / натяжка после чистки | 15min | 2026-08-12 09:00 A | 2026-08-12 09:15 A |  | 100% |  |  |  | start no earlier than 2026-08-12 09:00 | Тимофеев В | 0.25h | 0.25h |
| 2734 | 12.2.18.2 | ревизия люфтов, фиксации, смазки подшипников | 15min | 2026-08-12 09:00 A | 2026-08-12 09:15 A |  | 100% |  |  |  | start no earlier than 2026-08-12 09:00 | Тимофеев В | 0.25h | 0.25h |
| 2735 | 12.2.18.3 | ослабить ленту для чистки барабана / натяжка после чистки | 15min | 2026-09-03 09:00 A | 2026-09-03 09:15 A |  | 100% |  |  |  | start no earlier than 2026-09-03 09:00 | Макаревич А | 0.25h | 0.25h |
| 2736 | 12.2.19 | **упаковка** | 700.25d | 2023-12-28 09:00 A | 2026-09-03 11:00 A |  | 100% |  |  |  |  | ТО | 5100h | 5100h |
| 2737 | 12.2.19.1 | НОТИС 1 | 2h | 2023-12-28 09:00 A | 2023-12-28 11:00 A |  | 100% |  |  |  | start no earlier than 2023-12-28 09:00 | ТО | 2h | 2h |
| 2738 | 12.2.19.2 | НОТИС 2 | 2h | 2023-12-28 09:00 A | 2023-12-28 11:00 A |  | 100% |  |  |  | start no earlier than 2023-12-28 09:00 | ТО | 2h | 2h |
| 2739 | 12.2.19.3 | запайщик 1 | 2h | 2026-06-18 09:00 A | 2026-06-18 11:00 A |  | 100% |  |  |  | start no earlier than 2026-06-18 09:00 | Труфанов А | 2h | 2h |
| 2740 | 12.2.19.4 | запайщик 2 | 2h | 2026-06-18 09:00 A | 2026-06-18 11:00 A |  | 100% |  |  |  | start no earlier than 2026-06-18 09:00 | Труфанов А | 2h | 2h |
| 2741 | 12.2.19.5 | запайщик 1 проверка перемычек/тефлона замена при необходимости | 2h | 2026-09-03 09:00 A | 2026-09-03 11:00 A |  | 100% |  |  |  | start no earlier than 2026-09-03 09:00 | Макаревич А | 2h | 2h |
| 2742 | 12.2.19.6 | запайщик 1 проверка перемычек/тефлона замена при необходимости | 2h | 2026-09-03 09:00 A | 2026-09-03 11:00 A |  | 100% |  |  |  | start no earlier than 2026-09-03 09:00 | Макаревич А | 2h | 2h |
| 2743 | 12.2.20 | **квадропак** | 16.25d | 2026-08-27 09:00 A | 2026-09-17 11:00 |  | 18% | 13.3d | 124.34d |  |  |  | 5.5h | 1h |
| 2744 | 12.2.20.1 | смазка вращающиющихся механизмов | 30min | 2026-08-27 09:00 | 2026-08-27 09:30 |  |  |  | 140.34d | 0d | start no earlier than 2026-08-27 09:00 | Тимофеев В | 0.5h |  |
| 2745 | 12.2.20.2 | протяжка креплений поворотных лап захвата | 30min | 2026-08-27 09:30 | 2026-08-27 10:00 | 2744 |  |  | 140.34d | 0d | start no earlier than 2026-03-05 09:00 | Тимофеев В | 0.5h |  |
| 2746 | 12.2.20.3 | чистка вала ленты выгрзного транспортера | 30min | 2026-08-27 10:00 | 2026-08-27 10:30 | 2745 |  |  | 140.34d | 0d | start no earlier than 2026-03-31 08:00 | Тимофеев В | 0.5h |  |
| 2747 | 12.2.20.4 | осмотр приводной системы нории / смазка | 30min | 2026-08-27 10:30 | 2026-08-27 11:00 | 2746 |  |  | 140.34d |  | start no earlier than 2026-08-12 09:00 | Тимофеев В | 0.5h |  |
| 2748 | 12.2.20.5 | осмотр приводной системы нории / смазка | 30min | 2026-08-27 10:30 | 2026-08-27 11:00 | 2746 |  |  | 140.34d |  | start no earlier than 2026-08-20 09:00 | Дедов В | 0.5h |  |
| 2749 | 12.2.20.6 | осмотр приводной системы нории / смазка | 30min | 2026-09-03 09:00 A | 2026-09-03 09:30 A |  | 100% |  |  |  | start no earlier than 2026-09-03 09:00 | Макаревич А | 0.5h | 0.5h |
| 2750 | 12.2.20.7 | протяжка креплений поворотных лап захвата | 30min | 2026-09-03 09:00 A | 2026-09-03 09:30 A |  | 100% |  |  |  | start no earlier than 2026-09-03 09:00 | Макаревич А | 0.5h | 0.5h |
| 2751 | 12.2.20.8 | снимать ковши для доступка к подшинику, нуждающего в смазке( сообщил Некрасов) | 2h | 2026-09-17 09:00 | 2026-09-17 11:00 |  |  |  | 124.34d |  | start no earlier than 2026-09-17 09:00 | Некрасов А | 2h |  |
| 2752 | 12.2.21 | **БЕСТРОМ** | 706.06d | 2023-12-28 09:00 A | 2026-09-10 09:30 |  | 71% | 201.73d | 129.53d |  |  | ТО | 1096.83h | 67.83h |
| 2753 | 12.2.21.1 | чистка тен с демантожем | 2.5h | 2026-03-05 09:00 A | 2026-03-05 11:30 A |  | 100% |  |  |  | start no earlier than 2026-03-05 09:00 | Бундин В | 2.5h | 2.5h |
| 2754 | 12.2.21.2 | ослабить ленту для чистки барабана / натяжка после чистки | 10min | 2026-03-12 09:00 A | 2026-03-12 09:10 A |  | 100% |  |  |  | start no earlier than 2026-03-12 09:00 | Бундин В | 0.17h | 0.17h |
| 2755 | 12.2.21.3 | чистка тенов | 1h | 2026-05-14 09:00 A | 2026-05-14 10:00 A |  | 100% |  |  |  | start no earlier than 2026-05-14 09:00 | Макаревич А | 1h | 1h |
| 2756 | 12.2.21.4 | чистка тенов | 2h | 2026-07-14 09:00 | 2026-07-14 11:00 |  |  |  | 172.34d |  | start no earlier than 2026-07-14 09:00 | Бундин В | 2h |  |
| 2757 | 12.2.21.5 | конвейер и вибробункер БЕСТРОМ | 2h | 2023-12-28 09:00 | 2023-12-28 11:00 |  |  |  | 835.34d |  | start no earlier than 2023-12-28 09:00 | ТО | 2h |  |
| 2758 | 12.2.21.6 | бестром чистка тен, проверка тефлона, роликов (согласовать с мастером) | 2h | 2026-07-08 09:00 A | 2026-07-08 11:00 A |  | 100% |  |  |  | start no earlier than 2026-07-08 09:00 | Бобренок В | 2h | 2h |
| 2759 | 12.2.21.7 | бестром чистка тен, проверка тефлона, роликов (согласовать с мастером) | 1h | 2026-07-30 09:00 A | 2026-07-30 10:00 A |  | 100% |  |  |  | start no earlier than 2026-07-30 09:00 | Тимофеев В | 1h | 1h |
| 2760 | 12.2.21.8 | бестром чистка тен, проверка тефлона, роликов (согласовать с мастером) | 1h | 2026-08-13 09:00 A | 2026-08-13 10:00 A |  | 100% |  |  |  | start no earlier than 2026-08-13 09:00 | Тимофеев В | 1h | 1h |
| 2761 | 12.2.21.9 | бестром чистка тен, проверка тефлона, роликов (согласовать с мастером) | 1h | 2026-08-20 09:00 A | 2026-08-20 10:00 A |  | 100% |  |  |  | start no earlier than 2026-08-20 09:00 | Дедов В | 1h | 1h |
| 2762 | 12.2.21.10 | бестром чистка тен, проверка тефлона, роликов (согласовать с мастером) | 1h | 2026-09-03 09:00 A | 2026-09-03 10:00 A |  | 100% |  |  |  | start no earlier than 2026-09-03 09:00 | Макаревич А | 1h | 1h |
| 2763 | 12.2.21.11 | Замена линейного подшипника ISKRA KH2030-PP (согласование с Домоводовым) не делали, все норм там) | 2h | 2026-09-03 09:00 A | 2026-09-03 11:00 A |  | 100% |  |  |  | start no earlier than 2026-09-03 09:00 | Макаревич А | 2h | 2h |
| 2764 | 12.2.21.12 | ослабить ленту для чистки барабана / натяжка после чистки | 10min | 2026-09-10 09:00 | 2026-09-10 09:10 |  |  |  | 129.57d |  | start no earlier than 2026-09-10 09:00 | Макаревич А | 0.17h |  |
| 2765 | 12.2.21.13 | Замена поролоновой губки на горизонтальных тенах запайки пакетов | 30min | 2026-09-10 09:00 | 2026-09-10 09:30 |  |  |  | 129.53d |  | start no earlier than 2026-09-10 09:00 | Макаревич А | 0.5h |  |

| ID | WBS | Task | Duration | Start | Finish | Complete | Remaining | Total slack | Constraint | Resources | Work | Actual work |
| --- | --- | --- | --- | --- | --- | --- | --- | --- | --- | --- | --- | --- |
| 2766 | 12.2.22 | **электрооборудование** | 700.02d? | 2023-12-28 09:00 A | 2026-09-03 09:10 |  | 696.66d? | 135.57d |  |  | 69.33h | 0.33h |
| 2767 | 12.2.22.1 | ВРУ3 | 30min | 2024-10-03 09:00 | 2024-10-03 09:30 |  |  | 635.53d | start no earlier than 2024-10-03 09:00 | Тимофеев В | 0.5h |  |
| 2768 | 12.2.22.2 | ВРУ4 | 2h | 2023-12-28 09:00 | 2023-12-28 11:00 |  |  | 835.34d | start no earlier than 2023-12-28 09:00 | ТО | 2h |  |
| 2769 | 12.2.22.3 | ВРУ5 | 2h | 2023-12-28 09:00 | 2023-12-28 11:00 |  |  | 835.34d | start no earlier than 2023-12-28 09:00 | ТО | 2h |  |
| 2770 | 12.2.22.4 | ВРУ6 | 2h | 2023-12-28 09:00 | 2023-12-28 11:00 |  |  | 835.34d | start no earlier than 2023-12-28 09:00 | ТО | 2h |  |
| 2771 | 12.2.22.5 | ЩР4 у печи | 2h | 2023-12-28 09:00 | 2023-12-28 11:00 |  |  | 835.34d | start no earlier than 2023-12-28 09:00 | ТО | 2h |  |
| 2772 | 12.2.22.6 | ЩО1 у печи | 30min | 2024-10-03 09:00 | 2024-10-03 09:30 |  |  | 635.53d | start no earlier than 2024-10-03 09:00 | Тимофеев В | 0.5h |  |
| 2773 | 12.2.22.7 | ЩР5 у жиротопки | 2h | 2023-12-28 09:00 | 2023-12-28 11:00 |  |  | 835.34d | start no earlier than 2023-12-28 09:00 | ТО | 2h |  |
| 2774 | 12.2.22.8 | ЩР6 упаковка стна жир | 2h | 2023-12-28 09:00 | 2023-12-28 11:00 |  |  | 835.34d | start no earlier than 2023-12-28 09:00 | ТО | 2h |  |
| 2775 | 12.2.22.9 | ЩР7 упаковка колонна | 2h | 2023-12-28 09:00 | 2023-12-28 11:00 |  |  | 835.34d | start no earlier than 2023-12-28 09:00 | ТО | 2h |  |
| 2776 | 12.2.22.10 | ЩР8 склад навесок | 2h | 2023-12-28 09:00 | 2023-12-28 11:00 |  |  | 835.34d | start no earlier than 2023-12-28 09:00 | ТО | 2h |  |
| 2777 | 12.2.22.11 | ЩР9 2 этаж | 2h | 2023-12-28 09:00 | 2023-12-28 11:00 |  |  | 835.34d | start no earlier than 2023-12-28 09:00 | ТО | 2h |  |
| 2778 | 12.2.22.12 | электрокотел 1 - 2 цех | 2h | 2023-12-28 09:00 | 2023-12-28 11:00 |  |  | 835.34d | start no earlier than 2023-12-28 09:00 | ТО | 2h |  |
| 2779 | 12.2.22.13 | электрокотел 2 - 2 цех | 1d? | 2023-12-28 09:00 | 2023-12-28 18:00 |  |  | 834.59d | start no earlier than 2023-12-28 09:00 | ТО | 8h |  |
| 2780 | 12.2.22.14 | электрокотел 3 - 2 цех | 1d? | 2023-12-28 09:00 | 2023-12-28 18:00 |  |  | 834.59d | start no earlier than 2023-12-28 09:00 | ТО | 8h |  |
| 2781 | 12.2.22.15 | бойлер 4 2 цех раковина | 1d? | 2023-12-28 09:00 | 2023-12-28 18:00 |  |  | 834.59d | start no earlier than 2023-12-28 09:00 | ТО | 8h |  |
| 2782 | 12.2.22.16 | бойлер 5 2 цех душ М | 1d? | 2023-12-28 09:00 | 2023-12-28 18:00 |  |  | 834.59d | start no earlier than 2023-12-28 09:00 | ТО | 8h |  |
| 2783 | 12.2.22.17 | бойлер 6 2 цех душ Ж | 1d? | 2023-12-28 09:00 | 2023-12-28 18:00 |  |  | 834.59d | start no earlier than 2023-12-28 09:00 | ТО | 8h |  |
| 2784 | 12.2.22.18 | насос санитарный | 1d? | 2023-12-28 09:00 | 2023-12-28 18:00 |  |  | 834.59d | start no earlier than 2023-12-28 09:00 | ТО | 8h |  |
| 2785 | 12.2.22.19 | ЩР4 у печи продувка | 10min | 2026-09-03 09:00 A | 2026-09-03 09:10 A | 100% |  |  | start no earlier than 2026-09-03 09:00 | Труфанов А | 0.17h | 0.17h |
| 2786 | 12.2.22.20 | ЩО1 у печи продувка | 10min | 2026-09-03 09:00 A | 2026-09-03 09:10 A | 100% |  |  | start no earlier than 2026-09-03 09:00 | Труфанов А | 0.17h | 0.17h |
| 2787 | 12.2.23 | **Компрессор 2 цех** | 25.06d | 2026-08-06 09:00 A | 2026-09-09 09:30 | 88% | 3.13d | 130.53d |  | ТО | 4h | 3.5h |
| 2788 | 12.2.23.1 | продувка фильтров | 30min | 2026-08-06 09:00 A | 2026-08-06 09:30 A | 100% |  |  | start no earlier than 2026-08-06 09:00 | Тимофеев В | 0.5h | 0.5h |
| 2789 | 12.2.23.2 | слив конденсат с осушителя | 30min | 2026-08-06 09:00 A | 2026-08-06 09:30 A | 100% |  |  | start no earlier than 2026-08-06 09:00 | Тимофеев В | 0.5h | 0.5h |
| 2790 | 12.2.23.3 | слив конденсат с осушителя | 30min | 2026-08-20 09:00 A | 2026-08-20 09:30 A | 100% |  |  | start no earlier than 2026-08-20 09:00 | Дедов В | 0.5h | 0.5h |
| 2791 | 12.2.23.4 | продувка фильтров | 30min | 2026-08-29 09:00 A | 2026-08-31 09:30 A | 100% |  |  | start no earlier than 2026-08-29 09:00 | Макаревич А | 0.5h | 0.5h |
| 2792 | 12.2.23.5 | слив конденсат с осушителя | 30min | 2026-08-29 09:00 A | 2026-08-31 09:30 A | 100% |  |  | start no earlier than 2026-08-29 09:00 | Макаревич А | 0.5h | 0.5h |
| 2793 | 12.2.23.6 | слив конденсат с осушителя | 30min | 2026-08-29 09:00 A | 2026-08-31 09:30 A | 100% |  |  | start no earlier than 2026-08-29 09:00 | Макаревич А | 0.5h | 0.5h |
| 2794 | 12.2.23.7 | слив конденсат с осушителя | 30min | 2026-09-03 09:00 A | 2026-09-03 09:30 A | 100% |  |  | start no earlier than 2026-09-03 09:00 | Макаревич А | 0.5h | 0.5h |
| 2795 | 12.2.23.8 | продувка фильтров (дать размеры фильтра) | 30min | 2026-09-09 09:00 | 2026-09-09 09:30 |  |  | 130.53d | start no earlier than 2026-09-09 09:00 | Труфанов А | 0.5h |  |

| ID | WBS | Task | Duration | Start | Finish | Complete | Remaining | Total slack | Constraint | Resources | Work | Actual work |
| --- | --- | --- | --- | --- | --- | --- | --- | --- | --- | --- | --- | --- |
| 2796 | 12.2.24 | **насосная станция 2 цех** | 130.06d | 2026-03-05 09:00 A | 2026-09-03 09:30 A | 100% |  |  |  |  | 1h | 1h |
| 2797 | 12.2.24.1 | замена фильтров | 30min | 2026-03-05 09:00 A | 2026-03-05 09:30 A | 100% |  |  | start no earlier than 2026-03-05 09:00 | Тимофеев В | 0.5h | 0.5h |
| 2798 | 12.2.24.2 | замена фильтров | 30min | 2026-09-03 09:00 A | 2026-09-03 09:30 A | 100% |  |  | start no earlier than 2026-09-03 09:00 | Труфанов А | 0.5h | 0.5h |
| 2799 | 12.2.25 | **приточнго-вытяжная венгтиляция и смесительный узел** | 0.12d | 2026-04-16 09:00 A | 2026-04-16 10:00 A | 100% |  |  |  | ТО | 3h | 3h |
| 2800 | 12.2.25.1 | замена фильтра | 1h | 2026-04-16 09:00 A | 2026-04-16 10:00 A | 100% |  |  | start no earlier than 2026-04-16 09:00 | Труфанов А; Некрасов А | 2h | 2h |
| 2801 | 12.2.26 | **кондиционер 1** | 625.04d? | 2024-04-18 09:00 A | 2026-09-09 09:20 | 97% | 19.53d? | 130.55d |  | ТО | 5021.67h | 4825.99h |
| 2802 | 12.2.26.1 | чистка фильтра | 1h | 2024-04-18 09:00 A | 2024-04-18 10:00 A | 100% |  |  | start no earlier than 2024-04-18 08:00 | Черепанов И; Некрасов А | 2h | 2h |
| 2803 | 12.2.26.2 | чистка фильтра | 20min | 2026-03-05 09:00 A | 2026-03-05 09:20 A | 100% |  |  | start no earlier than 2026-03-05 09:00 | Некрасов А; Бундин В | 0.67h | 0.67h |
| 2804 | 12.2.26.3 | чистка фильтров | 1d? | 2026-06-25 09:00 A | 2026-06-25 18:00 A | 100% |  |  | start no earlier than 2026-06-25 09:00 | Тимофеев В; Дедов В | 16h | 16h |
| 2805 | 12.2.26.4 | чистка фильтров | 20min | 2026-07-14 09:00 A | 2026-07-14 09:20 A | 100% |  |  | start no earlier than 2026-07-14 09:00 | Некрасов А; Бундин В | 0.67h | 0.67h |
| 2806 | 12.2.26.5 | чистка фильтров | 20min | 2026-08-13 09:00 A | 2026-08-13 09:20 A | 100% |  |  | start no earlier than 2026-08-13 09:00 | Некрасов А; Труфанов А | 0.67h | 0.67h |
| 2807 | 12.2.26.6 | чистка фильтров | 20min | 2026-09-03 09:00 A | 2026-09-03 09:20 A | 100% |  |  | start no earlier than 2026-09-03 09:00 | Некрасов А; Тимофеев В | 0.67h | 0.67h |
| 2808 | 12.2.26.7 | чистка фильтров | 20min | 2026-09-09 09:00 | 2026-09-09 09:20 |  |  | 130.55d | start no earlier than 2026-09-09 09:00 | Некрасов А; Тимофеев В | 0.67h |  |
| 2809 | 12.2.27 | **кондиционер 2** | 625.06d? | 2024-04-18 09:00 A | 2026-09-09 09:30 | 96% | 27.99d? | 130.53d |  | ТО | 5022.83h | 4981.67h |
| 2810 | 12.2.27.1 | чистка фильтров | 1d? | 2026-06-25 09:00 A | 2026-06-25 18:00 A | 100% |  |  | start no earlier than 2026-06-25 09:00 | Тимофеев В; Дедов В | 16h | 16h |
| 2811 | 12.2.27.2 | чистка фильтра | 1h | 2024-04-18 09:00 A | 2024-04-18 10:00 A | 100% |  |  | start no earlier than 2024-04-18 08:00 | Черепанов И; Некрасов А | 2h | 2h |
| 2812 | 12.2.27.3 | чистка фильтра | 20min | 2026-03-05 09:00 A | 2026-03-05 09:20 A | 100% |  |  | start no earlier than 2026-03-05 09:00 | Некрасов А; Бундин В | 0.67h | 0.67h |
| 2813 | 12.2.27.4 | чистка фильтров | 20min | 2026-07-14 09:00 A | 2026-07-14 09:20 A | 100% |  |  | start no earlier than 2026-07-14 09:00 | Некрасов А; Бундин В | 0.67h | 0.67h |
| 2814 | 12.2.27.5 | чистка фильтров | 20min | 2026-08-13 09:00 A | 2026-08-13 09:20 A | 100% |  |  | start no earlier than 2026-08-13 09:00 | Некрасов А; Труфанов А | 0.67h | 0.67h |
| 2815 | 12.2.27.6 | чистка фильтров | 20min | 2026-08-13 09:00 A | 2026-08-13 09:20 A | 100% |  |  | start no earlier than 2026-08-13 09:00 | Некрасов А; Труфанов А | 0.67h | 0.67h |
| 2816 | 12.2.27.7 | чистка фильтров | 20min | 2026-09-03 09:00 A | 2026-09-03 09:20 A | 100% |  |  | start no earlier than 2026-09-03 09:00 | Некрасов А; Тимофеев В | 0.67h | 0.67h |
| 2817 | 12.2.27.8 | чистка фильтров | 30min | 2026-09-09 09:00 | 2026-09-09 09:30 |  |  | 130.53d | start no earlier than 2026-09-09 08:00 | Некрасов А; Тимофеев В | 1h |  |
| 2818 | 12.2.28 | **кондиционер 3** | 135.04d | 2026-03-05 09:00 A | 2026-09-09 09:20 | 83% | 22.51d | 130.55d |  |  | 4h | 3.33h |
| 2819 | 12.2.28.1 | чистка фильтра | 20min | 2026-03-05 09:00 A | 2026-03-05 09:20 A | 100% |  |  | start no earlier than 2026-03-05 09:00 | Некрасов А; Бундин В | 0.67h | 0.67h |
| 2820 | 12.2.28.2 | чистка фильтров | 20min | 2026-07-14 09:00 A | 2026-07-14 09:20 A | 100% |  |  | start no earlier than 2026-07-14 09:00 | Некрасов А; Бундин В | 0.67h | 0.67h |
| 2821 | 12.2.28.3 | чистка фильтров | 20min | 2026-08-13 09:00 A | 2026-08-13 09:20 A | 100% |  |  | start no earlier than 2026-08-13 09:00 | Некрасов А; Труфанов А | 0.67h | 0.67h |
| 2822 | 12.2.28.4 | чистка фильтров | 20min | 2026-08-13 09:00 A | 2026-08-13 09:20 A | 100% |  |  | start no earlier than 2026-08-13 09:00 | Некрасов А; Труфанов А | 0.67h | 0.67h |
| 2823 | 12.2.28.5 | чистка фильтров | 20min | 2026-09-03 09:00 A | 2026-09-03 09:20 A | 100% |  |  | start no earlier than 2026-09-03 09:00 | Некрасов А; Тимофеев В | 0.67h | 0.67h |
| 2824 | 12.2.28.6 | чистка фильтров | 20min | 2026-09-09 09:00 | 2026-09-09 09:20 |  |  | 130.55d | start no earlier than 2026-09-09 09:00 | Некрасов А; Тимофеев В | 0.67h |  |

| ID | WBS | Task | Type | Duration | Start | Finish | Complete | Remaining | Total slack | Constraint | Resources | Work | Actual work |
| --- | --- | --- | --- | --- | --- | --- | --- | --- | --- | --- | --- | --- | --- |
| 2825 | 12.2.29 | **электроштабелер** |  | 2.38d | 2026-08-11 09:00 A | 2026-08-13 12:00 A | 100% |  |  |  | ТО | 22.25h | 22.25h |
| 2826 | 12.2.29.1 | **хруст в колесе устранить** |  | 2.38d | 2026-08-11 09:00 A | 2026-08-13 12:00 A | 100% |  |  |  |  | 3.25h | 3.25h |
| 2827 | 12.2.29.1.1 | хруст с правой стороны штабелера- ревизия, скорее всего подшипник (экструдер). Осмотр, доложить | manual | 15min | 2026-08-11 09:00 A | 2026-08-11 09:15 A | 100% |  |  | start no earlier than 2026-08-11 09:00 | Тимофеев В | 0.25h | 0.25h |
| 2828 | 12.2.29.1.2 | ремонт замена подшипник колесо штабелер |  | 3h | 2026-08-13 09:00 A | 2026-08-13 12:00 A | 100% |  |  | start no earlier than 2026-08-13 09:00 | Тимофеев В | 3h | 3h |
| 2829 | 12.3 | **3 цех** |  | 1d? | 2023-12-28 09:00 | 2023-12-28 18:00 |  |  | 834.59d |  | ТО | 88h |  |
| 2830 | 12.3.1 | **электрооборудование** |  | 1d? | 2023-12-28 09:00 | 2023-12-28 18:00 |  |  | 834.59d |  | ТО | 48h |  |
| 2831 | 12.3.1.1 | ВРУ7 |  | 1d? | 2023-12-28 09:00 | 2023-12-28 18:00 |  |  | 834.59d | start no earlier than 2023-12-28 09:00 | ТО | 8h |  |
| 2832 | 12.3.1.2 | ОЩР |  | 1d? | 2023-12-28 09:00 | 2023-12-28 18:00 |  |  | 834.59d | start no earlier than 2023-12-28 09:00 | ТО | 8h |  |
| 2833 | 12.3.1.3 | электрокотел 4 - 3 цех |  | 1d? | 2023-12-28 09:00 | 2023-12-28 18:00 |  |  | 834.59d | start no earlier than 2023-12-28 09:00 | ТО | 8h |  |
| 2834 | 12.3.1.4 | электрокотел 5 - 3 цех |  | 1d? | 2023-12-28 09:00 | 2023-12-28 18:00 |  |  | 834.59d | start no earlier than 2023-12-28 09:00 | ТО | 8h |  |
| 2835 | 12.3.1.5 | электрокотел 6 - 3 цех |  | 1d? | 2023-12-28 09:00 | 2023-12-28 18:00 |  |  | 834.59d | start no earlier than 2023-12-28 09:00 | ТО | 8h |  |
| 2836 | 12.3.2 | электроштабелер 1 |  | 1d? | 2023-12-28 09:00 | 2023-12-28 18:00 |  |  | 834.59d | start no earlier than 2023-12-28 09:00 | ТО | 8h |  |
| 2837 | 12.3.3 | электроштабелер 2 |  | 1d? | 2023-12-28 09:00 | 2023-12-28 18:00 |  |  | 834.59d | start no earlier than 2023-12-28 09:00 | ТО | 8h |  |
| 2838 | 12.3.4 | вилочный погрузчик 1 |  | 1d? | 2023-12-28 09:00 | 2023-12-28 18:00 |  |  | 834.59d | start no earlier than 2023-12-28 09:00 | ТО | 8h |  |
| 2839 | 12.3.5 | вилочный погрузчик 2 |  | 1d? | 2023-12-28 09:00 | 2023-12-28 18:00 |  |  | 834.59d | start no earlier than 2023-12-28 09:00 | ТО | 8h |  |
| 2840 | 12.4 | **5 цех** |  | 656.25d? | 2023-12-28 09:00 A | 2026-07-03 11:00 | 10% | 593.75d? | 179.34d |  | ТО | 6302h | 906.67h |
| 2841 | 12.4.1 | насосная станция 5 цех |  | 1d? | 2023-12-28 09:00 | 2023-12-28 18:00 |  |  | 834.59d | start no earlier than 2023-12-28 09:00 | ТО | 8h |  |
| 2842 | 12.4.2 | растариватель |  | 1d? | 2023-12-28 09:00 | 2023-12-28 18:00 |  |  | 834.59d | start no earlier than 2023-12-28 09:00 | ТО | 8h |  |
| 2843 | 12.4.3 | **шнек 1 растариватель-смеситель** |  | 65.25d | 2026-04-03 09:00 A | 2026-07-03 11:00 | 67% | 21.75d | 0d |  | ТО | 492h | 342.67h |
| 2844 | 12.4.3.1 | замена подшипник нижний | manual | 2h | 2026-04-03 09:00 A | 2026-04-03 11:00 A | 100% |  |  |  | Некрасов А; Труфанов А | 4h | 4h |
| 2845 | 12.4.3.2 | ревизия подшипник верхний - не снимается.ревизия - все ок, мазка | manual | 2h | 2026-04-03 09:00 A | 2026-04-03 11:00 A | 100% |  |  |  | Некрасов А; Труфанов А | 4h | 4h |
| 2846 | 12.4.3.3 | осмотр износа, смазка | manual | 2h | 2026-07-03 09:00 | 2026-07-03 11:00 |  |  |  |  | Тимофеев В | 2h |  |
| 2847 | 12.4.4 | смеситель СМ1500 |  | 1d? | 2023-12-28 09:00 | 2023-12-28 18:00 |  |  | 834.59d | start no earlier than 2023-12-28 09:00 | ТО | 8h |  |
| 2848 | 12.4.5 | **шнек 2 смеситель -дробилка** |  | 68.5d? | 2026-03-24 09:00 A | 2026-06-26 13:00 | 67% | 22.83d? | 184.09d |  | ТО | 440h | 64h |
| 2849 | 12.4.5.1 | ремонт вала, т.к съело посадку на верх подшипник |  | 1d? | 2026-03-24 09:00 A | 2026-03-24 18:00 A | 100% |  |  | start no earlier than 2026-03-24 09:00 | Труфанов А; Некрасов А | 16h | 16h |
| 2850 | 12.4.5.2 | осмотр износа |  | 4h | 2026-06-26 09:00 | 2026-06-26 13:00 |  |  | 184.09d | start no earlier than 2026-06-26 09:00 | Тимофеев В | 4h |  |

| ID | WBS | Task | Duration | Start | Finish | Total slack | Constraint | Resources | Work |
| --- | --- | --- | --- | --- | --- | --- | --- | --- | --- |
| 2851 | 12.4.6 | **дробилка ДМС3** | 0.5d | 2026-05-11 09:00 | 2026-05-11 13:00 | 218.09d |  | ТО | 8h |
| 2852 | 12.4.6.1 | замена подшипник буксы сторона мотора | 4h | 2026-05-11 09:00 | 2026-05-11 13:00 | 218.09d | start no earlier than 2026-05-10 09:00 | Бундин В | 4h |
| 2853 | 12.4.7 | шнек 3 дробилка-накопитель | 1d? | 2023-12-28 09:00 | 2023-12-28 18:00 | 834.59d | start no earlier than 2023-12-28 09:00 | ТО | 8h |
| 2854 | 12.4.8 | дробилка 11квт | 1d? | 2023-12-28 09:00 | 2023-12-28 18:00 | 834.59d | start no earlier than 2023-12-28 09:00 | ТО | 8h |
| 2855 | 12.4.9 | дробилка 7,5квт | 1d? | 2023-12-28 09:00 | 2023-12-28 18:00 | 834.59d | start no earlier than 2023-12-28 09:00 | ТО | 8h |
| 2856 | 12.4.10 | вибросито А | 1d? | 2023-12-28 09:00 | 2023-12-28 18:00 | 834.59d | start no earlier than 2023-12-28 09:00 | ТО | 8h |
| 2857 | 12.4.11 | вибросито Б | 1d? | 2023-12-28 09:00 | 2023-12-28 18:00 | 834.59d | start no earlier than 2023-12-28 09:00 | ТО | 8h |
| 2858 | 12.4.12 | **электрооборудование** | 1d? | 2023-12-28 09:00 | 2023-12-28 18:00 | 834.59d |  | ТО | 48h |
| 2859 | 12.4.12.1 | ВРУ7 | 1d? | 2023-12-28 09:00 | 2023-12-28 18:00 | 834.59d | start no earlier than 2023-12-28 09:00 | ТО | 8h |
| 2860 | 12.4.12.2 | ЩР2 | 1d? | 2023-12-28 09:00 | 2023-12-28 18:00 | 834.59d | start no earlier than 2023-12-28 09:00 | ТО | 8h |
| 2861 | 12.4.12.3 | котельная газовая 5 цех | 1d? | 2023-12-28 09:00 | 2023-12-28 18:00 | 834.59d | start no earlier than 2023-12-28 09:00 | ТО | 8h |
| 2862 | 12.4.12.4 | бойлеры душ | 1d? | 2023-12-28 09:00 | 2023-12-28 18:00 | 834.59d | start no earlier than 2023-12-28 09:00 | ТО | 8h |
| 2863 | 12.4.12.5 | вентилятор вытяжной в дробилке | 1d? | 2023-12-28 09:00 | 2023-12-28 18:00 | 834.59d | start no earlier than 2023-12-28 09:00 | ТО | 8h |
| 2864 | 12.5 | **адм корпус** | 1d? | 2023-12-28 09:00 | 2023-12-28 18:00 | 834.59d |  | ТО | 24h |
| 2865 | 12.5.1 | бойлер туалет | 1d? | 2023-12-28 09:00 | 2023-12-28 18:00 | 834.59d | start no earlier than 2023-12-28 09:00 | ТО | 8h |
| 2866 | 12.5.2 | ОЩР | 1d? | 2023-12-28 09:00 | 2023-12-28 18:00 | 834.59d | start no earlier than 2023-12-28 09:00 | ТО | 8h |
| 2867 | 12.6 | **склад упаковки** | 1d? | 2023-12-28 09:00 | 2023-12-28 18:00 | 834.59d |  | ТО | 32h |
| 2868 | 12.6.1 | **электрооборудование** | 1d? | 2023-12-28 09:00 | 2023-12-28 18:00 | 834.59d |  | ТО | 24h |
| 2869 | 12.6.1.1 | ЩО и ЩР | 1d? | 2023-12-28 09:00 | 2023-12-28 18:00 | 834.59d | start no earlier than 2023-12-28 09:00 | ТО | 8h |
| 2870 | 12.6.1.2 | санитарный насос | 1d? | 2023-12-28 09:00 | 2023-12-28 18:00 | 834.59d | start no earlier than 2023-12-28 09:00 | ТО | 8h |
| 2871 | 12.7 | **цех наполнителей** | 1d? | 2023-12-28 09:00 | 2023-12-28 18:00 | 834.59d |  | ТО | 56h |
| 2872 | 12.7.1 | ЩО и ЩР | 1d? | 2023-12-28 09:00 | 2023-12-28 18:00 | 834.59d | start no earlier than 2023-12-28 09:00 | ТО | 8h |
| 2873 | 12.7.2 | комппрессор | 1d? | 2023-12-28 09:00 | 2023-12-28 18:00 | 834.59d | start no earlier than 2023-12-28 09:00 | ТО | 8h |
| 2874 | 12.7.3 | конвейер загрузки | 1d? | 2023-12-28 09:00 | 2023-12-28 18:00 | 834.59d | start no earlier than 2023-12-28 09:00 | ТО | 8h |
| 2875 | 12.7.4 | дозатор НОТИС | 1d? | 2023-12-28 09:00 | 2023-12-28 18:00 | 834.59d | start no earlier than 2023-12-28 09:00 | ТО | 8h |
| 2876 | 12.7.5 | запайщик | 1d? | 2023-12-28 09:00 | 2023-12-28 18:00 | 834.59d | start no earlier than 2023-12-28 09:00 | ТО | 8h |
| 2877 | 12.7.6 | вилочный погрузчик тойота | 1d? | 2023-12-28 09:00 | 2023-12-28 18:00 | 834.59d | start no earlier than 2023-12-28 09:00 | ТО | 8h |
| 2878 | 12.8 | Установка розетки под литийионный аккумклятор 3-х фазный, установить рядом с существующей ВРУ | 2h | 2026-07-08 09:00 | 2026-07-08 11:00 | 176.34d | start no earlier than 2026-07-08 08:00 | Бундин В | 2h |

| ID | WBS | Task | Type | Duration | Start | Finish | Predecessors | Complete | Remaining | Total slack | Constraint | Resources | Work | Actual work |
| --- | --- | --- | --- | --- | --- | --- | --- | --- | --- | --- | --- | --- | --- | --- |
| 2879 | 13 | **синий склад** |  | 99d | 2026-05-07 09:00 A | 2026-09-21 18:00 |  | 48% | 51.86d | 121.59d |  |  | 21h | 10h |
| 2880 | 13.1 | установить на место крышки вентиляторов |  | 1h | 2026-08-17 09:00 A | 2026-08-17 10:00 A |  | 100% |  |  | start no earlier than 2026-08-17 09:00 | Бобренок В | 1h | 1h |
| 2881 | 13.2 | монтаж включателя света с улицы, возле вход. Двери |  | 3h | 2026-09-21 09:00 | 2026-09-21 12:00 |  |  |  | 122.22d | start no earlier than 2026-09-21 09:00 | Бобренок В | 3h |  |
| 2882 | 13.3 | расширить проем вверху для проезда погрузчиков, врезаются | manual | 1d | 2026-09-21 09:00 | 2026-09-21 18:00 |  |  |  |  | start no earlier than 2026-09-21 09:00 | Олег | 8h |  |
| 2883 | 13.4 | замерить диаметр крыльчатки двигателя экструдера, инфу передать мне |  | 1h | 2026-06-13 09:00 A | 2026-06-15 10:00 A |  | 100% |  |  | start no earlier than 2026-06-13 09:00 | Бобренок В | 1h | 1h |
| 2884 | 13.5 | найти амперметры 30А и 150А (сказать кол-во) |  | 2h | 2026-06-10 09:00 A | 2026-06-10 11:00 A |  | 100% |  |  | start no earlier than 2026-06-10 09:00 | Труфанов А | 2h | 2h |
| 2885 | 13.6 | Навести порядок на входе в синий склад |  | 2h | 2026-07-23 09:00 A | 2026-07-23 11:00 A |  | 100% |  |  | start no earlier than 2026-07-24 09:00 | Бундин В | 2h | 2h |
| 2886 | 13.7 | проверить и подписать все материалы в синем складе с Алексеем |  | 4h | 2026-05-07 09:00 A | 2026-05-07 13:00 A |  | 100% |  |  | start no earlier than 2026-05-07 09:00 | Шуранов Ю | 4h | 4h |
| 2887 | 14 | **хим лаб** |  | 652.25d? | 2024-01-11 08:00 A | 2026-07-13 11:00 A |  | 100% |  |  |  |  | 71.75h | 71.75h |
| 2888 | 14.1 | замена кран РР |  | 2h | 2026-07-13 09:00 A | 2026-07-13 11:00 A |  | 100% |  |  | start no earlier than 2026-07-13 09:00 | Тимофеев В | 2h | 2h |
| 2889 | 14.2 | ремонт термоконтроллера - замена реле / перепаять с сзоны ALARM |  | 1h | 2026-06-09 09:00 A | 2026-06-09 10:00 A |  | 100% |  |  | start no earlier than 2026-06-09 09:00 | Дедов В | 1h | 1h |
| 2890 | 14.3 | **усилить питание хим лаб, что бы не отключался автомат при вкл быт приборов** |  | 0.12d | 2026-05-29 09:00 A | 2026-05-29 10:00 A |  | 100% |  |  |  |  | 2h | 2h |
| 2891 | 14.3.1 | переключение питания хим лаб на отдельный ШУ |  | 1h | 2026-05-29 09:00 A | 2026-05-29 10:00 A |  | 100% |  |  | start no earlier than 2026-05-29 09:00 | Некрасов А; Бобренок В | 2h | 2h |
| 2892 | 14.4 | **ремонт бойлер вода - ПУН** |  | 10.25d | 2026-05-14 08:00 A | 2026-05-28 11:00 A |  | 100% |  |  |  |  | 4.75h | 4.75h |
| 2893 | 14.4.1 | замена из ЗИП |  | 1h | 2026-05-14 08:00 A | 2026-05-14 10:00 A |  | 100% |  |  | start no earlier than 2026-05-14 08:00 | Тимофеев В | 1h | 1h |
| 2894 | 14.4.2 | диагностика неисправности. Бойлер в слесарне |  | 1h | 2026-05-14 08:00 A | 2026-05-14 10:00 A |  | 100% |  |  | start no earlier than 2026-05-14 08:00 | Бобренок В | 1h | 1h |
| 2895 | 14.4.3 | заявка предохарнитель |  | 30min | 2026-05-15 09:00 A | 2026-05-15 09:30 A | 2894 | 100% |  |  | start no earlier than 2026-05-15 08:00 | Шуранов Ю | 0.5h | 0.5h |
| 2896 | 14.4.4 | контроль поставки |  | 15min | 2026-05-22 09:30 A | 2026-05-22 09:45 A | 2895FS+7d | 100% |  |  | start no earlier than 2026-05-15 08:00 | Шуранов Ю | 0.25h | 0.25h |
| 2897 | 14.4.5 | заменить на бойлере в слесарке термостата WY-S37A |  | 2h | 2026-05-28 09:00 A | 2026-05-28 11:00 A |  | 100% |  |  | start no earlier than 2026-05-28 09:00 | Тимофеев В | 2h | 2h |
| 2898 | 14.5 | **ремонт дистилятор** |  | 31d? | 2026-04-27 09:00 A | 2026-06-08 18:00 A |  | 100% |  |  |  |  | 17h | 17h |
| 2899 | 14.5.1 | заявка тен |  | 1h | 2026-04-27 09:00 A | 2026-04-27 10:00 A |  | 100% |  |  | start no earlier than 2026-04-27 09:00 | Шуранов Ю | 1h | 1h |
| 2900 | 14.5.2 | доставка |  | 1d? | 2026-06-05 09:00 A | 2026-06-05 18:00 A | 2899 | 100% |  |  | finish no earlier than 2026-06-05 18:00 | Карабанов | 8h | 8h |
| 2901 | 14.5.3 | замена. Больше не выбиывает |  | 1d? | 2026-06-05 18:00 A | 2026-06-08 18:00 A | 2900 | 100% |  |  | start no earlier than 2026-05-13 09:00 | Тимофеев В | 8h | 8h |
| 2902 | 14.6 | **ремонт АКВ_шесть** |  | 30d? | 2026-04-27 09:00 A | 2026-06-05 18:00 A |  | 100% |  |  |  |  | 11h | 11h |
| 2903 | 14.6.1 | заявка тен |  | 1h | 2026-04-27 09:00 A | 2026-04-27 10:00 A |  | 100% |  |  | start no earlier than 2026-04-27 09:00 | Шуранов Ю | 1h | 1h |
| 2904 | 14.6.2 | доставка |  | 1d? | 2026-06-05 09:00 A | 2026-06-05 18:00 A | 2903 | 100% |  |  | finish no earlier than 2026-06-05 18:00 | Карабанов | 8h | 8h |
| 2905 | 14.6.3 | замена |  | 2h | 2026-05-24 09:00 A | 2026-05-25 11:00 A |  | 100% |  |  | start no earlier than 2026-05-24 09:00 | Дедов В | 2h | 2h |
| 2906 | 14.7 | проверить прибор |  | 1d? | 2026-05-06 09:00 A | 2026-05-06 18:00 A |  | 100% |  |  | start no earlier than 2026-05-06 08:00 | Шуранов Ю | 8h | 8h |
| 2907 | 14.8 | датчик температуры ?? Заявка |  | 1d? | 2026-04-27 09:00 A | 2026-04-27 18:00 A |  | 100% |  |  | start no earlier than 2026-04-27 08:00 | Шуранов Ю | 8h | 8h |
| 2908 | 14.9 | дистилятор отключается ?? Заявка |  | 1d? | 2026-04-27 09:00 A | 2026-04-27 18:00 A |  | 100% |  |  | start no earlier than 2026-04-27 08:00 | Шуранов Ю | 8h | 8h |
| 2909 | 14.10 | перенос старый прибор в архив 5ц |  | 30min | 2026-04-20 09:00 A | 2026-04-20 09:30 A |  | 100% |  |  | start no earlier than 2026-04-20 08:00 | Кладовщики | 0.5h | 0.5h |
| 2910 | 14.11 | замена 2 вентилятора |  | 4h | 2024-01-16 08:00 A | 2024-01-16 13:00 A |  | 100% |  |  | start no earlier than 2024-01-16 08:00 | Бобренок В | 4h | 4h |
| 2911 | 14.12 | ремонт соленоид |  | 2h | 2024-01-16 08:00 A | 2024-01-16 11:00 A |  | 100% |  |  | start no earlier than 2024-01-16 08:00 | Тимофеев В | 2h | 2h |
| 2912 | 14.13 | ремонт вытяжка №2 диагностика вентилятор |  | 30min | 2024-01-11 08:00 A | 2024-01-11 09:30 A |  | 100% |  |  | start no earlier than 2024-01-11 08:00 | Дедов В | 0.5h | 0.5h |
| 2913 | 14.14 | замена насос " агрегат |  | 1h | 2024-01-11 08:00 A | 2024-01-11 10:00 A |  | 100% |  |  | start no earlier than 2024-01-11 08:00 | Дедов В | 1h | 1h |
| 2914 | 14.15 | замена тен по доставке |  | 2h | 2026-03-17 09:00 A | 2026-03-17 11:00 A |  | 100% |  |  | start no earlier than 2026-03-17 09:00 | Макаревич А | 2h | 2h |

| ID | WBS | Task | Duration | Start | Finish | Predecessors | Complete | Remaining | Total slack | Constraint | Resources | Work | Actual work |
| --- | --- | --- | --- | --- | --- | --- | --- | --- | --- | --- | --- | --- | --- |
| 2915 | 15 | **цех наполнителей** | 194.12d | 2025-07-14 09:00 A | 2026-04-10 10:00 A |  | 100% |  |  |  |  | 10h | 10h |
| 2916 | 15.1 | взять со склада АКБ и клеммы заменить на погрузчике, старый АКБ отдать на 2 этаж склад | 1h | 2026-04-10 09:00 A | 2026-04-10 10:00 A |  | 100% |  |  | start no earlier than 2026-04-10 09:00 | Тимофеев В | 1h | 1h |
| 2917 | 15.2 | поменять пневмоцилиндр на нотис | 1h | 2026-04-09 09:00 A | 2026-04-09 10:00 A |  | 100% |  |  | start no earlier than 2026-04-10 09:00 | Тимофеев В | 1h | 1h |
| 2918 | 15.3 | проверить дист. Воду в АКБ погрузчика | 1h | 2026-04-01 09:00 A | 2026-04-01 10:00 A |  | 100% |  |  | start no earlier than 2026-04-01 09:00 | Тимофеев В | 1h | 1h |
| 2919 | 15.4 | просверлить больше, нарезать резьбу для крепления стола запайщика, резьба сорвана | 1h | 2026-03-20 09:00 A | 2026-03-20 10:00 A |  | 100% |  |  | start no earlier than 2026-03-20 09:00 | Бундин В | 1h | 1h |
| 2920 | 15.5 | ремонт компрессор. Проверка конденсаторов/не запускается мотор. Ключь у кладовщиков | 4h | 2025-07-14 09:00 A | 2025-07-14 13:00 A |  | 100% |  |  | start no earlier than 2025-07-14 09:00 | Бобренок В | 4h | 4h |
| 2921 | 15.6 | ТО компрессор / конвейер / запайщик | 2h | 2026-03-09 09:00 A | 2026-03-09 11:00 A |  | 100% |  |  | start no earlier than 2026-03-09 09:00 | Тимофеев В | 2h | 2h |
| 2922 | 16 | **офис** | 918.25d? | 2023-03-10 09:00 A | 2026-09-15 11:00 |  | 97% | 28.33d? | 126.34d |  |  | 217.67h | 207.17h |
| 2923 | 16.1 | демонтаж шурупы с наличиников | 10min | 2026-07-10 09:00 A | 2026-07-10 09:10 A |  | 100% |  |  | start no earlier than 2026-07-10 09:00 | Тимофеев В | 0.17h | 0.17h |
| 2924 | 16.2 | взять на складе ламочку Е27 малого размера и поменять в муж. Туалете и закрыть плафоном | 1h | 2026-06-29 09:00 A | 2026-06-29 10:00 A |  | 100% |  |  | start no earlier than 2026-06-29 09:00 | Тимофеев В | 1h | 1h |
| 2925 | 16.3 | собрать аккуратно стеллаж для Буслаева (стеллаж на складе у Веры, подписан буквами ГД, мечковская) | 3h | 2026-06-13 09:00 A | 2026-06-15 12:00 A |  | 100% |  |  | start no earlier than 2026-06-13 09:00 | Бобренок В | 3h | 3h |
| 2926 | 16.4 | посмотреть что с розеткой у Ширяевой в кабинете | 1h | 2026-06-22 09:00 A | 2026-06-22 10:00 A |  | 100% |  |  | start no earlier than 2026-06-22 09:00 | Тимофеев В | 1h | 1h |
| 2927 | 16.5 | бухгалтерия настройка язычка двери, что бы дверь закрывалась без усилия | 1h | 2026-05-28 09:00 A | 2026-05-28 10:00 A |  | 100% |  |  | start no earlier than 2026-05-28 09:00 | Тимофеев В | 1h | 1h |
| 2928 | 16.6 | **полка мебельная** | 25.12d | 2026-05-18 09:00 A | 2026-06-22 10:00 A |  | 100% |  |  |  |  | 1.5h | 1.5h |
| 2929 | 16.6.1 | заявка крепеж | 15min | 2026-05-18 09:00 A | 2026-05-18 09:15 A |  | 100% |  |  | start no earlier than 2026-05-18 09:00 | Шуранов Ю | 0.25h | 0.25h |
| 2930 | 16.6.2 | контроль доставка | 15min | 2026-05-27 09:15 A | 2026-05-27 09:30 A | 2929FS+7d | 100% |  |  | start no earlier than 2026-05-15 08:00 | Шуранов Ю | 0.25h | 0.25h |
| 2931 | 16.6.3 | крепеж полки у Юли в кабинете (уголки на складе) | 1h | 2026-06-22 09:00 A | 2026-06-22 10:00 A | 2930 | 100% |  |  | start no earlier than 2026-06-22 09:00 | Тимофеев В | 1h | 1h |
| 2932 | 16.7 | монтаж диплом на стену нач хим лаб | 30min | 2026-05-15 09:00 A | 2026-05-15 09:30 A |  | 100% |  |  | start no earlier than 2026-05-15 09:00 | Тимофеев В | 0.5h | 0.5h |
| 2933 | 16.8 | монтаж розеток в серверной продолжить | 2h | 2026-04-23 09:00 A | 2026-04-23 11:00 A |  | 100% |  |  | start no earlier than 2026-04-23 09:00 | Тимофеев В; Бобренок В | 4h | 4h |
| 2934 | 16.9 | ремонт стул в столовая, спинка | 1h | 2026-04-21 09:00 A | 2026-04-21 10:00 A |  | 100% |  |  | start no earlier than 2026-04-21 09:00 | Тимофеев В | 1h | 1h |
| 2935 | 16.10 | **полочка под пк** | 0.12d | 2026-06-26 09:00 A | 2026-06-26 10:00 A |  | 100% |  |  |  | Тимофеев В | 2h | 2h |
| 2936 | 16.10.1 | замер | 1h | 2026-06-26 09:00 A | 2026-06-26 10:00 A |  | 100% |  |  | start no earlier than 2026-06-26 09:00 | Тимофеев В | 1h | 1h |
| 2937 | 16.11 | прикрутить декоративную пластину на ручке в столовой | 1h | 2026-04-15 09:00 A | 2026-04-15 10:00 A |  | 100% |  |  | start no earlier than 2026-04-17 08:00 | Макаревич А | 1h | 1h |
| 2938 | 16.12 | монтаж розеток 4 шт. в серверной | 2h | 2026-04-15 09:00 A | 2026-04-15 11:00 A |  | 100% |  |  | start no earlier than 2026-04-17 08:00 | Макаревич А | 2h | 2h |
| 2939 | 16.13 | протянуть кабель UTP от кабинета Курдюмовой до переговорки | 2h | 2026-04-17 08:00 A | 2026-04-17 11:00 A |  | 100% |  |  | start no earlier than 2026-04-17 08:00 | Тимофеев В; Некрасов А | 4h | 4h |
| 2940 | 16.14 | убрать шнурок у Курдюмовой в кабинете | 1h | 2026-04-17 08:00 A | 2026-04-17 10:00 A |  | 100% |  |  | start no earlier than 2026-04-17 08:00 | Тимофеев В | 1h | 1h |
| 2941 | 16.15 | ремонт кровля над каб Курдюмовой | 20d | 2026-06-15 09:00 A | 2026-07-10 18:00 A |  | 100% |  |  | start no earlier than 2026-06-15 09:00 | Олег | 160h | 160h |
| 2942 | 16.16 | ремонт крепеж пано каб продаж | 1h | 2026-03-24 08:00 A | 2026-03-24 10:00 A |  | 100% |  |  | start no earlier than 2026-03-24 08:00 | Тимофеев В | 1h | 1h |
| 2943 | 16.17 | крепить розетку для проектора | 2h | 2025-04-09 09:00 A | 2025-04-09 11:00 A |  | 100% |  |  | start no earlier than 2025-04-09 09:00 | Тимофеев В | 2h | 2h |
| 2944 | 16.18 | упорядочить кабеля под тв | 2h | 2025-04-09 09:00 A | 2025-04-09 11:00 A |  | 100% |  |  | start no earlier than 2025-04-09 09:00 | Некрасов А | 2h | 2h |
| 2945 | 16.19 | выбивает автомат у Монича, нет селективности, замена автоматов. Ремонт освещения корридор | 4h | 2026-09-14 09:00 | 2026-09-14 13:00 |  |  |  | 127.09d | start no earlier than 2026-09-14 09:00 | Тимофеев В; Дедов В | 8h |  |
| 2946 | 16.20 | монтаж ключница для пожарной двери 2 и 3 этаж | 1h | 2026-03-16 09:00 A | 2026-03-16 10:00 A |  | 100% |  |  | start no earlier than 2026-03-16 09:00 | Тимофеев В | 1h | 1h |
| 2947 | 16.21 | замена регистр отопления нач снабжения | 2h | 2026-09-15 09:00 | 2026-09-15 11:00 |  |  |  | 126.34d | start no earlier than 2026-09-15 09:00 | Некрасов А | 2h |  |
| 2948 | 16.22 | сделать заглушки в комнату пищи | 30min | 2026-09-01 09:00 | 2026-09-01 09:30 |  |  |  | 137.53d | start no earlier than 2026-09-01 09:00 | Домоводов К | 0.5h |  |

| ID | WBS | Task | Type | Duration | Start | Finish | Predecessors | Complete | Remaining | Total slack | Constraint | Resources | Work | Actual work |
| --- | --- | --- | --- | --- | --- | --- | --- | --- | --- | --- | --- | --- | --- | --- |
| 2949 | 16.23 | **вентиляция в переговорке и к приема пищи** |  | 812d? | 2023-03-10 09:00 A | 2026-04-20 18:00 A |  | 100% |  |  |  |  | 17h | 17h |
| 2950 | 16.23.1 | взять на желтом складе (наша половина) вентилятор канальный и проверить работает или нет |  | 1h | 2023-03-10 09:00 A | 2023-03-10 10:00 A |  | 100% |  |  |  | Бундин В | 1h | 1h |
| 2951 | 16.23.2 | заявка на КП = 300к |  | 4h | 2026-03-13 09:00 A | 2026-03-13 13:00 A |  | 100% |  |  | start no earlier than 2026-03-13 09:00 | Домоводов К | 4h | 4h |
| 2952 | 16.23.3 | монтаж ВК200 + кабель |  | 6h | 2026-04-20 09:00 A | 2026-04-20 16:00 A |  | 100% |  |  | start no earlier than 2026-04-20 08:00 | Некрасов А; Труфанов А | 12h | 12h |
| 2953 | 16.23.4 | установка на крыше офиса, приточка в переговорку |  | 1d? | 2026-04-20 09:00 A | 2026-04-20 18:00 A |  | 100% |  |  | start no earlier than 2026-04-20 09:00 |  |  |  |
| 2954 | 16.24 | **подсветка продукции в пепреговорке вращающийся лаезерный круг с эмблемой** |  | 0.12d | 2026-03-13 09:00 A | 2026-03-13 10:00 A |  | 100% |  |  |  |  | 1h | 1h |
| 2955 | 16.24.1 | найти поставщика / узнать стоимость |  | 1h | 2026-03-13 09:00 A | 2026-03-13 10:00 A |  | 100% |  |  | start no earlier than 2026-03-13 09:00 | Зорькин В | 1h | 1h |
| 2956 | 17 | **склад упаковки** |  | 124.5d? | 2026-04-02 09:00 A | 2026-09-22 13:00 |  | 98% | 2.37d? | 121.09d |  |  | 383.75h | 373.75h |
| 2957 | 17.1 | переделать крепление рамы наруж блока - к МК задния, анкера убрать |  | 4h | 2026-09-22 09:00 | 2026-09-22 13:00 |  |  |  | 121.09d | start no earlier than 2026-09-22 09:00 | Некрасов А | 4h |  |
| 2958 | 17.2 | установить светильники над столом Веры и перенести светильник над стеллажами |  | 3h | 2026-08-25 09:00 | 2026-08-25 12:00 |  |  |  | 142.22d | start no earlier than 2026-08-25 09:00 | Тимофеев В; Некрасов А | 6h |  |
| 2959 | 17.3 | втягиваем кабель 5х4 от реф, для подключения кондиционера, место установки щитка покажу- подключаем кондиционер |  | 1d? | 2026-07-31 08:00 A | 2026-07-31 18:00 A |  | 100% |  |  | start no earlier than 2026-07-31 08:00 | Труфанов А; Бобренок В | 16h | 16h |
| 2960 | 17.4 | сделать акты списания по результатам инвентаризации |  | 1d? | 2026-06-22 09:00 A | 2026-06-22 18:00 A |  | 100% |  |  | start no earlier than 2026-06-22 09:00 | Шуранов Ю | 8h | 8h |
| 2961 | 17.5 | **установить бойлер** |  | 11.25d | 2026-06-01 09:00 A | 2026-06-16 11:00 A |  | 100% |  |  |  |  | 12h | 12h |
| 2962 | 17.5.1 | монтаж кабель + розетка с щитка 1 этажа на 2 этаж |  | 4h | 2026-06-03 09:00 A | 2026-06-03 13:00 A |  | 100% |  |  | start no earlier than 2026-06-03 09:00 | Некрасов А; Бундин В | 8h | 8h |
| 2963 | 17.5.2 | монтаж бойлер на стену |  | 2h | 2026-06-01 09:00 A | 2026-06-01 11:00 A | 2962 | 100% |  |  | start no earlier than 2026-06-01 09:00 | Тимофеев В | 2h | 2h |
| 2964 | 17.5.3 | подключение сантехника |  | 2h | 2026-06-16 09:00 A | 2026-06-16 11:00 A | 2963 | 100% |  |  | start no earlier than 2026-06-16 09:00 | Тимофеев В | 2h | 2h |
| 2965 | 17.6 | отремонтировать ручку на входной двери |  | 1h | 2026-05-16 09:00 A | 2026-05-18 10:00 A |  | 100% |  |  | start no earlier than 2026-05-16 09:00 |  |  |  |
| 2966 | 17.7 | **анкерить стеллажи** |  | 26d | 2026-05-15 09:00 A | 2026-06-21 13:00 A |  | 100% |  |  |  |  | 4.75h | 4.75h |
| 2967 | 17.7.1 | заявка анкеры |  | 30min | 2026-05-15 09:00 A | 2026-05-15 09:30 A |  | 100% |  |  | start no earlier than 2026-05-15 09:00 | Шуранов Ю | 0.5h | 0.5h |
| 2968 | 17.7.2 | контроль доставка |  | 15min | 2026-05-27 09:30 A | 2026-05-27 09:45 A | 2967FS+10d | 100% |  |  | start no earlier than 2026-05-14 08:00 | Шуранов Ю | 0.25h | 0.25h |
| 2969 | 17.7.3 | монтаж / указать доделать оставшиеся анкера | manual | 4h | 2026-06-21 09:00 A | 2026-06-21 13:00 A | 2968 | 100% |  |  | start no earlier than 2026-06-21 09:00 | Бундин В | 4h | 4h |
| 2970 | 17.8 | заменить тросик на воротах |  | 2h | 2026-04-29 09:00 A | 2026-04-29 11:00 A |  | 100% |  |  | start no earlier than 2026-04-29 09:00 | Тимофеев В; Бундин В | 4h | 4h |
| 2971 | 17.9 | **замена двери** |  | 40.12d? | 2026-04-02 09:00 A | 2026-05-28 10:00 A |  | 100% |  |  |  |  | 329h | 329h |
| 2972 | 17.9.1 | заказ замерщика / получить счет |  | 1h | 2026-04-02 09:00 A | 2026-04-02 10:00 A |  | 100% |  |  | start no earlier than 2026-04-02 08:00 | Домоводов К | 1h | 1h |
| 2973 | 17.9.2 | изготовление |  | 40d | 2026-04-02 10:00 A | 2026-05-28 10:00 A | 2972 | 100% |  |  | start no earlier than 2026-04-02 08:00 | Подрядчик | 320h | 320h |
| 2974 | 17.9.3 | замена |  | 1d? | 2026-05-19 10:00 A | 2026-05-20 10:00 A | 2973 | 100% |  |  | start no earlier than 2026-04-02 08:00 | Подрядчик | 8h | 8h |

| ID | WBS | Task | Type | Duration | Start | Finish | Predecessors | Complete | Remaining | Total slack | Free slack | Constraint | Resources | Work | Actual work |
| --- | --- | --- | --- | --- | --- | --- | --- | --- | --- | --- | --- | --- | --- | --- | --- |
| 2975 | 18 | **РЭФ контейнеры** |  | 205.59d? | 2026-05-28 09:00 A | 2027-03-10 14:45 |  | 15% | 175.59d? | 0d |  |  |  | 66.25h | 13.5h |
| 2976 | 18.1 | уложить палеты в проходе к площадке / вырубить кусты с дворником |  | 1h | 2026-05-28 09:00 A | 2026-05-28 10:00 A |  | 100% |  |  |  | start no earlier than 2026-05-28 09:00 | Некрасов А; Бобренок В | 1h | 1h |
| 2977 | 18.2 | монтаж площадка обслуживания внешнего блока. 4 стойки труба 100 + лист 5 |  | 7h | 2026-05-28 09:00 A | 2026-05-28 17:00 A |  | 100% |  |  |  | start no earlier than 2026-05-28 09:00 | Некрасов А; Бобренок В | 12h | 12h |
| 2978 | 18.3 | **ремонт сплит система холодильная камера №1** |  | 27.12d | 2026-08-12 09:00 A | 2026-09-17 10:00 |  | 40% | 16.27d | 124.47d |  |  |  | 1.25h | 0.5h |
| 2979 | 18.3.1 | отправить фото участка |  | 15min | 2026-08-12 09:00 A | 2026-08-12 09:15 A |  | 100% |  |  |  | start no earlier than 2026-08-12 09:00 | Домоводов К | 0.25h | 0.25h |
| 2980 | 18.3.2 | получить счет на ремонт |  | 15min | 2026-09-08 09:00 A | 2026-09-08 09:15 A |  | 100% |  |  |  | start no earlier than 2026-09-08 09:00 | Домоводов К | 0.25h | 0.25h |
| 2981 | 18.3.3 | оплата |  | 15min | 2026-09-09 09:15 | 2026-09-09 09:30 | 2980FS+1d |  |  | 124.47d | 0d | start no earlier than 2026-09-09 09:00 | Домоводов К | 0.25h |  |
| 2982 | 18.3.4 | контроль даты ремонта |  | 15min | 2026-09-16 09:30 | 2026-09-16 09:45 | 2981FS+5d |  |  | 124.47d | 0d | start no earlier than 2026-08-10 08:00 | Зорькин В | 0.25h |  |
| 2983 | 18.3.5 | приемка работ |  | 15min | 2026-09-17 09:45 | 2026-09-17 10:00 | 2982FS+1d |  |  | 124.47d |  | start no earlier than 2026-08-10 08:00 | Зорькин В | 0.25h |  |
| 2984 | 18.4 | **монтаж холодильной машины №2** |  | 6.59d? | 2027-03-02 09:00 | 2027-03-10 14:45 |  |  |  | 0d |  |  |  | 45h |  |
| 2985 | 18.4.1 | решение какую ставить машину - на весну |  | 30min | 2027-03-02 09:00 | 2027-03-02 09:30 |  |  |  | 0d |  | start no earlier than 2027-03-02 09:00 | Домоводов К | 0.5h |  |
| 2986 | 18.4.2 | заключение договор |  | 3d | 2027-03-02 09:30 | 2027-03-05 09:30 | 2985 |  |  | 0d |  | start no earlier than 2026-08-12 09:00 | Домоводов К | 24h |  |
| 2987 | 18.4.3 | оплата |  | 15min | 2027-03-08 09:30 | 2027-03-08 09:45 | 2986FS+1d |  |  | 0d |  | start no earlier than 2026-08-18 09:00 | Домоводов К | 0.25h |  |
| 2988 | 18.4.4 | контроль доставки , начала работ |  | 1d? | 2027-03-08 09:45 | 2027-03-09 09:45 | 2987 |  |  | 0d |  | start no earlier than 2026-08-10 08:00 | Зорькин В | 8h |  |
| 2989 | 18.4.5 | **монтаж кабель силовой** |  | 0.5d | 2027-03-09 09:45 | 2027-03-09 14:45 | 2988 |  |  | 0d |  |  |  | 4.25h |  |
| 2990 | 18.4.5.1 | проверка поставки |  | 15min | 2027-03-09 09:45 | 2027-03-09 10:00 |  |  |  | 0.47d |  | start no earlier than 2026-08-10 08:00 | Зорькин В | 0.25h |  |
| 2991 | 18.4.5.2 | монтаж |  | 4h | 2027-03-09 09:45 | 2027-03-09 14:45 |  |  |  | 0d |  | start no earlier than 2026-08-10 08:00 | Некрасов А | 4h |  |
| 2992 | 18.4.6 | монтаж |  | 1d? | 2027-03-09 14:45 | 2027-03-10 14:45 | 2989 |  |  | 0d |  | start no earlier than 2026-08-10 08:00 | Подрядчик | 8h |  |
| 2993 | 18.5 | **утепление контейнера №2 под рефрежератор** |  | 0.5d | 2026-08-21 09:00 | 2026-08-21 13:00 |  |  |  | 0d |  |  |  | 7h |  |
| 2994 | 18.5.1 | продолжить выравнивание пены по периметру ножовкой для будующей установки профлиста (задание, если нечем заняться) | manual | 2h | 2026-08-21 09:00 | 2026-08-21 11:00 |  |  |  |  |  | start no earlier than 2026-08-21 09:00 | Некрасов А; Дедов В | 4h |  |
| 2995 | 18.5.2 | установка профлиста |  | 2h | 2026-08-21 11:00 | 2026-08-21 13:00 | 2994 |  |  | 144.09d |  | start no earlier than 2026-08-11 09:00 | Некрасов А; Дедов В | 3h |  |
| 2996 | 19 | **обучение** |  | 608.5d? | 2024-05-14 09:00 A | 2026-09-10 13:00 |  | 42% | 350.5d? | 129.09d |  |  |  | 130h | 58h |
| 2997 | 19.1 | **инструкция управлления дозаций жира** |  | 1.5d | 2026-09-09 09:00 | 2026-09-10 13:00 |  |  |  | 129.09d |  |  |  | 12h |  |
| 2998 | 19.1.1 | подготовка гидравлической и функциональной схем системы |  | 4h | 2026-09-09 09:00 | 2026-09-09 13:00 |  |  |  | 129.09d | 0d | start no earlier than 2026-09-09 09:00 | Зорькин В | 4h |  |
| 2999 | 19.1.2 | описание принципов регулирования |  | 4h | 2026-09-09 14:00 | 2026-09-09 18:00 | 2998 |  |  | 129.09d | 0d | start no earlier than 2026-08-31 09:00 | Зорькин В | 4h |  |
| 3000 | 19.1.3 | пошаговый алогритм действий по операциям замена фильтров, остановка пуск, настройка режимов |  | 4h | 2026-09-10 09:00 | 2026-09-10 13:00 | 2999 |  |  | 129.09d |  | start no earlier than 2026-08-31 09:00 | Зорькин В | 4h |  |
| 3001 | 19.2 | настройка и ремонты упаковщиков |  | 1h | 2026-02-27 09:00 A | 2026-02-27 10:00 A |  | 100% |  |  |  | start no earlier than 2026-02-27 08:00 | Труфанов А; Бундин В | 2h | 2h |
| 3002 | 19.3 | подготовить памятку по чистке ножа для бестром |  | 4h | 2026-09-04 09:00 A | 2026-09-04 13:00 A |  | 100% |  |  |  | start no earlier than 2026-09-04 09:00 | Зорькин В | 4h | 4h |
| 3003 | 19.4 | бестром |  | 2h | 2025-09-02 09:00 A | 2025-09-02 11:00 A |  | 100% |  |  |  | start no earlier than 2025-09-02 09:00 | Труфанов А; Зорькин В | 4h | 4h |
| 3004 | 19.5 | квадропак |  | 2h | 2025-09-02 11:00 A | 2025-09-02 13:00 A | 3003 | 100% |  |  |  | start no earlier than 2025-09-02 09:00 | Труфанов А; Зорькин В | 4h | 4h |
| 3005 | 19.6 | инструкция парогенератор управление по датчику давления |  | 4h | 2025-01-16 09:00 A | 2025-01-16 13:00 A |  | 100% |  |  |  | start no earlier than 2025-01-16 09:00 | Зорькин В | 4h | 4h |
| 3006 | 19.7 | инструкция по работе на теко 1.5 новый |  | 2d | 2025-01-17 09:00 A | 2025-01-20 18:00 A | 3005 | 100% |  |  |  | start no earlier than 2025-01-17 09:00 | Зорькин В | 16h | 16h |
| 3007 | 19.8 | инструкция ремонт запайщика |  | 1d? | 2025-01-17 09:00 A | 2025-01-17 18:00 A |  | 100% |  |  |  | start no earlier than 2025-01-17 09:00 | Зорькин В | 8h | 8h |
| 3008 | 19.9 | Составить список ЗИП - ежедневно вносить приход / расход |  | 1h | 2024-05-14 09:00 | 2024-05-14 10:00 |  |  |  | 737.47d |  | start no earlier than 2024-05-14 09:00 | Шуранов Ю | 1h |  |
| 3009 | 19.10 | составить инструкцию по затягиванию фильеры и соосности муфты |  | 4h | 2024-05-14 09:00 | 2024-05-14 13:00 |  |  |  | 737.09d |  | start no earlier than 2024-05-14 09:00 | Шуранов Ю | 4h |  |
| 3010 | 19.11 | составитьт инструкцию настройка бестром - формирование шва |  | 4h | 2024-05-14 09:00 | 2024-05-14 13:00 |  |  |  | 737.09d |  | start no earlier than 2024-05-14 09:00 | Шуранов Ю | 4h |  |
| 3011 | 19.12 | составитьт инструкцию настройка бестром - заправка ленты зип лок |  | 4h | 2024-05-14 09:00 | 2024-05-14 13:00 |  |  |  | 737.09d |  | start no earlier than 2024-05-14 09:00 | Шуранов Ю | 4h |  |

| ID | WBS | Task | Duration | Start | Finish | Predecessors | Complete | Remaining | Total slack | Free slack | Constraint | Resources | Work | Actual work |
| --- | --- | --- | --- | --- | --- | --- | --- | --- | --- | --- | --- | --- | --- | --- |
| 3012 | 19.13 | **формирование шаблона настройки оборудования** | 4d | 2024-09-06 09:00 A | 2024-09-11 18:00 |  | 67% | 1.33d | 650.59d |  |  |  | 21h | 14h |
| 3013 | 19.13.1 | **БЕСТРОМ** | 2.25d | 2024-09-06 09:00 A | 2024-09-10 11:00 A |  | 100% |  |  |  |  |  | 7h | 7h |
| 3014 | 19.13.1.1 | определить базовые точки относительно которых будет проводится замер в 3х плоскостях - флажки верх, флажки низ, смыкание ножа, центр трубы | 1h | 2024-09-06 09:00 A | 2024-09-06 10:00 A |  | 100% |  |  |  | start no earlier than 2024-09-06 08:00 | Зорькин В | 1h | 1h |
| 3015 | 19.13.1.2 | обвести в PAINT фото методику измерений, присвоить \имя каждому размеру | 2h | 2024-09-06 10:00 A | 2024-09-06 12:00 A | 3014 | 100% |  |  |  | start no earlier than 2024-09-06 09:00 | Зорькин В | 2h | 2h |
| 3016 | 19.13.1.3 | создать карту / таблицу настройки. Размер-дата-фио | 2h | 2024-09-09 09:00 A | 2024-09-09 11:00 A | 3015 | 100% |  |  |  | start no earlier than 2024-09-09 09:00 | Зорькин В | 2h | 2h |
| 3017 | 19.13.1.4 | оформить ведение карты в журнал | 2h | 2024-09-10 09:00 A | 2024-09-10 11:00 A | 3016 | 100% |  |  |  | start no earlier than 2024-09-10 09:00 | Зорькин В | 2h | 2h |
| 3018 | 19.13.2 | **ТЕКО 1.5** | 0.88d | 2024-09-10 11:00 A | 2024-09-11 10:00 A | 3013 | 100% |  |  |  |  |  | 7h | 7h |
| 3019 | 19.13.2.1 | определить базовые точки относительно которых будет проводится замер в 3х плоскостях - флажки верх, флажки низ, смыкание ножа, центр трубы | 1h | 2024-09-10 11:00 A | 2024-09-10 12:00 A |  | 100% |  |  |  | start no earlier than 2024-09-10 09:00 | Зорькин В | 1h | 1h |
| 3020 | 19.13.2.2 | обвести в PAINT фото методику измерений, присвоить \имя каждому размеру | 2h | 2024-09-10 12:00 A | 2024-09-10 15:00 A | 3019 | 100% |  |  |  | start no earlier than 2024-09-06 08:00 | Зорькин В | 2h | 2h |
| 3021 | 19.13.2.3 | создать карту / таблицу настройки. Размер-дата-фио | 2h | 2024-09-10 15:00 A | 2024-09-10 17:00 A | 3020 | 100% |  |  |  | start no earlier than 2024-09-06 08:00 | Зорькин В | 2h | 2h |
| 3022 | 19.13.2.4 | оформить ведение карты в журнал | 2h | 2024-09-10 17:00 A | 2024-09-11 10:00 A | 3021 | 100% |  |  |  | start no earlier than 2024-09-06 08:00 | Зорькин В | 2h | 2h |
| 3023 | 19.13.3 | **ТЕКО 0,4** | 0.88d | 2024-09-11 10:00 | 2024-09-11 18:00 | 3018 |  |  | 650.59d |  |  |  | 7h |  |
| 3024 | 19.13.3.1 | определить базовые точки относительно которых будет проводится замер в 3х плоскостях - флажки верх, флажки низ, смыкание ножа, центр трубы | 1h | 2024-09-11 10:00 | 2024-09-11 11:00 |  |  |  | 650.59d | 0d | start no earlier than 2024-09-06 08:00 | Зорькин В | 1h |  |
| 3025 | 19.13.3.2 | обвести в PAINT фото методику измерений, присвоить \имя каждому размеру | 2h | 2024-09-11 11:00 | 2024-09-11 13:00 | 3024 |  |  | 650.59d | 0d | start no earlier than 2024-09-06 08:00 | Зорькин В | 2h |  |
| 3026 | 19.13.3.3 | создать карту / таблицу настройки. Размер-дата-фио | 2h | 2024-09-11 14:00 | 2024-09-11 16:00 | 3025 |  |  | 650.59d | 0d | start no earlier than 2024-09-06 08:00 | Зорькин В | 2h |  |
| 3027 | 19.13.3.4 | оформить ведение карты в журнал | 2h | 2024-09-11 16:00 | 2024-09-11 18:00 | 3026 |  |  | 650.59d |  | start no earlier than 2024-09-06 08:00 | Зорькин В | 2h |  |
| 3028 | 19.14 | **наполнение базы данных по занятиям, запись видео уроки** | 5.12d | 2024-09-09 09:00 A | 2024-09-16 10:00 |  | 5% | 4.88d | 648.47d |  |  |  | 42h | 2h |
| 3029 | 19.14.1 | заяавка фотокамера, штатив | 1h | 2024-09-09 09:00 A | 2024-09-09 10:00 A |  | 100% |  |  |  | start no earlier than 2024-09-09 09:00 | Зорькин В | 1h | 1h |
| 3030 | 19.14.2 | доставка | 5d | 2024-09-09 10:00 | 2024-09-16 10:00 | 3029 |  |  | 648.47d |  | start no earlier than 2024-09-06 08:00 | Мультан | 40h |  |
| 3031 | 19.14.3 | **Бестром** | 0.12d | 2024-09-16 09:00 A | 2024-09-16 10:00 A |  | 100% |  |  |  |  |  | 1h | 1h |
| 3032 | 19.14.3.1 | урок 1 | 1h | 2024-09-16 09:00 A | 2024-09-16 10:00 A | 3030 | 100% |  |  |  | start no earlier than 2024-09-16 09:00 | Зорькин В | 1h | 1h |
| 3033 | 20 | **администрантивные** | 130.25d | 2026-03-19 09:00 A | 2026-09-16 11:00 |  | 87% | 16.95d | 125.34d |  |  |  | 99.92h | 86.92h |
| 3034 | 20.1 | спсиание материалов | 6h | 2026-09-01 09:00 | 2026-09-01 16:00 |  |  |  | 136.84d |  | start no earlier than 2026-09-01 09:00 | Шуранов Ю | 6h |  |
| 3035 | 20.2 | составить список остатков шнеков в таблицу зип | 2h | 2026-09-01 09:00 | 2026-09-01 11:00 |  |  |  | 137.34d |  | start no earlier than 2026-09-01 09:00 | Шуранов Ю | 2h |  |
| 3036 | 20.3 | подготовить спсток перчаток | 3h | 2026-03-19 09:00 A | 2026-03-19 12:00 A |  | 100% |  |  |  | start no earlier than 2026-03-19 08:00 | Зорькин В | 3h | 3h |
| 3037 | 20.4 | подготовка данных дебеторская задолжность | 3h | 2026-03-19 09:00 A | 2026-03-19 12:00 A |  | 100% |  |  |  | start no earlier than 2026-03-19 08:00 | Зорькин В | 3h | 3h |
| 3038 | 20.5 | договор по ремонту стиральных машинок. Переговоры | 1h | 2026-09-01 09:00 | 2026-09-01 10:00 |  |  |  | 137.47d |  | start no earlier than 2026-09-01 09:00 | Шуранов Ю | 1h |  |
| 3039 | 20.6 | Составить список на год ППР (планово-предупредительные работы) на оборудовании Цеха №1, Цеха №2, Цеха навесок. | 2h | 2026-09-01 09:00 | 2026-09-01 11:00 |  |  |  | 137.34d |  | start no earlier than 2026-09-01 09:00 | Шуранов Ю | 2h |  |

| ID | WBS | Task | Type | Duration | Start | Finish | Predecessors | Complete | Remaining | Total slack | Free slack | Constraint | Resources | Work | Actual work |
| --- | --- | --- | --- | --- | --- | --- | --- | --- | --- | --- | --- | --- | --- | --- | --- |
| 3040 | 20.7 | **Ключи на шкафы** |  | 110.25d | 2026-04-16 09:00 A | 2026-09-16 11:00 |  | 98% | 2.66d | 125.34d |  |  |  | 82.75h | 80.75h |
| 3041 | 20.7.1 | Заказать |  | 30min | 2026-04-16 09:00 A | 2026-04-16 09:30 A |  | 100% |  |  |  | start no earlier than 2026-04-16 09:00 | Зорькин В | 0.5h | 0.5h |
| 3042 | 20.7.2 | доставить |  | 10d | 2026-04-16 09:30 A | 2026-04-30 09:30 A | 3041 | 100% |  |  |  | start no earlier than 2026-04-14 09:00 | Карабанов | 80h | 80h |
| 3043 | 20.7.3 | контроль доставка |  | 15min | 2026-05-15 09:00 A | 2026-05-15 09:15 A |  | 100% |  |  |  | start no earlier than 2026-05-15 09:00 | Зорькин В | 0.25h | 0.25h |
| 3044 | 20.7.4 | Повешать на веревочку ключи на все шкафы ВРУ и электрощитки (ключи на складе, веревочки взять на производстве, нитки) |  | 2h | 2026-09-16 09:00 | 2026-09-16 11:00 | 3042 |  |  | 125.34d |  | start no earlier than 2026-09-16 09:00 | Бобренок В | 2h |  |
| 3045 | 20.8 | Расписаться в нашем кабинете |  | 10min | 2026-07-28 09:00 A | 2026-07-28 09:10 A |  | 100% |  |  |  | start no earlier than 2026-07-28 09:00 | Макаревич А | 0.17h | 0.17h |
| 3046 | 21 | **ТБ** |  | 921.25d? | 2023-06-06 09:00 A | 2026-12-15 11:00 |  | 39% | 562.04d? | 61.34d |  |  |  | 249.92h | 96.67h |
| 3047 | 21.1 | инструктаж по ТБ оформить |  | 1h | 2026-08-31 09:00 | 2026-08-31 10:00 |  |  |  | 138.47d |  | start no earlier than 2026-08-31 09:00 | Шуранов Ю | 1h |  |
| 3048 | 21.2 | выполнить перелкаду похарных шлангов офис, 1ц |  | 2h | 2026-12-15 09:00 | 2026-12-15 11:00 |  |  |  | 61.34d |  | start no earlier than 2026-12-15 09:00 | Некрасов А; Труфанов А | 4h |  |
| 3049 | 21.3 | маркировка лестниц / оформление журналов |  | 2h | 2026-08-31 09:00 | 2026-08-31 11:00 |  |  |  | 138.34d |  | start no earlier than 2026-08-31 09:00 | Шуранов Ю | 2h |  |
| 3050 | 21.4 | внеплановый инструктаж персонала при аварии на проризводстве |  | 2h | 2025-03-26 09:00 A | 2025-03-26 11:00 A |  | 100% |  |  |  | start no earlier than 2025-03-26 08:00 | Шуранов Ю | 2h | 2h |
| 3051 | 21.5 | заявка на табличики НЕ ВКЛЮЧАТЬ |  | 10min | 2025-03-26 09:00 A | 2025-03-26 09:10 A |  | 100% |  |  |  | start no earlier than 2025-03-26 08:00 | Шуранов Ю | 0.17h | 0.17h |
| 3052 | 21.6 | офорить наряд допуск на монтаж кабеля КПП |  | 30min | 2024-08-05 09:00 A | 2024-08-05 09:30 A |  | 100% |  |  |  | start no earlier than 2024-08-05 09:00 | Шуранов Ю | 0.5h | 0.5h |
| 3053 | 21.7 | составить схемы кабельных линий по производству |  | 5d | 2026-09-01 09:00 | 2026-09-05 18:00 |  |  |  | 132.59d |  | start no earlier than 2026-09-01 09:00 | Шуранов Ю | 40h |  |
| 3054 | 21.8 | организация аттестации электроперсонала |  | 10d | 2024-05-14 09:00 A | 2024-05-27 18:00 A |  | 100% |  |  |  | start no earlier than 2024-05-14 09:00 | Шуранов Ю | 80h | 80h |
| 3055 | 21.9 | расклеить таблички на стремянки |  | 1h | 2023-10-18 09:00 A | 2023-10-18 10:00 A |  | 100% |  |  |  | start no earlier than 2023-10-18 09:00 | Тимофеев В | 1h | 1h |
| 3056 | 21.10 | вести журнал учета такелажных средств, механизмов и приспособлений |  | 1h | 2026-09-01 09:00 | 2026-09-01 10:00 |  |  |  | 137.47d |  | start no earlier than 2026-09-01 09:00 | Шуранов Ю | 1h |  |
| 3057 | 21.11 | комплект сиз для высотных работ |  | 1h | 2023-06-09 09:00 A | 2023-06-09 10:00 A |  | 100% |  |  |  | start no earlier than 2023-06-09 09:00 | Лобанов И | 1h | 1h |
| 3058 | 21.12 | тестер индикторная отвертка |  | 1h | 2024-05-14 09:00 A | 2024-05-14 10:00 A |  | 100% |  |  |  | start no earlier than 2024-05-14 09:00 | Шуранов Ю | 1h | 1h |
| 3059 | 21.13 | заявка на диэл коврик, галоши, перчатки, маска, таблички |  | 1h | 2026-09-01 09:00 | 2026-09-01 10:00 |  |  |  | 137.47d |  | start no earlier than 2026-09-01 09:00 | Шуранов Ю | 1h |  |
| 3060 | 21.14 | заявка спецодежда наладчикам |  | 1d? | 2024-05-14 09:00 A | 2024-05-14 18:00 A |  | 100% |  |  |  | start no earlier than 2024-05-14 09:00 | Шуранов Ю | 8h | 8h |
| 3061 | 21.15 | аттестация охрана труда |  | 10d | 2024-05-14 09:00 | 2024-05-27 18:00 |  |  |  | 727.59d |  | start no earlier than 2024-05-14 09:00 | Шуранов Ю | 80h |  |
| 3062 | 21.16 | **испытание стеллажей** |  | 847d? | 2023-06-06 09:00 A | 2026-09-02 18:00 |  | 11% | 753.75d? | 135.59d |  |  |  | 27.25h | 3h |
| 3063 | 21.16.1 | оплата испытания стеллажей контроль | milestone | 0d | 2023-06-06 09:00 A | 2023-06-06 09:00 A |  | 100% |  |  |  | start no earlier than 2023-06-06 09:00 | Домоводов К |  |  |
| 3064 | 21.16.2 | орг испытание стеллажей |  | 1h | 2023-07-11 09:00 A | 2023-07-11 10:00 A |  | 100% |  |  |  | start no earlier than 2023-07-11 09:00 | Домоводов К | 1h | 1h |
| 3065 | 21.16.3 | график осмотров стеллажей |  | 1d? | 2026-08-31 09:00 | 2026-08-31 18:00 | 3063 |  |  | 135.59d | 0d | start no earlier than 2026-08-31 09:00 | Домоводов К | 8h |  |
| 3066 | 21.16.4 | табличка КП |  | 1d? | 2026-09-01 09:00 | 2026-09-01 18:00 | 3065 |  |  | 135.59d | 0d | start no earlier than 2023-04-27 08:00 | Домоводов К | 8h |  |
| 3067 | 21.16.5 | журнал технического освидетельствования стеллажей |  | 1d? | 2026-09-02 09:00 | 2026-09-02 18:00 | 3066 |  |  | 135.59d |  | start no earlier than 2023-04-27 08:00 | Домоводов К | 8h |  |
| 3068 | 21.16.6 | запрос стоимости ремонта стеллажей в 5ц |  | 2h | 2026-08-18 09:00 A | 2026-08-18 11:00 A |  | 100% |  |  |  | start no earlier than 2026-08-18 09:00 | Шуранов Ю | 2h | 2h |
| 3069 | 21.16.7 | контрольизг |  | 15min | 2026-08-27 09:00 | 2026-08-27 09:15 |  |  |  | 140.56d |  | start no earlier than 2026-08-27 09:00 | Шуранов Ю | 0.25h |  |

| ID | WBS | Task | Type | Duration | Start | Finish | Predecessors | Complete | Remaining | Total slack | Free slack | Constraint | Resources | Work | Actual work |
| --- | --- | --- | --- | --- | --- | --- | --- | --- | --- | --- | --- | --- | --- | --- | --- |
| 3070 | 22 | **офис** |  | 325.03d | 2025-06-11 09:00 A | 2026-09-08 09:15 |  | 80% | 65.01d | 131.56d |  |  |  | 2.25h | 2h |
| 3071 | 22.1 | дует подконник офис - передать Олегу задачу |  | 15min | 2026-09-08 09:00 | 2026-09-08 09:15 |  |  |  | 131.56d |  | start no earlier than 2026-09-08 08:00 | Зорькин В | 0.25h |  |
| 3072 | 22.2 | ремонт светильник моргает , бухгалтерия |  | 1h | 2025-06-11 09:00 A | 2025-06-11 10:00 A |  | 100% |  |  |  | start no earlier than 2025-06-11 09:00 | Тимофеев В; Дедов В | 2h | 2h |
| 3073 | 23 | **территория** |  | 413.5d? | 2025-02-20 09:00 A | 2026-09-21 13:00 |  | 57% | 177.49d? | 122.09d |  |  |  | 192.75h | 91.75h |
| 3074 | 23.1 | отсыпать спуск для парковки между цех 2 и 3 |  | 1d? | 2026-08-26 09:00 A | 2026-08-26 18:00 A |  | 100% |  |  |  | start no earlier than 2026-08-26 08:00 | Дворник | 8h | 8h |
| 3075 | 23.2 | отсыпать тропинку до КТПН |  | 1d? | 2026-08-27 09:00 | 2026-08-27 18:00 |  |  |  | 139.59d |  | start no earlier than 2026-08-27 09:00 | Дворник | 8h |  |
| 3076 | 23.3 | **орг водосток КПП - 5ц** |  | 0.03d | 2026-08-31 09:00 | 2026-08-31 09:15 |  |  |  | 138.56d |  |  |  | 0.25h |  |
| 3077 | 23.3.1 | получить КП от Вугара |  | 15min | 2026-08-31 09:00 | 2026-08-31 09:15 |  |  |  | 138.56d |  | start no earlier than 2026-08-31 09:00 | Домоводов К | 0.25h |  |
| 3078 | 23.4 | **орг водосток между 4 и5А** |  | 0.03d | 2026-08-31 09:00 | 2026-08-31 09:15 |  |  |  | 138.56d |  |  |  | 0.25h |  |
| 3079 | 23.4.1 | получить КП от Вугара |  | 15min | 2026-08-31 09:00 | 2026-08-31 09:15 |  |  |  | 138.56d |  | start no earlier than 2026-08-31 09:00 | Домоводов К | 0.25h |  |
| 3080 | 23.5 | **Белявский выравнивание стены** |  | 14.16d | 2026-08-13 09:00 A | 2026-09-02 10:15 |  | 13% | 12.33d | 136.44d |  |  |  | 2.58h | 0.33h |
| 3081 | 23.5.1 | оформить план работ, эскиз предложенный ГИП Глуходед |  | 1h | 2026-09-01 09:00 | 2026-09-01 10:00 |  |  |  | 136.44d | 0d | start no earlier than 2026-09-01 09:00 | Домоводов К | 1h |  |
| 3082 | 23.5.2 | поиск подрядчика на перекладку панели |  | 1h | 2026-09-01 09:00 | 2026-09-01 10:00 |  |  |  | 137.47d |  | start no earlier than 2026-09-01 09:00 | Домоводов К | 1h |  |
| 3083 | 23.5.3 | звонок по решению от варианта ремонта Белявского |  | 20min | 2026-08-13 09:00 A | 2026-08-13 09:20 A |  | 100% |  |  |  | start no earlier than 2026-08-13 09:00 | Домоводов К | 0.33h | 0.33h |
| 3084 | 23.5.4 | ожидание КП от бригады Белявского | milestone | 0d | 2026-08-20 09:00 A | 2026-08-20 09:00 A | 3083FS+1d | 100% |  |  |  | start no earlier than 2026-08-20 09:00 | Домоводов К |  |  |
| 3085 | 23.5.5 | согл работы с ГД | milestone | 0d | 2026-09-01 10:00 | 2026-09-01 10:00 | 3081, 3084FS+1d |  |  | 136.44d | 0d | start no earlier than 2026-08-31 09:00 | Домоводов К |  |  |
| 3086 | 23.5.6 | заказ кран |  | 15min | 2026-09-02 10:00 | 2026-09-02 10:15 | 3085FS+1d |  |  | 136.44d |  | start no earlier than 2026-08-13 09:00 | Зорькин В | 0.25h |  |
| 3087 | 23.6 | замена тусклых или не рабочих ламп на мухоловках 1,2,5 цех.Схемы расположения предоставлю (количество ламп, которые поменял указать в отчете) |  | 4h | 2026-08-06 09:00 A | 2026-08-06 13:00 A |  | 100% |  |  |  | start no earlier than 2026-08-06 08:00 | Труфанов А | 4h | 4h |
| 3088 | 23.7 | **КПП ревизия прожектор, не горит** |  | 1.12d | 2026-07-08 09:00 A | 2026-07-09 10:00 A |  | 100% |  |  |  |  |  | 1.33h | 1.33h |
| 3089 | 23.7.1 | Сфотать шильдик от прожектора кпп |  | 20min | 2026-07-08 09:00 A | 2026-07-08 09:20 A |  | 100% |  |  |  | start no earlier than 2026-07-08 08:00 | Бундин В | 0.33h | 0.33h |
| 3090 | 23.7.2 | монтаж прожетора |  | 1h | 2026-07-09 09:00 A | 2026-07-09 10:00 A |  | 100% |  |  |  | start no earlier than 2026-07-09 09:00 | Бобренок В | 1h | 1h |
| 3091 | 23.8 | установить люки колодцев на всей территории | manual | 4h | 2026-09-21 09:00 | 2026-09-21 13:00 |  |  |  |  |  | start no earlier than 2026-09-21 09:00 | Тимофеев В | 4h |  |
| 3092 | 23.9 | **установить пост для зарядки эл мобиль директору** |  | 1d? | 2026-06-03 09:00 | 2026-06-03 18:00 |  |  |  | 200.59d |  |  |  |  |  |
| 3093 | 23.9.1 | заявка на щиток / кабель |  | 1d? | 2026-06-03 09:00 | 2026-06-03 18:00 |  |  |  | 200.59d |  | start no earlier than 2026-06-03 08:00 |  |  |  |
| 3094 | 23.10 | уборка строительный мусор задний двор 5А склад |  | 2h | 2026-05-27 09:00 | 2026-05-27 11:00 |  |  |  | 206.34d |  | start no earlier than 2026-05-27 09:00 | оператор2 | 2h |  |
| 3095 | 23.11 | поправить бетонную крышку колодца. Дренаж вдоль забора колодец №2 |  | 2h | 2026-05-27 09:00 | 2026-05-27 11:00 |  |  |  | 206.34d |  | start no earlier than 2026-05-27 09:00 | оператор2 | 2h |  |
| 3096 | 23.12 | расчистить камни, для доступа к люку. Дренаж вдоль забора колодец №2 |  | 2h | 2026-05-27 09:00 | 2026-05-27 11:00 |  |  |  | 206.34d |  | start no earlier than 2026-05-27 09:00 | оператор2 | 2h |  |
| 3097 | 23.13 | проверка всех стемянок по цехам, приклеить бумажки о проверке |  | 1d? | 2026-06-26 09:00 A | 2026-06-26 18:00 A |  | 100% |  |  |  | start no earlier than 2026-06-26 09:00 | Шуранов Ю | 8h | 8h |
| 3098 | 23.14 | в 1,2,3 цехе ближе к утру выключить все оборудование, кроме камер охраны КПП- подготовка к фогации |  | 2h | 2026-04-30 08:00 A | 2026-04-30 11:00 A |  | 100% |  |  |  | start no earlier than 2026-04-30 08:00 | Дедов В | 2h | 2h |
| 3099 | 23.15 | заизолировать гофру в местах разрыва (гофра с кабелем для рефрежераторов возле нашего склада) | manual | 1h | 2026-04-26 09:00 A | 2026-04-26 10:00 A |  | 100% |  |  |  | start no earlier than 2026-04-26 09:00 | Макаревич А | 1h | 1h |
| 3100 | 23.16 | ремонт стен сосед Белявский |  | 5d | 2026-04-16 09:00 | 2026-04-22 18:00 |  |  |  | 230.59d |  | start no earlier than 2026-04-16 08:00 | Олег; Некрасов А | 80h |  |

| ID | WBS | Task | Type | Duration | Start | Finish | Predecessors | Complete | Remaining | Total slack | Free slack | Constraint | Resources | Work | Actual work |
| --- | --- | --- | --- | --- | --- | --- | --- | --- | --- | --- | --- | --- | --- | --- | --- |
| 3101 | 23.17 | **выезд ул.Писемского** |  | 15.03d | 2026-08-11 09:00 A | 2026-09-01 09:15 |  | 89% | 1.67d | 137.56d |  |  |  | 2.25h | 2h |
| 3102 | 23.17.1 | **топосъемка** |  | 15.03d | 2026-08-11 09:00 A | 2026-09-01 09:15 |  | 67% | 5.01d | 137.56d |  |  |  | 0.75h | 0.5h |
| 3103 | 23.17.1.1 | получить старт от ГД | milestone | 0d | 2026-08-31 09:00 | 2026-08-31 09:00 |  |  |  | 137.56d | 0d | start no earlier than 2026-08-31 09:00 | Домоводов К |  |  |
| 3104 | 23.17.1.2 | поск исполнителя / запрос счет |  | 30min | 2026-08-11 09:00 A | 2026-08-11 09:30 A |  | 100% |  |  |  | start no earlier than 2026-08-11 09:00 | Домоводов К | 0.5h | 0.5h |
| 3105 | 23.17.1.3 | контроль оплата |  | 15min | 2026-09-01 09:00 | 2026-09-01 09:15 | 3103FS+1d, 3104FS+5d |  |  | 137.56d | 0d | start no earlier than 2026-08-24 09:00 | Домоводов К | 0.25h |  |
| 3106 | 23.17.2 | **геология** |  | 15.03d | 2026-08-11 09:00 A | 2026-09-01 09:15 |  | 99% | 0d | 137.56d |  |  |  | 0.5h | 0.5h |
| 3107 | 23.17.2.1 | поск исполнителя / запрос счет |  | 30min | 2026-08-11 09:00 A | 2026-08-11 09:30 A |  | 100% |  |  |  | start no earlier than 2026-08-11 09:00 | Домоводов К | 0.5h | 0.5h |
| 3108 | 23.17.2.2 | контроль оплата | milestone | 0min | 2026-09-01 09:15 | 2026-09-01 09:15 | 3105, 3107FS+5d |  |  | 137.56d | 0d | start no earlier than 2026-08-10 08:00 | Домоводов К |  |  |
| 3109 | 23.17.3 | **проект дорога** |  | 15.03d | 2026-08-11 09:00 A | 2026-09-01 09:15 |  | 99% | 0d | 137.56d |  |  |  | 0.5h | 0.5h |
| 3110 | 23.17.3.1 | поск исполнителя / запрос счет |  | 30min | 2026-08-11 09:00 A | 2026-08-11 09:30 A |  | 100% |  |  |  | start no earlier than 2026-08-11 09:00 | Домоводов К | 0.5h | 0.5h |
| 3111 | 23.17.3.2 | получить счет / договор | milestone | 0d | 2026-08-13 09:00 A | 2026-08-13 09:00 A |  | 100% |  |  |  | start no earlier than 2026-08-13 09:00 | Домоводов К |  |  |
| 3112 | 23.17.3.3 | контроль оплата | milestone | 0min | 2026-09-01 09:15 | 2026-09-01 09:15 | 3108, 3110FS+5d |  |  | 137.56d | 0d | start no earlier than 2026-08-10 08:00 | Домоводов К |  |  |
| 3113 | 23.17.4 | **проект бетонная подушка** |  | 15.03d | 2026-08-11 09:00 A | 2026-09-01 09:15 |  | 99% | 0d | 137.56d |  |  |  | 0.5h | 0.5h |
| 3114 | 23.17.4.1 | поск исполнителя / запрос счет |  | 30min | 2026-08-11 09:00 A | 2026-08-11 09:30 A |  | 100% |  |  |  | start no earlier than 2026-08-11 09:00 | Домоводов К | 0.5h | 0.5h |
| 3115 | 23.17.4.2 | получить счет / договор | milestone | 0d | 2026-08-13 09:00 A | 2026-08-13 09:00 A |  | 100% |  |  |  | start no earlier than 2026-08-13 09:00 | Домоводов К |  |  |
| 3116 | 23.17.4.3 | контроль оплата | milestone | 0min | 2026-09-01 09:15 | 2026-09-01 09:15 | 3112, 3114FS+5d |  |  | 137.56d |  | start no earlier than 2026-08-10 08:00 | Домоводов К |  |  |
| 3117 | 23.18 | Сборка рамы и навеса для мусорки 2 ц возле 1 КПП |  | 4h | 2026-09-04 09:00 A | 2026-09-04 13:00 A |  | 100% |  |  |  | start no earlier than 2026-09-04 09:00 | Некрасов А; Макаревич А | 8h | 8h |
| 3118 | 23.19 | Покраска рамы новой мусорки, стоит у ворот навесок 2 цех |  | 1h | 2026-09-04 09:00 A | 2026-09-04 10:00 A |  | 100% |  |  |  | start no earlier than 2026-09-04 09:00 | Некрасов А; Макаревич А | 2h | 2h |
| 3119 | 23.20 | Монтаж дверей на мусорку собираем раму (петли привезем после обеда) |  | 3h | 2026-09-04 09:00 A | 2026-09-04 12:00 A |  | 100% |  |  |  | start no earlier than 2026-09-04 09:00 | Некрасов А; Макаревич А | 6h | 6h |
| 3120 | 23.21 | **асфальтирование дороги до 5ц** |  | 11.25d? | 2026-08-11 09:00 A | 2026-08-26 11:00 A |  | 100% |  |  |  |  |  | 36.5h | 36.5h |
| 3121 | 23.21.1 | составить схему площади дороги / 3 корректировки |  | 2h | 2026-08-11 09:00 A | 2026-08-11 11:00 A |  | 100% |  |  |  | start no earlier than 2026-08-11 09:00 | Зорькин В | 2h | 2h |
| 3122 | 23.21.2 | получить цену исполнителя |  | 1d | 2026-08-11 11:00 A | 2026-08-12 11:00 A | 3121 | 100% |  |  |  | start no earlier than 2026-08-10 08:00 | Домоводов К | 8h | 8h |
| 3123 | 23.21.3 | согл с ГД |  | 1d | 2026-08-11 09:00 A | 2026-08-11 18:00 A | 3122 | 100% |  |  |  | start no earlier than 2026-08-10 08:00 | Домоводов К | 8h | 8h |
| 3124 | 23.21.4 | получить счет от Вугара | milestone | 0h | 2026-08-12 09:00 A | 2026-08-12 09:00 A |  | 100% |  |  |  | start no earlier than 2026-08-12 09:00 | Домоводов К |  |  |
| 3125 | 23.21.5 | будет ли Вугар оформлятся как подрядчик? Соглаосвать с ГД |  | 15min | 2026-08-17 09:00 A | 2026-08-17 09:15 A |  | 100% |  |  |  | start no earlier than 2026-08-17 09:00 | Домоводов К | 0.25h | 0.25h |
| 3126 | 23.21.6 | корректировка чертеж объем работ |  | 1d? | 2026-08-20 09:00 A | 2026-08-20 18:00 A |  | 100% |  |  |  | start no earlier than 2026-08-20 09:00 | Домоводов К | 8h | 8h |
| 3127 | 23.21.7 | подготовка смета |  | 2h | 2026-08-26 09:00 A | 2026-08-26 11:00 A |  | 100% |  |  |  | start no earlier than 2026-08-26 09:00 | Домоводов К | 2h | 2h |
| 3128 | 23.21.8 | контроль сроков завоза техники |  | 15min | 2026-08-14 09:00 A | 2026-08-14 09:15 A |  | 100% |  |  |  | start no earlier than 2026-08-14 09:00 | Домоводов К | 0.25h | 0.25h |
| 3129 | 23.21.9 | монтаж |  | 1d? | 2026-08-19 09:00 A | 2026-08-19 18:00 A | 3123, 3124 | 100% |  |  |  | start no earlier than 2026-08-19 09:00 | Подрядчик | 8h | 8h |
| 3130 | 23.22 | взять роутер у нас в кабинете - подключить к UTP кабелю |  | 1d? | 2026-04-13 09:00 A | 2026-04-13 18:00 A |  | 100% |  |  |  | start no earlier than 2026-04-13 09:00 |  |  |  |
| 3131 | 23.23 | в цехе 2, 3, 4 и 5 убавить температуры на нагревателях и газ. Котлах |  | 4h | 2026-03-31 09:00 A | 2026-03-31 13:00 A |  | 100% |  |  |  | start no earlier than 2026-03-31 08:00 | Бундин В | 4h | 4h |
| 3132 | 23.24 | перенос камеры на 10см ниже КПП |  | 3h | 2026-03-21 09:00 A | 2026-03-23 12:00 A |  | 100% |  |  |  | start no earlier than 2026-03-21 09:00 | Бундин В | 3h | 3h |
| 3133 | 23.25 | запуск контейнер рэф |  | 2h | 2026-03-20 09:00 A | 2026-03-20 11:00 A |  | 100% |  |  |  | start no earlier than 2026-03-20 09:00 | Шуранов Ю | 2h | 2h |

| ID | WBS | Task | Duration | Start | Finish | Predecessors | Complete | Remaining | Total slack | Free slack | Constraint | Resources | Work | Actual work |
| --- | --- | --- | --- | --- | --- | --- | --- | --- | --- | --- | --- | --- | --- | --- |
| 3134 | 23.26 | **выровнить контейнеры, перекос двери** | 3.25d | 2026-03-19 09:00 A | 2026-03-24 11:00 A |  | 100% |  |  |  |  |  | 2.5h | 2.5h |
| 3135 | 23.26.1 | заявка кран | 30min | 2026-03-19 09:00 A | 2026-03-19 09:30 A |  | 100% |  |  |  | start no earlier than 2026-03-19 09:00 | Шуранов Ю | 0.5h | 0.5h |
| 3136 | 23.26.2 | работа по выравниванию | 2h | 2026-03-24 09:00 A | 2026-03-24 11:00 A | 3135FS+1d | 100% |  |  |  | start no earlier than 2026-03-24 09:00 | Некрасов А | 2h | 2h |
| 3137 | 23.27 | **двойной шлагбаум замрзает** | 5.01d | 2025-02-20 09:00 A | 2025-02-27 09:05 A |  | 100% |  |  |  |  |  | 1.08h | 1.08h |
| 3138 | 23.27.1 | вызов сервисного инженера контроль даты | 5min | 2025-02-27 09:00 A | 2025-02-27 09:05 A |  | 100% |  |  |  | start no earlier than 2025-02-27 09:00 | Шуранов Ю | 0.08h | 0.08h |
| 3139 | 23.27.2 | осмотр с сервисн инжзенером | 1h | 2025-02-20 09:00 A | 2025-02-20 10:00 A |  | 100% |  |  |  | start no earlier than 2025-02-20 09:00 | Шуранов Ю | 1h | 1h |
| 3140 | 24 | **ежедневные обходы и осмотры** | 473.5d | 2024-05-14 09:00 A | 2026-03-06 13:00 |  | 16% | 398.74d | 264.09d |  |  |  | 25.33h | 4h |
| 3141 | 24.1 | цех 1 | 20min | 2024-05-14 09:00 | 2024-05-14 09:20 |  |  |  | 735.01d | 0d | start no earlier than 2024-05-14 09:00 | Шуранов Ю | 0.33h |  |
| 3142 | 24.2 | цех 2 | 20min | 2024-05-14 09:00 | 2024-05-14 09:20 |  |  |  | 737.55d |  | start no earlier than 2024-05-14 09:00 | Шуранов Ю | 0.33h |  |
| 3143 | 24.3 | цех навесок | 20min | 2024-05-14 09:20 | 2024-05-14 09:40 | 3141 |  |  | 735.01d | 0d | start no earlier than 2024-05-14 09:00 | Шуранов Ю | 0.33h |  |
| 3144 | 24.4 | техника | 20h | 2024-05-14 09:40 | 2024-05-16 14:40 | 3143 |  |  | 735.01d |  | start no earlier than 2024-05-14 09:00 | Шуранов Ю | 20h |  |
| 3145 | 24.5 | вести журнал осмотров стеллажей | 20min | 2024-05-14 09:00 | 2024-05-14 09:20 |  |  |  | 737.55d |  | start no earlier than 2024-05-14 09:00 | Шуранов Ю | 0.33h |  |
| 3146 | 24.6 | оперативная работа | 4h | 2026-03-06 09:00 A | 2026-03-06 13:00 A |  | 100% |  |  |  | start no earlier than 2026-03-06 09:00 | Бобренок В | 4h | 4h |
| 3147 | 25 | **замена шнеков** | 882.5d? | 2023-03-29 09:00 A | 2026-08-14 13:00 |  | 2% | 864.01d? | 149.09d |  |  |  | 53h | 34h |
| 3148 | 25.1 | посчитать количество шнеков и гильз для цех1 и цех 2 | 2h | 2026-04-03 09:00 | 2026-04-03 11:00 |  |  |  | 244.34d |  | start no earlier than 2026-04-03 09:00 | Шуранов Ю | 2h |  |
| 3149 | 25.2 | вести список и учет замены шнеков | 1h | 2024-05-14 09:00 | 2024-05-14 10:00 |  |  |  | 737.47d |  | start no earlier than 2024-05-14 09:00 | Шуранов Ю | 1h |  |
| 3150 | 25.3 | линия 3 - было 3/приход спец12-3/спец14-9 | 1d? | 2024-04-15 09:00 A | 2024-04-15 18:00 A |  | 100% |  |  |  | start no earlier than 2024-04-15 08:00 |  |  |  |
| 3151 | 25.4 | линия3 | 42d | 2023-10-16 09:00 | 2023-12-12 18:00 |  |  |  | 846.59d |  | start no earlier than 2023-10-16 09:00 |  |  |  |
| 3152 | 25.5 | линия3 | 30d | 2023-12-12 09:00 | 2024-01-22 18:00 |  |  |  | 817.59d |  | start no earlier than 2023-12-12 09:00 |  |  |  |
| 3153 | 25.6 | линия3 | 45d | 2024-01-24 09:00 | 2024-03-26 18:00 |  |  |  | 771.59d |  | start no earlier than 2024-01-24 09:00 |  |  |  |
| 3154 | 25.7 | линия3 | 11d | 2023-03-29 09:00 | 2023-04-12 18:00 |  |  |  | 1020.59d |  | start no earlier than 2023-03-29 09:00 |  |  |  |
| 3155 | 25.8 | линия3 | 1d? | 2023-04-12 09:00 | 2023-04-12 18:00 |  |  |  | 1020.59d |  | start no earlier than 2023-04-12 09:00 |  |  |  |
| 3156 | 25.9 | линия 3 | 1.38d? | 2024-05-08 08:00 A | 2024-05-13 11:00 A |  | 100% |  |  |  | start no earlier than 2024-05-08 08:00 | Макаревич А; Некрасов А; Черепанов И | 26h | 26h |
| 3157 | 25.10 | диния 3 | 1d? | 2024-05-20 09:00 | 2024-05-20 18:00 |  |  |  | 732.59d |  | start no earlier than 2024-05-20 09:00 | Некрасов А; Тимофеев В | 16h |  |
| 3288 | 25.11 | замена линия 3, была струшка | 4h | 2026-08-14 09:00 A | 2026-08-14 13:00 A |  | 100% |  |  |  | start no earlier than 2026-08-14 09:00 | Некрасов А; Бундин В | 8h | 8h |
